# Harbour Point District Cooling Plant DCP-03

Schedule from Primavera P6, 2024-01-08 to 2025-09-11, data date 2024-01-08.

## Calendars

- 6-Day Site Construction Week: Mon-Sat 08:00-12:00, 13:00-17:00; Sun off. Exceptions (off unless hours are given): 2024-04-08 to 2024-04-10, 2024-06-16 to 2024-06-18, 2024-12-02 to 2024-12-03, 2025-01-01, 2025-03-30 to 2025-04-01, 2025-06-06 to 2025-06-07.
- 5-Day Office / Design Week: Mon-Fri 08:00-12:00, 13:00-17:00; Sat-Sun off. Exceptions (off unless hours are given): 2024-04-08 to 2024-04-10, 2024-06-16 to 2024-06-18, 2024-12-02 to 2024-12-03, 2025-01-01, 2025-03-30 to 2025-04-01, 2025-06-06 to 2025-06-07.
- 7-Day Manufacture & Shipping: Mon-Sun 08:00-12:00, 13:00-17:00.

## Resources

| Resource | Group |
| --- | --- |
| Design Engineer | labor |
| Project Management | labor |
| Commissioning Engineer | labor |
| General Labour | labor |
| Mechanical Fitter | labor |
| Electrician | labor |

## Schedule

| ID | WBS | Activity | Type | Duration | Start | Finish | Predecessors | Total float | Calendar | Resources | Responsible Party (asserted) | Project Phase | Discipline | Area / Location | Responsibility (asserted) | Contract Milestone |
| --- | --- | --- | --- | --- | --- | --- | --- | --- | --- | --- | --- | --- | --- | --- | --- | --- |
|  | ENG | **Engineering & Design** |  |  | 2024-01-08 | 2024-05-27 |  |  |  |  |  |  |  |  |  |  |
|  | CONCEPT | **Concept & Approvals** |  |  | 2024-01-08 | 2024-03-04 |  |  |  |  |  |  |  |  |  |  |
| E-1000 |  | Notice to Proceed | milestone | 0d | 2024-01-08 | 2024-01-08 |  | 0d | 5-Day Office / Design Week |  | Employer | ENG | MULTI | SITE | EMP |  |
| E-1010 |  | Mobilise Design Team & Design Kick-off |  | 10d | 2024-01-09 | 2024-01-22 | E-1000 | 0d | 5-Day Office / Design Week | Design Engineer [320 h] | Contractor | ENG | MULTI | OFF | CON |  |
| E-1020 |  | Concept Design & Basis of Design |  | 20d | 2024-01-23 | 2024-02-19 | E-1010 | 0d | 5-Day Office / Design Week | Design Engineer [640 h] | Contractor | ENG | MULTI | OFF | CON |  |
| E-1030 |  | Employer Review & Comment - Concept Design |  | 10d | 2024-02-20 | 2024-03-04 | E-1020 | 0d | 5-Day Office / Design Week | Design Engineer [80 h] | Employer | ENG | MULTI | OFF | EMP |  |
|  | DETAIL | **Detailed Design & IFC** |  |  | 2024-03-05 | 2024-05-27 |  |  |  |  |  |  |  |  |  |  |
| E-1040 |  | Detailed Design - Chiller Plant Mechanical |  | 30d | 2024-03-05 | 2024-04-18 | E-1030 | 0d | 5-Day Office / Design Week | Design Engineer [960 h] | Contractor | ENG | MECH | PLANT | CON |  |
| E-1050 |  | Detailed Design - Electrical, LV & Controls |  | 25d | 2024-03-05 | 2024-04-11 | E-1030 | 5d | 5-Day Office / Design Week | Design Engineer [800 h] | Contractor | ENG | ELEC | SUB | CON |  |
| E-1060 |  | Consultant Review & Approval - Detailed Design |  | 15d | 2024-04-19 | 2024-05-09 | E-1040, E-1050 | 0d | 5-Day Office / Design Week | Design Engineer [120 h] | Employer | ENG | MULTI | OFF | EMP |  |
| E-1070 |  | Issue IFC Drawings - Mechanical Package |  | 12d | 2024-05-10 | 2024-05-27 | E-1060 | 0d | 5-Day Office / Design Week | Design Engineer [240 h] | Contractor | ENG | MECH | OFF | CON |  |
| E-1075 |  | Issue IFC Drawings - Electrical Package |  | 10d | 2024-05-10 | 2024-05-23 | E-1060 | 2d | 5-Day Office / Design Week | Design Engineer [200 h] | Contractor | ENG | ELEC | OFF | CON |  |
| E-1090 |  | Builder's Work & Openings Information Issued |  | 8d | 2024-05-10 | 2024-05-21 | E-1060 | 129d | 5-Day Office / Design Week | Design Engineer [120 h] | Employer | ENG | CIVIL | PLANT | EMP |  |
| E-1080 |  | Design Freeze - IFC Drawings Issued | milestone | 0d | 2024-05-27 | 2024-05-27 | E-1070, E-1075 | 0d | 5-Day Office / Design Week |  | Shared / Joint | ENG | MULTI | OFF | SHARE | Key Date - phase completion |
|  | PROC | **Procurement** |  |  | 2024-05-24 | 2024-12-31 |  |  |  |  |  |  |  |  |  |  |
|  | CHILLER | **Chiller Package (Long Lead)** |  |  | 2024-05-28 | 2024-12-31 |  |  |  |  |  |  |  |  |  |  |
| P-2000 |  | Chiller Package - Tender & Technical Evaluation |  | 20d | 2024-05-28 | 2024-06-26 | E-1080 | 0d | 5-Day Office / Design Week | Project Management [160 h] | Contractor | PRO | MECH | OFF | CON |  |
| P-2010 |  | Chiller Package - Award & Purchase Order |  | 10d | 2024-06-27 | 2024-07-10 | P-2000 | 0d | 5-Day Office / Design Week | Project Management [80 h] | Employer | PRO | MECH | OFF | EMP |  |
| P-2020 |  | Chiller - Vendor Drawings & Approval |  | 25d | 2024-07-11 | 2024-08-14 | P-2010 | 0d | 5-Day Office / Design Week | Design Engineer [200 h] | Vendor | PRO | MECH | OFF | VEN |  |
| P-2030 |  | Chiller - Manufacture & Assembly |  | 90d | 2024-08-15 | 2024-11-12 | P-2020 | 0d | 7-Day Manufacture & Shipping |  | Vendor | PRO | MECH | OFF | VEN |  |
| P-2040 |  | Chiller - Factory Acceptance Testing |  | 10d | 2024-11-13 | 2024-11-26 | P-2030 | 0d | 5-Day Office / Design Week | Commissioning Engineer [80 h] | Vendor | PRO | MECH | OFF | VEN |  |
| P-2050 |  | Chiller - Shipping & Delivery to Site |  | 35d | 2024-11-27 | 2024-12-31 | P-2040 | 0d | 7-Day Manufacture & Shipping |  | Vendor | PRO | MECH | SITE | VEN |  |
| P-2060 |  | Chillers Delivered to Site | milestone | 0d | 2024-12-31 | 2024-12-31 | P-2050 | 0d |  |  | Vendor | PRO | MECH | SITE | VEN | Key Date - phase completion |
|  | SECOND | **Secondary Packages** |  |  | 2024-05-24 | 2024-08-01 |  |  |  |  |  |  |  |  |  |  |
| P-2100 |  | LV Switchgear - Procure & Deliver |  | 70d | 2024-05-24 | 2024-08-01 | E-1075 | 179d | 7-Day Manufacture & Shipping |  | Contractor | PRO | ELEC | SUB | CON |  |
| P-2130 |  | BMS & Controls Package - Procure & Deliver |  | 55d | 2024-05-24 | 2024-07-17 | E-1075 | 246d | 7-Day Manufacture & Shipping |  | Contractor | PRO | CTRL | PLANT | CON |  |
| P-2110 |  | Chilled Water Pumps - Procure & Deliver |  | 60d | 2024-05-28 | 2024-07-26 | E-1070 | 353d | 7-Day Manufacture & Shipping |  | Contractor | PRO | MECH | PLANT | CON |  |
| P-2120 |  | Pipework, Valves & Fittings - Procure & Deliver |  | 45d | 2024-05-28 | 2024-07-11 | E-1070 | 186d | 7-Day Manufacture & Shipping |  | Contractor | PRO | MECH | PLANT | CON |  |
| P-2140 |  | Cooling Towers - Procure & Deliver |  | 65d | 2024-05-28 | 2024-07-31 | E-1070 | 342d | 7-Day Manufacture & Shipping |  | Contractor | PRO | MECH | YARD | CON |  |
| P-2150 |  | Standby Chiller Package - Procure & Deliver |  | 40d | 2024-05-28 | 2024-07-06 | E-1070 | 432d | 7-Day Manufacture & Shipping |  | Contractor | PRO | MECH | PLANT | CON |  |

| ID | WBS | Activity | Type | Duration | Start | Finish | Predecessors | Total float | Resources | Responsible Party (asserted) | Project Phase | Discipline | Area / Location | Responsibility (asserted) | Contract Milestone |
| --- | --- | --- | --- | --- | --- | --- | --- | --- | --- | --- | --- | --- | --- | --- | --- |
|  | CONST | **Construction & Installation** |  |  | 2024-01-09 | 2025-04-21 |  |  |  |  |  |  |  |  |  |
|  | CIVIL | **Civil & Structural** |  |  | 2024-01-09 | 2025-04-16 |  |  |  |  |  |  |  |  |  |
| C-3000 |  | Site Establishment & Temporary Works |  | 15d | 2024-01-09 | 2024-01-25 | E-1000 | 183d | General Labour [480 h] | Contractor | CON | CIVIL | SITE | CON |  |
| C-3010 |  | Plant Room Civil Works & Equipment Plinths |  | 25d | 2024-05-22 | 2024-06-21 | C-3000, E-1090 | 155d | General Labour [1000 h] | Contractor | CON | CIVIL | PLANT | CON |  |
| C-3250 |  | Access Platforms, Ladders & Handrails |  | 10d | 2024-06-22 | 2024-07-03 | C-3010 | 245d | General Labour [300 h] | Contractor | CON | CIVIL | PLANT | CON |  |
| C-3240 |  | Plant Room Painting & Finishes |  | 8d | 2025-04-08 | 2025-04-16 | C-3050 | 4d | General Labour [360 h] | Contractor | CON | CIVIL | PLANT | CON |  |
|  | MECH | **Mechanical Installation** |  |  | 2024-06-22 | 2025-04-21 |  |  |  |  |  |  |  |  |  |
| C-3230 |  | HVAC Ductwork & Plant Room Ventilation |  | 20d | 2024-06-22 | 2024-07-15 | C-3010 | 235d | Mechanical Fitter [600 h] | Contractor | CON | MECH | PLANT | CON |  |
| C-3210 |  | Chilled Water Pump Installation |  | 15d | 2024-07-27 | 2024-08-13 | P-2110, C-3010 | 295d | Mechanical Fitter [480 h] | Contractor | CON | MECH | PLANT | CON |  |
| C-3200 |  | Cooling Tower Installation & Alignment |  | 20d | 2024-08-01 | 2024-08-23 | P-2140, C-3010 | 286d | Mechanical Fitter [640 h] | Contractor | CON | MECH | YARD | CON |  |
| C-3020 |  | Chiller Offloading, Rigging & Setting to Position |  | 10d | 2025-01-02 | 2025-01-13 | P-2060, C-3010 | 0d | Mechanical Fitter [320 h] | Contractor | CON | MECH | PLANT | CON |  |
| C-3030 |  | Primary Chilled Water Pipework Installation |  | 35d | 2025-01-14 | 2025-02-22 | C-3020, P-2120 | 0d | Mechanical Fitter [1400 h] | Contractor | CON | MECH | PLANT | CON |  |
| C-3040 |  | Chiller Mechanical Connections & Valve Sets |  | 20d | 2025-02-24 | 2025-03-18 | C-3030 | 0d | Mechanical Fitter [800 h] | Contractor | CON | MECH | PLANT | CON |  |
| C-3050 |  | Pipework Insulation & Identification |  | 15d | 2025-03-19 | 2025-04-07 | C-3040 | 0d | Mechanical Fitter [480 h] | Contractor | CON | MECH | PLANT | CON |  |
| C-3060 |  | Pipework Flushing & Chemical Cleaning |  | 12d | 2025-04-08 | 2025-04-21 | C-3050 | 0d | Mechanical Fitter [240 h] | Contractor | CON | MECH | PLANT | CON |  |
| C-3070 |  | Mechanical Completion | milestone | 0d | 2025-04-21 | 2025-04-21 | C-3060, C-3130, C-3230, C-3240, C-3250 | 0d |  | Contractor | CON | MULTI | PLANT | CON | Key Date - phase completion |
|  | ELEC | **Electrical & Controls Installation** |  |  | 2024-06-22 | 2024-10-22 |  |  |  |  |  |  |  |  |  |
| C-3100 |  | Electrical Containment & Cable Tray Installation |  | 30d | 2024-06-22 | 2024-07-26 | C-3010 | 155d | Electrician [900 h] | Contractor | CON | ELEC | PLANT | CON |  |
| C-3220 |  | Fire Protection & Detection Installation |  | 18d | 2024-06-22 | 2024-07-12 | C-3010 | 324d | Electrician [540 h] | Contractor | CON | ELEC | PLANT | CON |  |
| C-3110 |  | LV Switchgear Installation & Alignment |  | 20d | 2024-08-02 | 2024-08-24 | C-3100, P-2100 | 150d | Electrician [640 h] | Contractor | CON | ELEC | SUB | CON |  |
| C-3120 |  | Power Cabling, Glanding & Termination |  | 25d | 2024-08-26 | 2024-09-23 | C-3110 | 150d | Electrician [800 h] | Contractor | CON | ELEC | PLANT | CON |  |
| C-3130 |  | BMS Field Devices & Control Wiring |  | 25d | 2024-09-24 | 2024-10-22 | C-3120, P-2130 | 150d | Electrician [600 h] | Contractor | CON | CTRL | PLANT | CON |  |
|  | TCS | **Testing, Commissioning & Snagging** |  |  | 2024-07-13 | 2025-08-12 |  |  |  |  |  |  |  |  |  |
| T-4110 |  | Fire System Testing & Certification |  | 8d | 2024-07-13 | 2024-07-22 | C-3220 | 324d | Commissioning Engineer [128 h] | Contractor | TST | ELEC | PLANT | CON |  |
| T-4100 |  | Secondary Systems Testing - Towers & Pumps |  | 10d | 2024-08-24 | 2024-09-04 | C-3200, C-3210 | 286d | Commissioning Engineer [160 h] | Contractor | TST | MECH | YARD | CON |  |
| T-4000 |  | Static & Pressure Testing |  | 12d | 2025-04-22 | 2025-05-05 | C-3070 | 0d | Commissioning Engineer [240 h] | Contractor | TST | MECH | PLANT | CON |  |
| T-4010 |  | Energisation & Pre-Commissioning Checks |  | 10d | 2025-05-06 | 2025-05-16 | T-4000 | 0d | Commissioning Engineer [200 h] | Contractor | TST | ELEC | PLANT | CON |  |
| T-4020 |  | Chiller Commissioning - Vendor Attendance |  | 20d | 2025-05-17 | 2025-06-11 | T-4010 | 0d | Commissioning Engineer [400 h] | Vendor | TST | MECH | PLANT | VEN |  |
| T-4030 |  | Integrated System & Performance Testing |  | 15d | 2025-06-12 | 2025-06-28 | T-4020 | 0d | Commissioning Engineer [300 h] | Contractor | TST | CTRL | PLANT | CON |  |
| T-4040 |  | Snagging Inspection - Client & Consultant |  | 10d | 2025-06-30 | 2025-07-10 | T-4030 | 0d | Project Management [120 h] | Employer | SNG | MULTI | PLANT | EMP |  |
| T-4050 |  | Snag Rectification Works |  | 20d | 2025-07-11 | 2025-08-02 | T-4040 | 0d | Mechanical Fitter [400 h]; Electrician [200 h] | Contractor | SNG | MULTI | PLANT | CON |  |
| T-4060 |  | Re-inspection & Snag Close-out |  | 8d | 2025-08-04 | 2025-08-12 | T-4050 | 0d | Project Management [96 h] | Employer | SNG | MULTI | PLANT | EMP |  |
| T-4070 |  | Systems Accepted - Commissioning Complete | milestone | 0d | 2025-08-12 | 2025-08-12 | T-4060, T-4100, T-4110 | 0d |  | Shared / Joint | SNG | MULTI | PLANT | SHARE | Key Date - phase completion |

| ID | WBS | Activity | Type | Duration | Start | Finish | Predecessors | Total float | Calendar | Resources | Responsible Party (asserted) | Project Phase | Discipline | Area / Location | Responsibility (asserted) | Contract Milestone |
| --- | --- | --- | --- | --- | --- | --- | --- | --- | --- | --- | --- | --- | --- | --- | --- | --- |
|  | HAND | **Handover & Close-out** |  |  | 2025-06-30 | 2025-09-11 |  |  |  |  |  |  |  |  |  |  |
| H-5000 |  | O&M Manuals & As-Built Drawings Submission |  | 20d | 2025-06-30 | 2025-07-25 | T-4030 | 12d | 5-Day Office / Design Week | Design Engineer [320 h] | Contractor | HND | MULTI | OFF | CON |  |
| H-5010 |  | Operator Training |  | 10d | 2025-08-13 | 2025-08-26 | T-4070 | 12d | 5-Day Office / Design Week | Commissioning Engineer [80 h] | Contractor | HND | MULTI | PLANT | CON |  |
| H-5020 |  | Authority Inspection & Approval |  | 12d | 2025-08-13 | 2025-08-28 | T-4070, H-5000 | 0d | 5-Day Office / Design Week | Project Management [96 h] | Authority | HND | MULTI | SITE | AUTH |  |
| H-5045 |  | Spares & Special Tools Handover |  | 8d | 2025-08-13 | 2025-08-22 | T-4070 | 14d | 5-Day Office / Design Week | Project Management [64 h] | Contractor | HND | MECH | PLANT | CON |  |
| H-5030 |  | Taking-Over Certificate Documentation |  | 10d | 2025-08-29 | 2025-09-11 | H-5020 | 0d | 5-Day Office / Design Week | Project Management [80 h] | Employer | HND | MULTI | OFF | EMP |  |
| H-5040 |  | Substantial Completion & Taking Over | milestone | 0d | 2025-09-11 | 2025-09-11 | H-5030, H-5010, H-5045 | 0d | 5-Day Office / Design Week |  | Shared / Joint | HND | MULTI | SITE | SHARE | Contract Completion Date - Clause 8.2 |
|  | PM | **Project Management** |  |  | 2024-01-08 | 2025-05-09 |  |  |  |  |  |  |  |  |  |  |
| Z-9000 |  | Project Management & Site Supervision | level of effort | 340d | 2024-01-08 | 2025-05-09 | E-1000 SS | 88d | 5-Day Office / Design Week |  | Contractor | PM | MULTI | SITE | CON |  |
| Z-9010 |  | Site Facilities, Welfare & Security | level of effort | 330d | 2024-01-09 | 2025-02-05 | C-3000 SS | 183d |  |  | Contractor | PM | MULTI | SITE | CON |  |

## Activity codes

| Code | Value | Meaning |
| --- | --- | --- |
| Area / Location | OFF | Off-site |
| Area / Location | PLANT | Plant Room |
| Area / Location | SITE | Site-wide |
| Area / Location | SUB | LV Substation |
| Area / Location | YARD | Cooling Tower Yard |
| Discipline | CIVIL | Civil |
| Discipline | CTRL | Controls & BMS |
| Discipline | ELEC | Electrical |
| Discipline | MECH | Mechanical |
| Discipline | MULTI | Multi-discipline |
| Project Phase | CON | Construction |
| Project Phase | ENG | Engineering & Design |
| Project Phase | HND | Handover |
| Project Phase | PM | Project Management |
| Project Phase | PRO | Procurement |
| Project Phase | SNG | Snagging & Rectification |
| Project Phase | TST | Testing & Commissioning |
| Responsibility (asserted) | AUTH | Authority |
| Responsibility (asserted) | CON | Contractor |
| Responsibility (asserted) | EMP | Employer |
| Responsibility (asserted) | SHARE | Shared / Joint |
| Responsibility (asserted) | VEN | Vendor |
