# Harbour Point District Cooling Plant DCP-03

Schedule from Primavera P6, 2024-01-08 to 2025-12-12, data date 2025-12-12, A marks actual dates.

## Calendars

- 6-Day Site Construction Week: Mon-Sat 08:00-12:00, 13:00-17:00; Sun off. Exceptions (off unless hours are given): 2024-04-08 to 2024-04-10, 2024-06-16 to 2024-06-18, 2024-12-02 to 2024-12-03, 2025-01-01, 2025-03-30 to 2025-04-01, 2025-06-06 to 2025-06-07.
- 5-Day Office / Design Week: Mon-Fri 08:00-12:00, 13:00-17:00; Sat-Sun off. Exceptions (off unless hours are given): 2024-04-08 to 2024-04-10, 2024-06-16 to 2024-06-18, 2024-12-02 to 2024-12-03, 2025-01-01, 2025-03-30 to 2025-04-01, 2025-06-06 to 2025-06-07.
- 7-Day Manufacture & Shipping: Mon-Sun 08:00-12:00, 13:00-17:00.

## Resources

| Resource | Group |
| --- | --- |
| Design Engineer | labor |
| Project Management | labor |
| Commissioning Engineer | labor |
| General Labour | labor |
| Mechanical Fitter | labor |
| Electrician | labor |

## Schedule

| ID | WBS | Activity | Type | Duration | Start | Finish | Predecessors | Complete | Calendar | Resources | Responsible Party (asserted) | Project Phase | Discipline | Area / Location | Responsibility (asserted) | Contract Milestone |
| --- | --- | --- | --- | --- | --- | --- | --- | --- | --- | --- | --- | --- | --- | --- | --- | --- |
|  | ENG | **Engineering & Design** |  |  | 2024-01-08 | 2024-06-24 |  |  |  |  |  |  |  |  |  |  |
|  | CONCEPT | **Concept & Approvals** |  |  | 2024-01-08 | 2024-03-14 |  |  |  |  |  |  |  |  |  |  |
| E-1000 |  | Notice to Proceed | milestone | 0d | 2024-01-08 A | 2024-01-08 A |  | 100% | 5-Day Office / Design Week |  | Employer | ENG | MULTI | SITE | EMP |  |
| E-1010 |  | Mobilise Design Team & Design Kick-off |  | 10d | 2024-01-09 A | 2024-01-22 A | E-1000 | 100% | 5-Day Office / Design Week | Design Engineer [320 h] | Contractor | ENG | MULTI | OFF | CON |  |
| E-1020 |  | Concept Design & Basis of Design |  | 20d | 2024-01-23 A | 2024-02-19 A | E-1010 | 100% | 5-Day Office / Design Week | Design Engineer [640 h] | Contractor | ENG | MULTI | OFF | CON |  |
| E-1030 |  | Employer Review & Comment - Concept Design |  | 10d | 2024-02-20 A | 2024-03-14 A | E-1020 | 100% | 5-Day Office / Design Week | Design Engineer [80 h] | Employer | ENG | MULTI | OFF | EMP |  |
|  | DETAIL | **Detailed Design & IFC** |  |  | 2024-03-15 | 2024-06-24 |  |  |  |  |  |  |  |  |  |  |
| E-1040 |  | Detailed Design - Chiller Plant Mechanical |  | 32d | 2024-03-15 A | 2024-05-02 A | E-1030 | 100% | 5-Day Office / Design Week | Design Engineer [960 h] | Contractor | ENG | MECH | PLANT | CON |  |
| E-1050 |  | Detailed Design - Electrical, LV & Controls |  | 25d | 2024-03-15 A | 2024-04-29 A | E-1030 | 100% | 5-Day Office / Design Week | Design Engineer [800 h] | Contractor | ENG | ELEC | SUB | CON |  |
| E-1060 |  | Consultant Review & Approval - Detailed Design |  | 15d | 2024-05-03 A | 2024-05-23 A | E-1040, E-1050 | 100% | 5-Day Office / Design Week | Design Engineer [120 h] | Employer | ENG | MULTI | OFF | EMP |  |
| E-1070 |  | Issue IFC Drawings - Mechanical Package |  | 12d | 2024-05-24 A | 2024-06-10 A | E-1060 | 100% | 5-Day Office / Design Week | Design Engineer [240 h] | Contractor | ENG | MECH | OFF | CON |  |
| E-1075 |  | Issue IFC Drawings - Electrical Package |  | 10d | 2024-05-24 A | 2024-06-11 A | E-1060 | 100% | 5-Day Office / Design Week | Design Engineer [200 h] | Contractor | ENG | ELEC | OFF | CON |  |
| E-1090 |  | Builder's Work & Openings Information Issued |  | 8d | 2024-05-24 A | 2024-06-24 A | E-1060 | 100% | 5-Day Office / Design Week | Design Engineer [120 h] | Employer | ENG | CIVIL | PLANT | EMP |  |
| E-1080 |  | Design Freeze - IFC Drawings Issued | milestone | 0d | 2024-06-11 A | 2024-06-11 A | E-1070, E-1075 | 100% | 5-Day Office / Design Week |  | Shared / Joint | ENG | MULTI | OFF | SHARE | Key Date - phase completion |
|  | PROC | **Procurement** |  |  | 2024-06-11 | 2025-02-03 |  |  |  |  |  |  |  |  |  |  |
|  | CHILLER | **Chiller Package (Long Lead)** |  |  | 2024-06-12 | 2025-02-03 |  |  |  |  |  |  |  |  |  |  |
| P-2000 |  | Chiller Package - Tender & Technical Evaluation |  | 20d | 2024-06-12 A | 2024-07-11 A | E-1080 | 100% | 5-Day Office / Design Week | Project Management [160 h] | Contractor | PRO | MECH | OFF | CON |  |
| P-2010 |  | Chiller Package - Award & Purchase Order |  | 10d | 2024-07-12 A | 2024-07-25 A | P-2000 | 100% | 5-Day Office / Design Week | Project Management [80 h] | Employer | PRO | MECH | OFF | EMP |  |
| P-2020 |  | Chiller - Vendor Drawings & Approval |  | 25d | 2024-07-26 A | 2024-08-29 A | P-2010 | 100% | 5-Day Office / Design Week | Design Engineer [200 h] | Vendor | PRO | MECH | OFF | VEN |  |
| P-2030 |  | Chiller - Manufacture & Assembly |  | 90d | 2024-08-30 A | 2024-12-11 A | P-2020 | 100% | 7-Day Manufacture & Shipping |  | Vendor | PRO | MECH | OFF | VEN |  |
| P-2040 |  | Chiller - Factory Acceptance Testing |  | 10d | 2024-12-12 A | 2024-12-25 A | P-2030 | 100% | 5-Day Office / Design Week | Commissioning Engineer [80 h] | Vendor | PRO | MECH | OFF | VEN |  |
| P-2050 |  | Chiller - Shipping & Delivery to Site |  | 35d | 2024-12-26 A | 2025-02-03 A | P-2040 | 100% | 7-Day Manufacture & Shipping |  | Vendor | PRO | MECH | SITE | VEN |  |
| P-2060 |  | Chillers Delivered to Site | milestone | 0d | 2025-02-03 A | 2025-02-03 A | P-2050 | 100% |  |  | Vendor | PRO | MECH | SITE | VEN | Key Date - phase completion |
|  | SECOND | **Secondary Packages** |  |  | 2024-06-11 | 2024-08-30 |  |  |  |  |  |  |  |  |  |  |
| P-2110 |  | Chilled Water Pumps - Procure & Deliver |  | 60d | 2024-06-11 A | 2024-08-09 A | E-1070 | 100% | 7-Day Manufacture & Shipping |  | Contractor | PRO | MECH | PLANT | CON |  |
| P-2120 |  | Pipework, Valves & Fittings - Procure & Deliver |  | 45d | 2024-06-11 A | 2024-07-25 A | E-1070 | 100% | 7-Day Manufacture & Shipping |  | Contractor | PRO | MECH | PLANT | CON |  |
| P-2140 |  | Cooling Towers - Procure & Deliver |  | 65d | 2024-06-11 A | 2024-08-14 A | E-1070 | 100% | 7-Day Manufacture & Shipping |  | Contractor | PRO | MECH | YARD | CON |  |
| P-2100 |  | LV Switchgear - Procure & Deliver |  | 70d | 2024-06-12 A | 2024-08-30 A | E-1075 | 100% | 7-Day Manufacture & Shipping |  | Contractor | PRO | ELEC | SUB | CON |  |
| P-2130 |  | BMS & Controls Package - Procure & Deliver |  | 55d | 2024-06-12 A | 2024-08-05 A | E-1075 | 100% | 7-Day Manufacture & Shipping |  | Contractor | PRO | CTRL | PLANT | CON |  |

Notes:
- E-1030: Delay Event Reference: DE-01 - Employer's concept design review over-ran (14d)
- E-1040: Delay Event Reference: DE-02 - Design development of revised chiller capacity (4-6d)
- E-1050: Delay Event Reference: DE-02 - Design development of revised chiller capacity (4-6d)
- E-1075: Delay Event Reference: DE-03 - Late issue of electrical/builder's work information (8-20d)
- E-1090: Delay Event Reference: DE-03 - Late issue of electrical/builder's work information (8-20d)
- P-2030: Delay Event Reference: DE-04 - Vendor compressor supply shortage in manufacture (12d)
- P-2050: Delay Event Reference: DE-05 - Port congestion on delivery voyage (5d)
- P-2100: Delay Event Reference: DE-06 - Switchgear late delivery and consequent electrical works (10-25d)

| ID | WBS | Activity | Type | Duration | Start | Finish | Predecessors | Complete | Resources | Responsible Party (asserted) | Project Phase | Discipline | Area / Location | Responsibility (asserted) | Contract Milestone |
| --- | --- | --- | --- | --- | --- | --- | --- | --- | --- | --- | --- | --- | --- | --- | --- |
|  | CONST | **Construction & Installation** |  |  | 2024-01-09 | 2025-06-11 |  |  |  |  |  |  |  |  |  |
|  | CIVIL | **Civil & Structural** |  |  | 2024-01-09 | 2025-06-04 |  |  |  |  |  |  |  |  |  |
| C-3000 |  | Site Establishment & Temporary Works |  | 15d | 2024-01-09 A | 2024-01-25 A | E-1000 | 100% | General Labour [480 h] | Contractor | CON | CIVIL | SITE | CON |  |
| C-3010 |  | Plant Room Civil Works & Equipment Plinths |  | 25d | 2024-06-25 A | 2024-08-01 A | C-3000, E-1090 | 100% | General Labour [1000 h] | Contractor | CON | CIVIL | PLANT | CON |  |
| C-3250 |  | Access Platforms, Ladders & Handrails |  | 10d | 2024-08-02 A | 2024-08-13 A | C-3010 | 100% | General Labour [300 h] | Contractor | CON | CIVIL | PLANT | CON |  |
| C-3240 |  | Plant Room Painting & Finishes |  | 8d | 2025-05-27 A | 2025-06-04 A | C-3050 | 100% | General Labour [360 h] | Contractor | CON | CIVIL | PLANT | CON |  |
|  | MECH | **Mechanical Installation** |  |  | 2024-08-02 | 2025-06-11 |  |  |  |  |  |  |  |  |  |
| C-3230 |  | HVAC Ductwork & Plant Room Ventilation |  | 20d | 2024-08-02 A | 2024-08-24 A | C-3010 | 100% | Mechanical Fitter [600 h] | Contractor | CON | MECH | PLANT | CON |  |
| C-3210 |  | Chilled Water Pump Installation |  | 15d | 2024-08-10 A | 2024-08-27 A | P-2110, C-3010 | 100% | Mechanical Fitter [480 h] | Contractor | CON | MECH | PLANT | CON |  |
| C-3200 |  | Cooling Tower Installation & Alignment |  | 20d | 2024-08-15 A | 2024-09-06 A | P-2140, C-3010 | 100% | Mechanical Fitter [640 h] | Contractor | CON | MECH | YARD | CON |  |
| C-3020 |  | Chiller Offloading, Rigging & Setting to Position |  | 10d | 2025-02-04 A | 2025-02-14 A | P-2060, C-3010 | 100% | Mechanical Fitter [320 h] | Contractor | CON | MECH | PLANT | CON |  |
| C-3030 |  | Primary Chilled Water Pipework Installation |  | 35d | 2025-02-15 A | 2025-04-09 A | C-3020, P-2120 | 100% | Mechanical Fitter [1400 h] | Contractor | CON | MECH | PLANT | CON |  |
| C-3035 |  | Additional Pipework - Revised Chiller Layout (VO-07) |  | 8d | 2025-04-10 A | 2025-04-18 A | C-3030 | 100% | Mechanical Fitter [320 h] | Employer | CON | MECH | PLANT | EMP |  |
| C-3040 |  | Chiller Mechanical Connections & Valve Sets |  | 20d | 2025-04-19 A | 2025-05-12 A | C-3035 | 100% | Mechanical Fitter [800 h] | Contractor | CON | MECH | PLANT | CON |  |
| C-3050 |  | Pipework Insulation & Identification |  | 15d | 2025-05-09 A | 2025-05-26 A | C-3040 | 100% | Mechanical Fitter [480 h] | Contractor | CON | MECH | PLANT | CON |  |
| C-3060 |  | Pipework Flushing & Chemical Cleaning |  | 12d | 2025-05-27 A | 2025-06-11 A | C-3050 | 100% | Mechanical Fitter [240 h] | Contractor | CON | MECH | PLANT | CON |  |
| C-3070 |  | Mechanical Completion | milestone | 0d | 2025-06-11 A | 2025-06-11 A | C-3060, C-3130, C-3230, C-3240, C-3250 | 100% |  | Contractor | CON | MULTI | PLANT | CON | Key Date - phase completion |
|  | ELEC | **Electrical & Controls Installation** |  |  | 2024-08-02 | 2024-12-11 |  |  |  |  |  |  |  |  |  |
| C-3100 |  | Electrical Containment & Cable Tray Installation |  | 30d | 2024-08-02 A | 2024-08-31 A | C-3010 | 100% | Electrician [900 h] | Contractor | CON | ELEC | PLANT | CON |  |
| C-3220 |  | Fire Protection & Detection Installation |  | 18d | 2024-08-02 A | 2024-08-22 A | C-3010 | 100% | Electrician [540 h] | Contractor | CON | ELEC | PLANT | CON |  |
| C-3110 |  | LV Switchgear Installation & Alignment |  | 20d | 2024-09-02 A | 2024-10-01 A | C-3100, P-2100 | 100% | Electrician [640 h] | Contractor | CON | ELEC | SUB | CON |  |
| C-3120 |  | Power Cabling, Glanding & Termination |  | 25d | 2024-10-02 A | 2024-11-05 A | C-3110 | 100% | Electrician [800 h] | Contractor | CON | ELEC | PLANT | CON |  |
| C-3130 |  | BMS Field Devices & Control Wiring |  | 25d | 2024-11-06 A | 2024-12-11 A | C-3120, P-2130 | 100% | Electrician [600 h] | Contractor | CON | CTRL | PLANT | CON |  |
|  | TCS | **Testing, Commissioning & Snagging** |  |  | 2024-08-23 | 2025-10-22 |  |  |  |  |  |  |  |  |  |
| T-4110 |  | Fire System Testing & Certification |  | 8d | 2024-08-23 A | 2024-08-31 A | C-3220 | 100% | Commissioning Engineer [128 h] | Contractor | TST | ELEC | PLANT | CON |  |
| T-4100 |  | Secondary Systems Testing - Towers & Pumps |  | 10d | 2024-09-07 A | 2024-09-18 A | C-3200, C-3210 | 100% | Commissioning Engineer [160 h] | Contractor | TST | MECH | YARD | CON |  |
| T-4000 |  | Static & Pressure Testing |  | 12d | 2025-06-12 A | 2025-06-25 A | C-3070 | 100% | Commissioning Engineer [240 h] | Contractor | TST | MECH | PLANT | CON |  |
| T-4010 |  | Energisation & Pre-Commissioning Checks |  | 10d | 2025-06-23 A | 2025-07-03 A | T-4000 | 100% | Commissioning Engineer [200 h] | Contractor | TST | ELEC | PLANT | CON |  |
| T-4020 |  | Chiller Commissioning - Vendor Attendance |  | 20d | 2025-07-04 A | 2025-08-04 A | T-4010 | 100% | Commissioning Engineer [400 h] | Vendor | TST | MECH | PLANT | VEN |  |
| T-4030 |  | Integrated System & Performance Testing |  | 15d | 2025-08-05 A | 2025-08-21 A | T-4020 | 100% | Commissioning Engineer [300 h] | Contractor | TST | CTRL | PLANT | CON |  |
| T-4040 |  | Snagging Inspection - Client & Consultant |  | 10d | 2025-08-22 A | 2025-09-02 A | T-4030 | 100% | Project Management [120 h] | Employer | SNG | MULTI | PLANT | EMP |  |
| T-4050 |  | Snag Rectification Works |  | 20d | 2025-09-03 A | 2025-10-06 A | T-4040 | 100% | Mechanical Fitter [400 h]; Electrician [200 h] | Contractor | SNG | MULTI | PLANT | CON |  |
| T-4055 |  | Second Snag Rectification Pass |  | 6d | 2025-10-07 A | 2025-10-13 A | T-4050 | 100% | Mechanical Fitter [120 h] | Contractor | SNG | MULTI | PLANT | CON |  |
| T-4060 |  | Re-inspection & Snag Close-out |  | 8d | 2025-10-14 A | 2025-10-22 A | T-4055 | 100% | Project Management [96 h] | Employer | SNG | MULTI | PLANT | EMP |  |
| T-4070 |  | Systems Accepted - Commissioning Complete | milestone | 0d | 2025-10-22 A | 2025-10-22 A | T-4060, T-4100, T-4110 | 100% |  | Shared / Joint | SNG | MULTI | PLANT | SHARE | Key Date - phase completion |

Notes:
- C-3010: Delay Event Reference: DE-08 - Structural openings released late to civil works (8d)
- C-3030: Delay Event Reference: DE-09 - Pipework installation productivity shortfall (9d)
- C-3035: Delay Event Reference: DE-10 - Additional pipework instructed under VO-07
- C-3100: Delay Event Reference: DE-11 - Contractor resequenced containment - 4d recovered
- C-3110: Delay Event Reference: DE-06 - Switchgear late delivery and consequent electrical works (10-25d)
- C-3120: Delay Event Reference: DE-06 - Switchgear late delivery and consequent electrical works (10-25d)
- C-3130: Delay Event Reference: DE-06 - Switchgear late delivery and consequent electrical works (10-25d)
- T-4020: Delay Event Reference: DE-12 - Vendor commissioning engineer mobilisation delay (7d)
- T-4050: Delay Event Reference: DE-13 - Snag volume required a second rectification pass (12d + 6d)
- T-4055: Delay Event Reference: DE-13 - Snag volume required a second rectification pass (12d + 6d)

| ID | WBS | Activity | Type | Duration | Start | Finish | Predecessors | Complete | Calendar | Resources | Responsible Party (asserted) | Project Phase | Discipline | Area / Location | Responsibility (asserted) | Delay Event Reference | Contract Milestone |
| --- | --- | --- | --- | --- | --- | --- | --- | --- | --- | --- | --- | --- | --- | --- | --- | --- | --- |
|  | HAND | **Handover & Close-out** |  |  | 2025-08-22 | 2025-12-12 |  |  |  |  |  |  |  |  |  |  |  |
| H-5000 |  | O&M Manuals & As-Built Drawings Submission |  | 20d | 2025-08-22 A | 2025-09-18 A | T-4030 | 100% | 5-Day Office / Design Week | Design Engineer [320 h] | Contractor | HND | MULTI | OFF | CON |  |  |
| H-5010 |  | Operator Training |  | 10d | 2025-10-23 A | 2025-11-05 A | T-4070 | 100% | 5-Day Office / Design Week | Commissioning Engineer [80 h] | Contractor | HND | MULTI | PLANT | CON |  |  |
| H-5020 |  | Authority Inspection & Approval |  | 12d | 2025-10-23 A | 2025-11-21 A | T-4070, H-5000 | 100% | 5-Day Office / Design Week | Project Management [96 h] | Authority | HND | MULTI | SITE | AUTH | DE-14 - Authority inspection failed at first attempt (14d) |  |
| H-5045 |  | Spares & Special Tools Handover |  | 8d | 2025-10-23 A | 2025-11-03 A | T-4070 | 100% | 5-Day Office / Design Week | Project Management [64 h] | Contractor | HND | MECH | PLANT | CON |  |  |
| H-5030 |  | Taking-Over Certificate Documentation |  | 10d | 2025-11-24 A | 2025-12-12 A | H-5020 | 100% | 5-Day Office / Design Week | Project Management [80 h] | Employer | HND | MULTI | OFF | EMP | DE-15 - Taking-over documentation compilation (7d) |  |
| H-5040 |  | Substantial Completion & Taking Over | milestone | 0d | 2025-12-12 A | 2025-12-12 A | H-5030, H-5010, H-5045 | 100% | 5-Day Office / Design Week |  | Shared / Joint | HND | MULTI | SITE | SHARE |  | Contract Completion Date - Clause 8.2 |
|  | PM | **Project Management** |  |  | 2024-01-08 | 2025-05-09 |  |  |  |  |  |  |  |  |  |  |  |
| Z-9000 |  | Project Management & Site Supervision | level of effort | 340d | 2024-01-08 A | 2025-05-09 A | E-1000 SS | 100% | 5-Day Office / Design Week |  | Contractor | PM | MULTI | SITE | CON |  |  |
| Z-9010 |  | Site Facilities, Welfare & Security | level of effort | 330d | 2024-01-09 A | 2025-02-05 A | C-3000 SS | 100% |  |  | Contractor | PM | MULTI | SITE | CON |  |  |

## Activity codes

| Code | Value | Meaning |
| --- | --- | --- |
| Area / Location | OFF | Off-site |
| Area / Location | PLANT | Plant Room |
| Area / Location | SITE | Site-wide |
| Area / Location | SUB | LV Substation |
| Area / Location | YARD | Cooling Tower Yard |
| Discipline | CIVIL | Civil |
| Discipline | CTRL | Controls & BMS |
| Discipline | ELEC | Electrical |
| Discipline | MECH | Mechanical |
| Discipline | MULTI | Multi-discipline |
| Project Phase | CON | Construction |
| Project Phase | ENG | Engineering & Design |
| Project Phase | HND | Handover |
| Project Phase | PM | Project Management |
| Project Phase | PRO | Procurement |
| Project Phase | SNG | Snagging & Rectification |
| Project Phase | TST | Testing & Commissioning |
| Responsibility (asserted) | AUTH | Authority |
| Responsibility (asserted) | CON | Contractor |
| Responsibility (asserted) | EMP | Employer |
| Responsibility (asserted) | SHARE | Shared / Joint |
| Responsibility (asserted) | VEN | Vendor |
