# DAMAC Towers by Paramount BLRev4.3

Schedule from Primavera P6, 2016-04-04 to 2017-02-15, data date 2016-07-05, A marks actual dates.
Must finish by 2017-02-16

## Calendars

- ATL522 - Construction Works (6x9): Mon-Thu 07:30-16:30; Fri off; Sat-Sun 07:30-16:30. Exceptions (off unless hours are given): 2016-05-05, 2016-07-06 to 2016-07-07, 2016-09-11 to 2016-09-13, 2016-10-02, 2016-11-30, 2016-12-11.
- ATL522 - Engineering Submission (5x9): Mon-Thu 07:30-16:30; Fri-Sat off; Sun 07:30-16:30. Exceptions (off unless hours are given): 2016-05-05, 2016-07-06 to 2016-07-07, 2016-09-11 to 2016-09-13, 2016-10-02, 2016-11-30, 2016-12-11.
- ATL522 - Engineering Approval (7x9): Mon-Sun 07:30-16:30. Exceptions (off unless hours are given): 2016-05-05, 2016-07-06 to 2016-07-07, 2016-09-11 to 2016-09-13, 2016-10-02, 2016-11-30, 2016-12-11.
- ATL522 - Local Procurment (7x24): Mon-Sun 00:00-00:00. Exceptions (off unless hours are given): 2016-05-05, 2016-07-06 to 2016-07-07, 2016-09-11 to 2016-09-13, 2016-10-02, 2016-11-30, 2016-12-11.
- 7x24: Mon-Sun 01:00-12:00, 13:00-00:00.
- ATL522 - EU Procurment (7x24): Mon-Sun 00:00-00:00. Exceptions (off unless hours are given): 2016-05-05, 2016-07-06 to 2016-07-07, 2016-07-31 to 2016-08-31, 2016-09-11 to 2016-09-13, 2016-10-02, 2016-11-30, 2016-12-11.

## Resources

| Resource | Group | Unit | Notes |
| --- | --- | --- | --- |
| Preparation and Submission Shop Drawing | equipment |  | ï»¿ |
| Eng Clinet Approval | equipment |  | ï»¿ |
| Preparation and Submission Material | equipment |  | ï»¿ |
| Procurement | equipment |  | ï»¿ |
| Steel | material | M3 |  |

## Schedule

| ID | WBS | Activity | Type | Duration | Start | Finish | Predecessors | Complete | Planned start | Planned finish | Total float | Calendar |
| --- | --- | --- | --- | --- | --- | --- | --- | --- | --- | --- | --- | --- |
|  | 1 | **Project Key Dates** |  |  | 2016-04-04 | 2017-02-15 |  |  |  |  |  |  |
| KD01 |  | Project Commencement (Nomination) | milestone | 0d | 2016-04-04 A | 2016-04-04 A |  | 100% | 2016-04-06 | 2016-04-06 |  | 7x24 |
| KD15 |  | Project Completion (TOC) | milestone | 0d | 2017-02-15 | 2017-02-15 | TOC01, TOC02, TOC03, TOC04, TOC05, TOC06, TOC07, TOC08, TOC09, TOC10, TOC11, TOC12, TOC15, TOC16, TOC17, TOC19, TOC20, TOC21, KD05, KD25, KD35, A3400, A3590, A3780, A3970, A4160, A4350, A4540, A4730, A4920, A5110, B14-P1PF-S012, B15-P1RPF-C010, B33-P1SR-S020, A5530, A5770, B2-UPHL-S13, B3-UPHR-S012, B4-UPVP-S013, B5-UPSD-S009, B6-UPHLL-S006, B7-UPRLL-S009, B8-UPFO-S007, B9-UPCB-S13, B10-UPRT-S007, B11-UPRR-S011, B12-UPPR-S010, B13-UPRL-S010, B20-UPCB-C004, B28-TsLC-S010, B29-SPALC-S018, B34-UPSEB-S018, B35-TCSR-S007, B39-LGLL-S009, A6040 |  |  |  | 0d |  |
|  | 2 | **Project Milestones** |  |  | 2016-04-06 | 2017-02-15 |  |  |  |  |  |  |
|  | 1 | **Required Milestones** |  |  | 2016-04-06 | 2016-10-02 |  |  |  |  |  |  |
|  | 4 | **Advance Payment** |  |  | 2016-04-06 | 2016-07-04 |  |  |  |  |  |  |
| KD02 |  | Contract Sing off | milestone | 0d | 2016-04-06 A | 2016-04-06 A | KD01 FS+7d | 100% | 2016-04-13 | 2016-04-13 |  | ATL522 - Engineering Submission (5x9) |
| KD03 |  | Receipt of Advance Payment | milestone | 0d | 2016-07-04 A | 2016-07-04 A | KD02 FS+14d | 100% |  |  |  | ATL522 - Engineering Submission (5x9) |
|  | 1 | **Design Freeze** |  |  | 2016-04-06 | 2016-06-26 |  |  |  |  |  |  |
| RM-DF-013 |  | Design Freeze & Receipt of IFC Drawing Bill 14 P1-PRE-FUNCTION |  | 0d | 2016-04-06 A | 2016-04-07 A | KD01 | 100% | 2016-04-06 | 2016-04-06 |  | 7x24 |
| RM-DF-014 |  | Design Freeze & Receipt of IFC Drawing Bill 15 P1-REST ROOMS (PRE-FUNTION) |  | 0d | 2016-04-06 A | 2016-04-07 A | KD01 | 100% | 2016-04-06 | 2016-04-06 |  | 7x24 |
| RM-DF-015 |  | Design Freeze & Receipt of IFC Drawing Bill 20 UP-COFFEE BAR |  | 0d | 2016-04-06 A | 2016-04-07 A | KD01 | 100% | 2016-04-06 | 2016-04-06 |  | 7x24 |
| RM-DF-019 |  | Design Freeze & Receipt of IFC Drawing Bill 33 P1-SCREENING ROOM |  | 0d | 2016-04-06 A | 2016-04-07 A | KD01 | 100% | 2016-04-06 | 2016-04-06 |  | 7x24 |
| RM-DF-011 |  | Design Freeze & Receipt of IFC Drawing Bill 12 UP-PRAYER ROOMS | milestone | 0d | 2016-04-25 A | 2016-04-25 A | KD01, KD01 SS | 100% | 2016-04-06 | 2016-04-06 |  | ATL522 - Engineering Submission (5x9) |
| RM-DF-001 |  | Design Freeze & Receipt of IFC Drawing Bill 2 UP-HOTEL LOBBY | milestone | 0d | 2016-05-11 A | 2016-05-11 A | KD01, KD01 SS | 100% | 2016-04-06 | 2016-04-06 |  | ATL522 - Engineering Submission (5x9) |
| RM-DF-002 |  | Design Freeze & Receipt of IFC Drawing Bill 3 UP-HOTEL RECEPTION | milestone | 0d | 2016-05-11 A | 2016-05-11 A | KD01, KD01 SS | 100% | 2016-04-06 | 2016-04-06 |  | ATL522 - Engineering Submission (5x9) |
| RM-DF-003 |  | Design Freeze & Receipt of IFC Drawing Bill 4 UP-VIP PROTOCOL | milestone | 0d | 2016-05-11 A | 2016-05-11 A | KD01, KD01 SS | 100% | 2016-04-06 | 2016-04-06 |  | ATL522 - Engineering Submission (5x9) |
| RM-DF-004 |  | Design Freeze & Receipt of IFC Drawing Bill 5 UP-SAFE DEPOSIT | milestone | 0d | 2016-05-11 A | 2016-05-11 A | KD01, KD01 SS | 100% | 2016-04-06 | 2016-04-06 |  | ATL522 - Engineering Submission (5x9) |
| RM-DF-005 |  | Design Freeze & Receipt of IFC Drawing Bill 6 UP-HOTEL LIFT LOBBY | milestone | 0d | 2016-05-11 A | 2016-05-11 A | KD01, KD01 SS | 100% | 2016-04-06 | 2016-04-06 |  | ATL522 - Engineering Submission (5x9) |
| RM-DF-006 |  | Design Freeze & Receipt of IFC Drawing Bill 7 UP-RESIDENCE'S LIFT LOBBY | milestone | 0d | 2016-05-11 A | 2016-05-11 A | KD01, KD01 SS | 100% | 2016-04-06 | 2016-04-06 |  | ATL522 - Engineering Submission (5x9) |
| RM-DF-007 |  | Design Freeze & Receipt of IFC Drawing Bill 8 UP-FRONT OFFICE | milestone | 0d | 2016-05-11 A | 2016-05-11 A | KD01, KD01 SS | 100% | 2016-04-06 | 2016-04-06 |  | ATL522 - Engineering Submission (5x9) |
| RM-DF-009 |  | Design Freeze & Receipt of IFC Drawing Bill 10 UP-RETAIL | milestone | 0d | 2016-05-11 A | 2016-05-11 A | KD01, KD01 SS | 100% | 2016-04-06 | 2016-04-06 |  | ATL522 - Engineering Submission (5x9) |
| RM-DF-010 |  | Design Freeze & Receipt of IFC Drawing Bill 11 UP-REST ROOMS | milestone | 0d | 2016-05-11 A | 2016-05-11 A | KD01, KD01 SS | 100% | 2016-04-06 | 2016-04-06 |  | ATL522 - Engineering Submission (5x9) |
| RM-DF-012 |  | Design Freeze & Receipt of IFC Drawing Bill 13 UP-RESIDENCES LOBBY | milestone | 0d | 2016-05-11 A | 2016-05-11 A | KD01, KD01 SS | 100% | 2016-04-06 | 2016-04-06 |  | ATL522 - Engineering Submission (5x9) |
| RM-DF-020 |  | Design Freeze & Receipt of IFC Drawing Bill 34 UP-SPEAK EASY BAR | milestone | 0d | 2016-05-11 A | 2016-05-11 A | KD01, KD01 SS | 100% | 2016-04-06 | 2016-04-06 |  | ATL522 - Engineering Submission (5x9) |
| RM-DF-017 |  | Design Freeze & Receipt of IFC Drawing Bill 29 SPA | milestone | 0d | 2016-05-23 A | 2016-05-23 A | KD01, KD01 SS | 100% | 2016-04-06 | 2016-04-06 |  | ATL522 - Engineering Submission (5x9) |
| RM-DF-008 |  | Design Freeze & Receipt of IFC Drawing Bill 9 UP-CHOCOLATE BOUTIQUE | milestone | 0d | 2016-06-07 A | 2016-06-07 A | KD01, KD01 SS | 100% | 2016-04-06 | 2016-04-06 |  | ATL522 - Engineering Submission (5x9) |
| RM-DF-022 |  | Design Freeze & Receipt of IFC Drawing Bill 39 LG- LIFT LOBBY | milestone | 0d | 2016-06-12 A | 2016-06-12 A | KD01, KD01 SS | 100% | 2016-04-06 | 2016-04-06 |  | ATL522 - Engineering Submission (5x9) |
| RM-DF-016 |  | Design Freeze & Receipt of IFC Drawing Bill 28 LIFT CAR - TOWER A, B & D | milestone | 0d | 2016-06-26 A | 2016-06-26 A | KD01 | 100% | 2016-04-06 | 2016-04-06 |  | 7x24 |
| RM-DF-021 |  | Design Freeze & Receipt of IFC Drawing Bill 35 LIFT CAR - TOWER C | milestone | 0d | 2016-06-26 A | 2016-06-26 A | KD01, KD01 SS | 100% | 2016-04-06 | 2016-04-06 |  | ATL522 - Engineering Submission (5x9) |

| ID | WBS | Activity | Type | Duration | Start | Finish | Predecessors | Complete | Planned start | Planned finish | Total float | Free float | Constraint | Calendar |
| --- | --- | --- | --- | --- | --- | --- | --- | --- | --- | --- | --- | --- | --- | --- |
|  | 3 | **Site Access** |  |  | 2016-05-25 | 2016-08-21 |  |  |  |  |  |  |  |  |
| RM-SA-000 |  | Site Acess to Mobilize | milestone | 0d | 2016-05-25 A | 2016-05-25 A | KD01 | 100% | 2016-05-01 | 2016-05-01 |  |  |  | 7x24 |
| RM-SA-003 |  | Site Acess Bill 4 UP-VIP PROTOCOL | milestone | 0d | 2016-07-03 A | 2016-07-03 A | KD01 | 100% |  |  |  |  |  | ATL522 - Engineering Submission (5x9) |
| RM-SA-011 |  | Site Acess Bill 12 UP-PRAYER ROOMS | milestone | 0d | 2016-07-03 A | 2016-07-03 A | KD01 | 100% |  |  |  |  |  | ATL522 - Engineering Submission (5x9) |
| RM-SA-020 |  | Site Acess Bill 34 UP-SPEAK EASY BAR | milestone | 0d | 2016-07-03 A | 2016-07-03 A | KD01 | 100% |  |  |  |  |  | ATL522 - Engineering Submission (5x9) |
| RM-SA-015 |  | Site Acess Bill 20 UP-COFFEE BAR | milestone | 0d | 2016-07-10 | 2016-07-10 | KD01 |  |  |  | 59d | 0d | start on or after 2016-07-10 | ATL522 - Engineering Submission (5x9) |
| RM-SA-008 |  | Site Acess Bill 9 UP-CHOCOLATE BOUTIQUE | milestone | 0d | 2016-07-17 | 2016-07-17 | KD01 |  |  |  | 34d | 0d | start on or after 2016-07-17 | ATL522 - Engineering Submission (5x9) |
| RM-SA-006 |  | Site Acess Bill 7 UP-RESIDENCE'S LIFT LOBBY | milestone | 0d | 2016-07-24 | 2016-07-24 | KD01 |  |  |  | 13d | 0d | start on or after 2016-07-24 | ATL522 - Engineering Submission (5x9) |
| RM-SA-010 |  | Site Acess Bill 11 UP-REST ROOMS | milestone | 0d | 2016-07-24 | 2016-07-24 | KD01 |  |  |  | 9d | 0d | start on or after 2016-07-24 | ATL522 - Engineering Submission (5x9) |
| RM-SA-007 |  | Site Acess Bill 8 UP-FRONT OFFICE | milestone | 0d | 2016-07-31 | 2016-07-31 | KD01 |  |  |  | 12d | 0d | start on or after 2016-07-31 | ATL522 - Engineering Submission (5x9) |
| RM-SA-009 |  | Site Acess Bill 10 UP-RETAIL | milestone | 0d | 2016-07-31 | 2016-07-31 | KD01 |  |  |  | 12d | 0d | start on or after 2016-07-31 | ATL522 - Engineering Submission (5x9) |
| RM-SA-001 |  | Site Acess Bill 2 UP-HOTEL LOBBY | milestone | 0d | 2016-08-07 | 2016-08-07 | KD01 |  |  |  | 3d | 0d | start on or after 2016-08-07 | ATL522 - Engineering Submission (5x9) |
| RM-SA-004 |  | Site Acess Bill 5 UP-SAFE DEPOSIT | milestone | 0d | 2016-08-07 | 2016-08-07 | KD01 |  |  |  | 1d | 0d | start on or after 2016-08-07 | ATL522 - Engineering Submission (5x9) |
| RM-SA-012 |  | Site Acess Bill 13 UP-RESIDENCES LOBBY | milestone | 0d | 2016-08-07 | 2016-08-07 | KD01 |  |  |  | 1d | 0d | start on or after 2016-08-07 | ATL522 - Engineering Submission (5x9) |
| RM-SA-017 |  | Site Acess Bill 29 SPA | milestone | 0d | 2016-08-07 | 2016-08-07 | KD01 |  |  |  | 12d | 0d | start on or after 2016-08-07 | ATL522 - Engineering Submission (5x9) |
| RM-SA-021 |  | Site Acess Bill 35 LIFT CAR - TOWER C | milestone | 0d | 2016-08-07 | 2016-08-07 | KD01 |  |  |  | 20d | 0d | start on or after 2016-08-07 | ATL522 - Engineering Submission (5x9) |
| RM-SA-002 |  | Site Acess Bill 3 UP-HOTEL RECEPTION | milestone | 0d | 2016-08-14 | 2016-08-14 | KD01 |  |  |  | 5d | 0d | start on or after 2016-08-14 | ATL522 - Engineering Submission (5x9) |
| RM-SA-016 |  | Site Acess Bill 28 LIFT CAR - TOWER A, B & D | milestone | 0d | 2016-08-14 | 2016-08-14 | KD01 |  |  |  | 5d | 0d | start on or after 2016-08-14 | ATL522 - Engineering Submission (5x9) |
| RM-SA-022 |  | Site Acess Bill 39 LG- LIFT LOBBY | milestone | 0d | 2016-08-14 | 2016-08-14 | KD01 |  |  |  | 9d | 0d | start on or after 2016-08-14 | ATL522 - Engineering Submission (5x9) |
| RM-SA-005 |  | Site Acess Bill 6 UP-HOTEL LIFT LOBBY | milestone | 0d | 2016-08-21 | 2016-08-21 | KD01 |  |  |  | 9d | 0d | start on or after 2016-08-21 | ATL522 - Engineering Submission (5x9) |
|  | 2 | **Wild Air Milestones** |  |  | 2016-09-11 | 2016-10-02 |  |  |  |  |  |  |  |  |
| RM-AC-015 |  | A/C on Bill 20 UP-COFFEE BAR | milestone | 0d | 2016-09-11 | 2016-09-11 | KD01, RM-SA-015 |  |  |  | 71.3d | 3.3d | start on or after 2016-09-11 | 7x24 |
| RM-AC-001 |  | A/C on Bill 2 UP-HOTEL LOBBY | milestone | 0d | 2016-10-02 | 2016-10-02 | KD01, RM-SA-001 |  |  |  | 85.3d | 52.3d | start on or after 2016-10-02 | 7x24 |
| RM-AC-002 |  | A/C on Bill 3 UP-HOTEL RECEPTION | milestone | 0d | 2016-10-02 | 2016-10-02 | KD01, RM-SA-002 |  |  |  | 80.3d | 73.3d | start on or after 2016-10-02 | 7x24 |
| RM-AC-003 |  | A/C on Bill 4 UP-VIP PROTOCOL | milestone | 0d | 2016-10-02 | 2016-10-02 | KD01, RM-SA-003 |  |  |  | 29.3d | 1.3d | start on or after 2016-10-02 | 7x24 |
| RM-AC-004 |  | A/C on Bill 5 UP-SAFE DEPOSIT | milestone | 0d | 2016-10-02 | 2016-10-02 | KD01, RM-SA-004 |  |  |  | 85.3d | 36.3d | start on or after 2016-10-02 | 7x24 |
| RM-AC-005 |  | A/C on Bill 6 UP-HOTEL LIFT LOBBY | milestone | 0d | 2016-10-02 | 2016-10-02 | KD01, RM-SA-005 FS+21d |  |  |  | 105.3d | 93.3d | start on or after 2016-10-02 | 7x24 |
| RM-AC-006 |  | A/C on Bill 7 UP-RESIDENCE'S LIFT LOBBY | milestone | 0d | 2016-10-02 | 2016-10-02 | KD01, RM-SA-006 |  |  |  | 72.3d | 30.3d | start on or after 2016-10-02 | 7x24 |
| RM-AC-007 |  | A/C on Bill 8 UP-FRONT OFFICE | milestone | 0d | 2016-10-02 | 2016-10-02 | KD01, RM-SA-007 FS+21d |  |  |  | 74.3d | 56.3d | start on or after 2016-10-02 | 7x24 |
| RM-AC-008 |  | A/C on Bill 9 UP-CHOCOLATE BOUTIQUE | milestone | 0d | 2016-10-02 | 2016-10-02 | KD01, RM-SA-008 FS+21d |  |  |  | 108.3d | 84.42d | start on or after 2016-10-02 | 7x24 |
| RM-AC-009 |  | A/C on Bill 10 UP-RETAIL | milestone | 0d | 2016-10-02 | 2016-10-02 | KD01, RM-SA-009 |  |  |  | 97.3d | 56.3d | start on or after 2016-10-02 | 7x24 |
| RM-AC-010 |  | A/C on Bill 11 UP-REST ROOMS | milestone | 0d | 2016-10-02 | 2016-10-02 | KD01, RM-SA-010 FS+21d |  |  |  | 64.3d | 51.3d | start on or after 2016-10-02 | 7x24 |
| RM-AC-011 |  | A/C on Bill 12 UP-PRAYER ROOMS | milestone | 0d | 2016-10-02 | 2016-10-02 | KD01, RM-SA-011 FS+21d |  |  |  | 63.3d | 49.3d | start on or after 2016-10-02 | 7x24 |
| RM-AC-012 |  | A/C on Bill 13 UP-RESIDENCES LOBBY | milestone | 0d | 2016-10-02 | 2016-10-02 | KD01, RM-SA-012 FS+21d |  |  |  | 83.3d | 81.3d | start on or after 2016-10-02 | 7x24 |
| RM-AC-016 |  | A/C on Bill 28 LIFT CAR - TOWER A, B & D | milestone | 0d | 2016-10-02 | 2016-10-02 | KD01, RM-SA-016 FS+21d |  |  |  | 99.3d |  | start on or after 2016-10-02 | 7x24 |
| RM-AC-017 |  | A/C on Bill 29 SPA | milestone | 0d | 2016-10-02 | 2016-10-02 | KD01, RM-SA-017 FS+21d |  |  |  | 78.3d | 67.3d | start on or after 2016-10-02 | 7x24 |
| RM-AC-020 |  | A/C on Bill 34 UP-SPEAK EASY BAR | milestone | 0d | 2016-10-02 | 2016-10-02 | KD01, RM-SA-020 FS+21d |  |  |  | 63.3d | 39.46d | start on or after 2016-10-02 | 7x24 |
| RM-AC-021 |  | A/C on Bill 35 LIFT CAR - TOWER C | milestone | 0d | 2016-10-02 | 2016-10-02 | KD01, RM-SA-021 FS+21d |  |  |  | 113.3d | 88.3d | start on or after 2016-10-02 | 7x24 |
| RM-AC-022 |  | A/C on Bill 39 LG- LIFT LOBBY | milestone | 0d | 2016-10-02 | 2016-10-02 | KD01, RM-SA-022 FS+21d |  |  |  | 98.3d | 88.3d | start on or after 2016-10-02 | 7x24 |

| ID | WBS | Activity | Type | Duration | Start | Finish | Predecessors | Total float | Calendar |
| --- | --- | --- | --- | --- | --- | --- | --- | --- | --- |
|  | 3 | **Control Milestones** |  |  | 2016-12-10 | 2017-02-15 |  |  |  |
|  | 2 | **Phases** |  |  | 2016-12-29 | 2017-02-15 |  |  |  |
| KD25 |  | Completion of Engineering Phase | milestone | 0d | 2016-12-29 | 2016-12-29 | B2-UPHL-SDS160, B2-UPHL-SDS170, B2-UPHL-SDS180, B2-UPHL-SDS190, B2-UPHL-SDS200, B2-UPHL-SDS210, B2-UPHL-SDS135, B2-UPHL-SDA170, B2-UPHL-SDA180, B2-UPHL-SDA190, B2-UPHL-SDA200, B2-UPHL-SDA210, B2-UPHL-SDA220, B2-UPHL-SDA230, B3-UPHR-SDS110, B3-UPHR-SDS130, B3-UPHR-SDS150, B3-UPHR-SDA110, B3-UPHR-SDA130, B3-UPHR-SDA150, B4-UPVP-SDS140, B4-UPVP-SDS150, B4-UPVP-SDS170, B4-UPVP-SDS180, B4-UPVP-SDS175, B4-UPVP-SDS190, B4-UPVP-SDA140, B4-UPVP-SDA170, B4-UPVP-SDA180, B4-UPVP-SDA190, B4-UPVP-SDA200, B4-UPVP-SDA210, B5-UPSD-SDS160, B5-UPSD-SDS170, B5-UPSD-SDS180, B5-UPSD-SDS190, B5-UPSD-SDS200, B5-UPSD-SDS210, B5-UPSD-SDS155, B5-UPSD-SDA170, B5-UPSD-SDA180, B5-UPSD-SDA190, B5-UPSD-SDA200, B5-UPSD-SDA210, B5-UPSD-SDA220, B5-UPSD-SDA230, B6-UPHLL-SDS110, B6-UPHLL-SDS130, B6-UPHLL-SDS150, B6-UPHLL-SDS135, B6-UPHLL-SDA110, B6-UPHLL-SDA130, B6-UPHLL-SDA160, B6-UPHLL-SDA170, B7-UPRLL-SDS110, B7-UPRLL-SDS130, B7-UPRLL-SDS150, B7-UPRLL-SDS135, B7-UPRLL-SDA110, B7-UPRLL-SDA130, B7-UPRLL-SDA160, B7-UPRLL-SDA170, B8-UPFO-SDS160, B8-UPFO-SDS170, B8-UPFO-SDS180, B8-UPFO-SDS190, B8-UPFO-SDS200, B8-UPFO-SDS210, B8-UPFO-SDS135, B8-UPFO-SDA170, B8-UPFO-SDA180, B8-UPFO-SDA190, B8-UPFO-SDA200, B8-UPFO-SDA210, B8-UPFO-SDA220, B8-UPFO-SDA230, B9-UPCB-SDS150, B9-UPCB-SDS160, B9-UPCB-SDS170, B9-UPCB-SDS180, B9-UPCB-SDS190, B9-UPCB-SDS135, B9-UPCB-SDA160, B9-UPCB-SDA170, B9-UPCB-SDA180, B9-UPCB-SDA190, B9-UPCB-SDA200, B9-UPCB-SDA210, B10-UPRT-SDS110, B10-UPRT-SDS130, B10-UPRT-SDS150, B10-UPRT-SDS135, B10-UPRT-SDA110, B10-UPRT-SDA130, B10-UPRT-SDA160, B10-UPRT-SDA170, B11-UPRER-SDS110, B11-UPRER-SDS160, B11-UPRER-SDS170, B11-UPRER-SDS180, B11-UPRER-SDS190, B11-UPRER-SDA110, B11-UPRER-SDA160, B11-UPRER-SDA170, B11-UPRER-SDA180, B11-UPRER-SDA190, B12-UPPR-SDS160, B12-UPPR-SDS170, B12-UPPR-SDS180, B12-UPPR-SDS190, B12-UPPR-SDS200, B12-UPPR-SDS210, B12-UPPR-SDA160, B12-UPPR-SDA170, B12-UPPR-SDA180, B12-UPPR-SDA190, B12-UPPR-SDA200, B12-UPPR-SDA210, B13-UPRL-SDS110, B13-UPRL-SDS150, B13-UPRL-SDS160, B13-UPRL-SDS170, B13-UPRL-SDS135, B13-UPRL-SDA110, B13-UPRL-SDA160, B13-UPRL-SDA170, B13-UPRL-SDA180, B13-UPRL-SDA190, B20-UPCB-SDS150, B20-UPCB-SDS160, B20-UPCB-SDS170, B20-UPCB-SDS180, B20-UPCB-SDA150, B20-UPCB-SDA160, B20-UPCB-SDA170, B20-UPCB-SDA180, B28-TsLC-SDS110, B28-TsLC-SDS150, B28-TsLC-SDS160, B28-TsLC-SDS170, B28-TsLC-SDS135, B28-TsLC-SDA110, B28-TsLC-SDA160, B28-TsLC-SDA170, B28-TsLC-SDA180, B28-TsLC-SDA190, B29-SPA-SDS160, B29-SPA-SDS170, B29-SPA-SDS180, B29-SPA-SDS190, B29-SPA-SDS200, B29-SPA-SDS210, B29-SPA-SDS135, B29-SPA-SDA170, B29-SPA-SDA180, B29-SPA-SDA190, B29-SPA-SDA200, B29-SPA-SDA210, B29-SPA-SDA220, B29-SPA-SDA230, B34-UPSEB-SDS160, B34-UPSEB-SDS170, B34-UPSEB-SDS180, B34-UPSEB-SDS190, B34-UPSEB-SDS200, B34-UPSEB-SDS210, B34-UPSEB-SDS135, B34-UPSEB-SDA170, B34-UPSEB-SDA180, B34-UPSEB-SDA190, B34-UPSEB-SDA200, B34-UPSEB-SDA210, B34-UPSEB-SDA220, B34-UPSEB-SDA230, B35-TCLC-SDS110, B35-TCLC-SDS150, B35-TCLC-SDS160, B35-TCLC-SDS170, B35-TCLC-SDA110, B35-TCLC-SDA150, B35-TCLC-SDA160, B35-TCLC-SDA170, B39-LGLL-SDS110, B39-LGLL-SDS150, B39-LGLL-SDS160, B39-LGLL-SDS170, B39-LGLL-SDS135, B39-LGLL-SDA110, B39-LGLL-SDA160, B39-LGLL-SDA170, B39-LGLL-SDA180, B39-LGLL-SDA190, B2-UPHL-MS110, B2-UPHL-MS150, B2-UPHL-MS160, B2-UPHL-MS200, B2-UPHL-MS210, B2-UPHL-MS220, B2-UPHL-MS230, B2-UPHL-MS270, B2-UPHL-MA110, B2-UPHL-MA150, B2-UPHL-MA160, B2-UPHL-MA200, B2-UPHL-MA210, B2-UPHL-MA220, B2-UPHL-MA230, B2-UPHL-MA270, B3-UPHR-MS150, B3-UPHR-MS160, B3-UPHR-MS190, B3-UPHR-MA150, B3-UPHR-MA160, B3-UPHR-MA190, B4-UPVP-MS110, B4-UPVP-MS140, B4-UPVP-MS170, B4-UPVP-MS190, B4-UPVP-MS270, B4-UPVP-MA110, B4-UPVP-MA140, B4-UPVP-MA170, B4-UPVP-MA190, B4-UPVP-MA270, B5-UPSD-MS110, B5-UPSD-MS190, B5-UPSD-MS270, B5-UPSD-MA110, B5-UPSD-MA190, B5-UPSD-MA270, B6-UPHLL-MS150, B6-UPHLL-MS160, B6-UPHLL-MS190, B6-UPHLL-MA150, B6-UPHLL-MA160, B6-UPHLL-MA190, B7-UPRLL-MS190, B7-UPRLL-MA190, B8-UPFO-MS110, B8-UPFO-MS190, B8-UPFO-MS210, B8-UPFO-MS270, B8-UPFO-MA110, B8-UPFO-MA190, B8-UPFO-MA210, B8-UPFO-MA270, B9-UPCB-MS110, B9-UPCB-MS150, B9-UPCB-MS160, B9-UPCB-MS190, B9-UPCB-MS200, B9-UPCB-MS210, B9-UPCB-MA110, B9-UPCB-MA150, B9-UPCB-MA160, B9-UPCB-MA190, B9-UPCB-MA200, B9-UPCB-MA210, B10-UPRT-MS140, B10-UPRT-MS150, B10-UPRT-MS180, B10-UPRT-MA140, B10-UPRT-MA150, B10-UPRT-MA180, B11-UPRR-MS110, B11-UPRR-MS150, B11-UPRR-MS170, B11-UPRR-MS190, B11-UPRR-MS200, B11-UPRR-MS280, B11-UPRR-MS290, B11-UPRR-MA110, B11-UPRR-MA150, B11-UPRR-MA170, B11-UPRR-MA190, B11-UPRR-MA200, B11-UPRR-MA280, B11-UPRR-MA290, B12-UPPR-MS110, B12-UPPR-MS140, B12-UPPR-MS170, B12-UPPR-MS190, B12-UPPR-MS210, B12-UPPR-MS270, B12-UPPR-MA110, B12-UPPR-MA140, B12-UPPR-MA170, B12-UPPR-MA190, B12-UPPR-MA210, B12-UPPR-MA270, B13-UPRL-MS110, B13-UPRL-MS150, B13-UPRL-MS190, B13-UPRL-MA110, B13-UPRL-MA150, B13-UPRL-MA190, B20-UPCB-MS110, B20-UPCB-MA110, B28-TsLC-MS110, B28-TsLC-MS150, B28-TsLC-MS160, B28-TsLC-MS190, B28-TsLC-MS230, B28-TsLC-MA110, B28-TsLC-MA150, B28-TsLC-MA160, B28-TsLC-MA190, B28-TsLC-MA230, B29-SPALC-MS110, B29-SPALC-MS150, B29-SPALC-MS200, B29-SPALC-MS220, B29-SPALC-MS230, B29-SPALC-MS240, B29-SPALC-MS250, B29-SPALC-MS270, B29-SPALC-MS280, B29-SPALC-MS290, B29-SPALC-MA110, B29-SPALC-MA150, B29-SPALC-MA200, B29-SPALC-MA220, B29-SPALC-MA230, B29-SPALC-MA240, B29-SPALC-MA250, B29-SPALC-MA270, B29-SPALC-MA280, B29-SPALC-MA290, B35-TCSR-MS150, B35-TCSR-MS190, B35-TCSR-MA150, B35-TCSR-MA190, B39-LGLL-MS110, B39-LGLL-MS150, B39-LGLL-MS160, B39-LGLL-MS190, B39-LGLL-MA110, B39-LGLL-MA150, B39-LGLL-MA160, B39-LGLL-MA190, B34-UPSEB-MS150, B34-UPSEB-MS200, B34-UPSEB-MS220, B34-UPSEB-MS230, B34-UPSEB-MS240, B34-UPSEB-MS250, B34-UPSEB-MS270, B34-UPSEB-MS280, B34-UPSEB-MS290, B34-UPSEB-MS300, B34-UPSEB-MS310, B34-UPSEB-MA150, B34-UPSEB-MA200, B34-UPSEB-MA220, B34-UPSEB-MA230, B34-UPSEB-MA240, B34-UPSEB-MA250, B34-UPSEB-MA270, B34-UPSEB-MA280, B34-UPSEB-MA290, B34-UPSEB-MA300, B34-UPSEB-MA310, RM-DF-009 | 48d | 7x24 |
| KD05 |  | Completion of Procurement Phase | milestone | 0d | 2017-01-17 | 2017-01-17 | B2-UPHL-PR100, B2-UPHL-PR120, B2-UPHL-PR130, B2-UPHL-PR140, B2-UPHL-PR170, B2-UPHL-PR180, B2-UPHL-PR190, B2-UPHL-PR260, B3-UPHR-PR130, B3-UPHR-PR140, B3-UPHR-PR180, B4-UPVP-PR100, B4-UPVP-PR110, B4-UPVP-PR130, B4-UPVP-PR160, B4-UPVP-PR180, B4-UPVP-PR260, B5-UPSD-PR100, B5-UPSD-PR180, B5-UPSD-PR260, B6-UPHLL-PR130, B6-UPHLL-PR140, B6-UPHLL-PR180, B7-UPRLL-PR180, B8-UPFO-PR100, B8-UPFO-PR180, B8-UPFO-PR200, B8-UPFO-PR260, B9-UPCB-PR100, B9-UPCB-PR120, B9-UPCB-PR130, B9-UPCB-PR140, B9-UPCB-PR170, B9-UPCB-PR180, B10-UPRT-PR120, B10-UPRT-PR130, B10-UPRT-PR170, B11-UPRR-PR100, B11-UPRR-PR130, B11-UPRR-PR140, B11-UPRR-PR160, B11-UPRR-PR180, B11-UPRR-PR260, B11-UPRR-PR270, B12-UPPR-PR100, B12-UPPR-PR160, B12-UPPR-PR180, B12-UPPR-PR200, B12-UPPR-PR260, B13-UPRL-PR100, B13-UPRL-PR140, B13-UPRL-PR180, B20-UPCB-PR100, B28-TsLC-PR100, B28-TsLC-PR130, B28-TsLC-PR140, B28-TsLC-PR180, B28-TsLC-PR220, B29-SPALC-PR100, B29-SPALC-PR120, B29-SPALC-PR130, B29-SPALC-PR140, B29-SPALC-PR160, B29-SPALC-PR170, B29-SPALC-PR180, B29-SPALC-PR190, B29-SPALC-PR210, B29-SPALC-PR260, B35-TCSR-PR140, B35-TCSR-PR180, B39-LGLL-PR100, B39-LGLL-PR130, B39-LGLL-PR140, B39-LGLL-PR180, B34-UPSEB-PR100, B34-UPSEB-PR110, B34-UPSEB-PR120, B34-UPSEB-PR130, B34-UPSEB-PR140, B34-UPSEB-PR160, B34-UPSEB-PR170, B34-UPSEB-PR180, B34-UPSEB-PR190, B34-UPSEB-PR210, B34-UPSEB-PR260 | 29.14d | 7x24 |
| KD35 |  | Completion of Construction Phase | milestone | 0d | 2017-02-15 | 2017-02-15 | TOC01, TOC02, TOC03, TOC04, TOC05, TOC06, TOC07, TOC08, TOC09, TOC10, TOC11, TOC12, TOC15, TOC16, TOC17, TOC19, TOC20, TOC21 | 0d | 7x24 |
|  | 1 | **Areas Substantial Completion** |  |  | 2016-12-10 | 2017-02-15 |  |  |  |
| TOC15 |  | Substantial Completion of Bill 20-UP-COFFEE BAR | milestone | 0d | 2016-12-10 | 2016-12-10 | B20-UPCB-1stP001, B20-UPCB-3rdP003, B20-UPCB-C001, B20-UPCB-C002, B20-UPCB-C003, B20-UPCB-C004, B5-UPSD-C221, B5-UPSD-C231 | 67d | 7x24 |
| TOC03 |  | Substantial Completion of Bill 4-UP-VIP PROTOCOL | milestone | 0d | 2017-01-22 | 2017-01-22 | B4-UPVP-1stP001, B4-UPVP-C001, B4-UPVP-2ndP002, B4-UPVP-C002, B4-UPVP-C003, B4-UPVP-C004, B4-UPVP-C005, B4-UPVP-C006, B4-UPVP-C007, B4-UPVP-C008, B4-UPVP-C009, B4-UPVP-C010, B4-UPVP-C011, B4-UPVP-C012, B4-UPVP-S013, B4-UPVP-C021, B4-UPVP-C031, B4-UPVP-C013, RM-SA-003 | 24.08d | 7x24 |
| TOC06 |  | Substantial Completion of Bill 7-UP-RESIDENCE'S LIFT LOBBY | milestone | 0d | 2017-01-30 | 2017-01-30 | B7-UPRLL-1stP001, B7-UPRLL-2ndP002, B7-UPRLL-3rdP003, B7-UPRLL-C001, B7-UPRLL-C002, B7-UPRLL-C003, B7-UPRLL-C004, B7-UPRLL-C005, B7-UPRLL-C006, B7-UPRLL-C007, B7-UPRLL-C008, B7-UPRLL-S009, B5-UPSD-C41, B5-UPSD-C51, B7-UPRLL-C012 | 16d | 7x24 |
| TOC07 |  | Substantial Completion of Bill 8-UP-FRONT OFFICE | milestone | 0d | 2017-01-30 | 2017-01-30 | B8-UPFO-1stP001, B8-UPFO-2ndP002, B8-UPFO-C001, B8-UPFO-C002, B8-UPFO-C003, B8-UPFO-C004, B8-UPFO-C005, B8-UPFO-C006, B8-UPFO-S007, B8-UPFO-C014, B5-UPSD-C61, B5-UPSD-C71, B8-UPFO-C013, RM-SA-007 | 16d | 7x24 |
| TOC09 |  | Substantial Completion of Bill 10-UP-RETAIL | milestone | 0d | 2017-02-02 | 2017-02-02 | B10-UPRT-1stP001, B10-UPRT-3rdP003, B10-UPRT-C001, B10-UPRT-C002, B10-UPRT-C003, B10-UPRT-C004, B10-UPRT-C005, B10-UPRT-C006, B10-UPRT-S007, B5-UPSD-C101, B5-UPSD-C111 | 13d | 7x24 |
| TOC11 |  | Substantial Completion of Bill 12-UP-PRAYER ROOMS | milestone | 0d | 2017-02-02 | 2017-02-02 | B12-UPPR-1stP001, B12-UPPR-2ndP002, B12-UPPR-3rdP003, B12-UPPR-C001, B12-UPPR-C002, B12-UPPR-C003, B12-UPPR-C004, B12-UPPR-C005, B12-UPPR-C006, B12-UPPR-C007, B12-UPPR-C008, B12-UPPR-C009, B12-UPPR-S010, B5-UPSD-C141, B5-UPSD-C151 | 13d | 7x24 |
| TOC05 |  | Substantial Completion of Bill 6-UP-HOTEL LIFT LOBBY | milestone | 0d | 2017-02-04 | 2017-02-04 | B6-UPHLL-1stP001, B6-UPHLL-2ndP002, B6-UPHLL-3rdP003, B6-UPHLL-C001, B6-UPHLL-C002, B6-UPHLL-C003, B6-UPHLL-C004, B6-UPHLL-C005, B6-UPHLL-S006, B5-UPSD-C21, B5-UPSD-C31 | 11d | 7x24 |
| TOC10 |  | Substantial Completion of Bill 11-UP-REST ROOMS | milestone | 0d | 2017-02-04 | 2017-02-04 | B11-UPRR-1stP001, B11-UPRR-2ndP002, B11-UPRR3rdP003, B11-UPRR-C001, B11-UPRR-C002, B11-UPRR-C003, B11-UPRR-C004, B11-UPRR-C005, B11-UPRR-C006, B11-UPRR-C007, B11-UPRR-C008, B11-UPRR-C009, B11-UPRR-C010, B11-UPRR-S011, B5-UPSD-C121, B5-UPSD-C131 | 11d | 7x24 |
| TOC17 |  | Substantial Completion of Bill 29-SPA | milestone | 0d | 2017-02-06 | 2017-02-06 | B29-SPALC-1stP001, B29-SPALC-2ndP002, B29-SPALC-3rdP003, B29-SPALC-C001, B29-SPALC-C002, B29-SPALC-C003, B29-SPALC-C004, B29-SPALC-C005, B29-SPALC-C006, B29-SPALC-C007, B29-SPALC-C008, B29-SPALC-C009, B29-SPALC-C010, B29-SPALC-C011, B29-SPALC-C012, B29-SPALC-C013, B29-SPALC-C014, B29-SPALC-C015, B29-SPALC-C017, B29-SPALC-S018, B5-UPSD-C261, B5-UPSD-C271 | 9d | 7x24 |
| TOC19 |  | Substantial Completion of Bill 34-UP-SPEAK EASY BAR | milestone | 0d | 2017-02-07 | 2017-02-07 | B34-UPSEB-1stP001, B34-UPSEB-2ndP002, B34-UPSEB-3rdP003, B34-UPSEB-C001, B34-UPSEB-C002, B34-UPSEB-C003, B34-UPSEB-C004, B34-UPSEB-C005, B34-UPSEB-C006, B34-UPSEB-C007, B34-UPSEB-C008, B34-UPSEB-C009, B34-UPSEB-C010, B34-UPSEB-C011, B34-UPSEB-C012, B34-UPSEB-C013, B34-UPSEB-C014, B34-UPSEB-C015, B34-UPSEB-C016, B34-UPSEB-C017, B34-UPSEB-S018, B5-UPSD-C301, B5-UPSD-C311 | 8.2d | 7x24 |
| TOC02 |  | Substantial Completion of Bill 3-UP-HOTEL RECEPTION | milestone | 0d | 2017-02-08 | 2017-02-08 | B3-UPHR-1stP001, B3-UPHR-C001, B3-UPHR-2ndP002, B3-UPHR-C002, B3-UPHR-3rdP003, B3-UPHR-C003, B3-UPHR-C004, B3-UPHR-C007, B3-UPHR-C008, B3-UPHR-C010, B3-UPHR-C011, B3-UPHR-S012, B3-UPHR-C021, B3-UPHR-C031 | 7d | 7x24 |
| TOC21 |  | Substantial Completion of Bill 39-LG- LIFT LOBBY | milestone | 0d | 2017-02-11 | 2017-02-11 | B39-LGLL-1stP001, B39-LGLL-2ndP002, B39-LGLL-3rdP003, B39-LGLL-C001, B39-LGLL-C002, B39-LGLL-C003, B39-LGLL-C004, B39-LGLL-C005, B39-LGLL-C006, B39-LGLL-C007, B39-LGLL-C008, B39-LGLL-S009, B5-UPSD-C341, B5-UPSD-C351 | 4d | 7x24 |
| TOC08 |  | Substantial Completion of Bill 9-UP-CHOCOLATE BOUTIQUE | milestone | 0d | 2017-02-12 | 2017-02-12 | B9-UPCB-1stP001, B9-UPCB-2ndP002, B9-UPCB-3rdP003, B9-UPCB-C001, B9-UPCB-C002, B9-UPCB-C003, B9-UPCB-C004, B9-UPCB-C005, B9-UPCB-C006, B9-UPCB-C007, B9-UPCB-C008, B9-UPCB-C009, B9-UPCB-C010, B9-UPCB-C011, B9-UPCB-C012, B9-UPCB-S13, B9-UPCB-C013, B9-UPCB-C014, B5-UPSD-C81, B5-UPSD-C91 | 3.24d | 7x24 |
| TOC01 |  | Substantial Completion of Bill 2 UP-HOTEL LOBBY | milestone | 0d | 2017-02-14 | 2017-02-14 | B2-UPHL-1stP001, B2-UPHL-C001, B2-UPHL-2ndP002, B2-UPHL-C002, B2-UPHL-C003, B2-UPHL-3rdP003, B2-UPHL-C004, B2-UPHL-C005, B2-UPHL-C006, B2-UPHL-C007, B2-UPHL-C008, B2-UPHL-C009, B2-UPHL-C010, B2-UPHL-C011, B2-UPHL-C012, B2-UPHL-S13, B2-UPHL-C021, B2-UPHL-C031, B2-UPHL-C014 | 1d | 7x24 |
| TOC04 |  | Substantial Completion of Bill 5-UP-SAFE DEPOSIT | milestone | 0d | 2017-02-14 | 2017-02-14 | B5-UPSD-1stP001, B5-UPSD-2ndP002, B5-UPSD-3rdP003, B5-UPSD-C001, B5-UPSD-C002, B5-UPSD-C003, B5-UPSD-C004, B5-UPSD-C005, B5-UPSD-C006, B5-UPSD-C007, B5-UPSD-C008, B5-UPSD-S009, B5-UPSD-C011, B5-UPSD-C021, B5-UPSD-C013 | 1d | 7x24 |
| TOC12 |  | Substantial Completion of Bill 13-UP-RESIDENCES LOBBY | milestone | 0d | 2017-02-14 | 2017-02-14 | B13-UPRL-1stP001, B13-UPRL-2ndP002, B13-UPRL-3rdP003, B13-UPRL-C001, B13-UPRL-C002, B13-UPRL-C003, B13-UPRL-C004, B13-UPRL-C005, B13-UPRL-C006, B13-UPRL-C007, B13-UPRL-C008, B13-UPRL-C009, B13-UPRL-S010, B5-UPSD-C161, B5-UPSD-C171 | 1d | 7x24 |
| TOC20 |  | Substantial Completion of Bill 35-LIFT CAR - TOWER C | milestone | 0d | 2017-02-14 | 2017-02-14 | B35-TCSR-1stP001, B35-TCSR-2ndP002, B35-TCSR-3rdP003, B35-TCSR-C001, B35-TCSR-C002, B35-TCSR-C003, B35-TCSR-C004, B35-TCSR-C005, B35-TCSR-C006, B35-TCSR-S007, B5-UPSD-C321, B5-UPSD-C331 | 1d | 7x24 |
| TOC16 |  | Substantial Completion of Bill 28-LIFT CAR - TOWER A, B & D | milestone | 0d | 2017-02-15 | 2017-02-15 | B28-TsLC-1stP001, B28-TsLC-2ndP002, B28-TsLC-3rdP003, B28-TsLC-C001, B28-TsLC-C002, B28-TsLC-C003, B28-TsLC-C004, B28-TsLC-C005, B28-TsLC-C006, B28-TsLC-C007, B28-TsLC-C008, B28-TsLC-C009, B28-TsLC-S010, B5-UPSD-C241, B5-UPSD-C251 | 0d | 7x24 |

| ID | WBS | Activity | Duration | Start | Finish | Predecessors | Complete | Remaining | Planned start | Planned finish | Total float | Free float | Calendar | Resources |
| --- | --- | --- | --- | --- | --- | --- | --- | --- | --- | --- | --- | --- | --- | --- |
|  | 3 | **Engineering Phase** |  | 2016-04-04 | 2016-12-29 |  |  |  |  |  |  |  |  |  |
|  | 1 | **Shop Drawing Process** |  | 2016-04-04 | 2016-12-29 |  |  |  |  |  |  |  |  |  |
|  | 1 | **Shop Drawing Process Bill 2 UP-HOTEL LOBBY** |  | 2016-05-11 | 2016-10-12 |  |  |  |  |  |  |  |  |  |
|  | 1 | **SD Preparation and Submission of Bill 2 UP-HOTEL LOBBY** |  | 2016-05-11 | 2016-09-20 |  |  |  |  |  |  |  |  |  |
| B2-UPHL-SDS210 |  | Preparation and Submission of Details Layout | 14d | 2016-05-11 A | 2016-07-10 | RM-DF-001, B2-UPHL-SDS180 SS | 90% | 1.4d | 2016-04-06 | 2016-04-25 | 67.6d | 0d | ATL522 - Engineering Submission (5x9) | Preparation and Submission Shop Drawing [14 h] |
| B2-UPHL-SDS160 |  | Preparation and Submission of RCP Layout | 21d | 2016-05-12 A | 2016-08-02 | RM-DF-001 | 10% | 18.9d | 2016-04-06 | 2016-05-04 | 5.1d | 0d | ATL522 - Engineering Submission (5x9) | Preparation and Submission Shop Drawing [14 h] |
| B2-UPHL-SDS170 |  | Preparation and Submission of Floor Layout | 14d | 2016-05-12 A | 2016-07-25 | RM-DF-001 | 10% | 12.6d | 2016-04-06 | 2016-04-25 | 3.4d | 0d | ATL522 - Engineering Submission (5x9) | Preparation and Submission Shop Drawing [14 h] |
| B2-UPHL-SDS180 |  | Preparation and Submission of Elevation Layout | 14d | 2016-05-12 A | 2016-07-25 | RM-DF-001 | 10% | 12.6d | 2016-04-06 | 2016-04-25 | 3.4d | 0d | ATL522 - Engineering Submission (5x9) | Preparation and Submission Shop Drawing [14 h] |
| B2-UPHL-SDS135 |  | Preparation and Submission of Furniture Layout | 14d | 2016-05-15 A | 2016-08-11 | B2-UPHL-SDS180, RM-DF-001 | 10% | 12.6d | 2016-04-26 | 2016-05-16 | 34.2d | 0d | ATL522 - Engineering Submission (5x9) | Preparation and Submission Shop Drawing [14 h] |
| B2-UPHL-SDS190 |  | Preparation and Submission of Joinery Layout | 14d | 2016-05-15 A | 2016-08-29 | B2-UPHL-SDS135, RM-DF-001 | 10% | 12.6d | 2016-05-17 | 2016-06-05 | 34.2d | 0d | ATL522 - Engineering Submission (5x9) | Preparation and Submission Shop Drawing [14 h] |
| B2-UPHL-SDS200 |  | Preparation and Submission of Doors Shop Drawing | 14d | 2016-06-02 A | 2016-09-20 | B2-UPHL-SDS190, RM-DF-001 | 10% | 12.6d | 2016-06-06 | 2016-06-23 | 37.6d | 0d | ATL522 - Engineering Submission (5x9) | Preparation and Submission Shop Drawing [14 h] |
|  | 2 | **SD Approval of Bill 2 UP-HOTEL LOBBY** |  | 2016-07-10 | 2016-10-12 |  |  |  |  |  |  |  |  |  |
| B2-UPHL-SDA220 |  | Review & Approval of Details Layout | 21d | 2016-07-10 | 2016-08-03 | B2-UPHL-SDS210 |  |  |  |  | 81.6d | 10.2d |  | Eng Clinet Approval [14 h] |
| B2-UPHL-SDA180 |  | Review & Approval of Floor Layout | 21d | 2016-07-25 | 2016-08-15 | B2-UPHL-SDS170 |  |  |  |  | 4.4d | 2.4d | ATL522 - Engineering Approval (7x9) | Eng Clinet Approval [14 h] |
| B2-UPHL-SDA190 |  | Review & Approval of Elevation Layout | 21d | 2016-07-25 | 2016-08-15 | B2-UPHL-SDS180 |  |  |  |  | 4.4d | 0d | ATL522 - Engineering Approval (7x9) | Eng Clinet Approval [14 h] |
| B2-UPHL-SDA170 |  | Review & Approval of RCP Layout | 21d | 2016-08-02 | 2016-08-23 | B2-UPHL-SDS160 |  |  |  |  | 7.1d | 0d | ATL522 - Engineering Approval (7x9) | Eng Clinet Approval [14 h] |
| B2-UPHL-SDA230 |  | Review & Approval of Furniture Layout | 21d | 2016-08-11 | 2016-09-01 | B2-UPHL-SDS135 |  |  |  |  | 67.8d | 18.6d | ATL522 - Engineering Approval (7x9) | Eng Clinet Approval [14 h] |
| B2-UPHL-SDA200 |  | Review & Approval of Joinery Layout | 21d | 2016-08-29 | 2016-09-22 | B2-UPHL-SDS190 |  |  |  |  | 49.2d | 0d | ATL522 - Engineering Approval (7x9) | Eng Clinet Approval [14 h] |
| B2-UPHL-SDA210 |  | Review & Approval of Doors Shop Drawing | 21d | 2016-09-20 | 2016-10-12 | B2-UPHL-SDS200 |  |  |  |  | 53.6d | 0d | ATL522 - Engineering Approval (7x9) | Eng Clinet Approval [14 h] |
|  | 2 | **Shop Drawing Process Bill 3-UP-HOTEL RECEPTION** |  | 2016-05-15 | 2016-07-25 |  |  |  |  |  |  |  |  |  |
|  | 1 | **SD Preparation and Submission of Bill 3-UP-HOTEL RECEPTION** |  | 2016-05-15 | 2016-05-31 |  |  |  |  |  |  |  |  |  |
| B3-UPHR-SDS110 |  | Preparation and Submission of RCP Layout | 21d | 2016-05-15 A | 2016-05-31 A | RM-DF-002 | 100% |  | 2016-04-06 | 2016-05-04 |  |  | ATL522 - Engineering Submission (5x9) | Preparation and Submission Shop Drawing [14 h] |
| B3-UPHR-SDS130 |  | Preparation and Submission of Elevation Layout | 21d | 2016-05-15 A | 2016-05-31 A | RM-DF-002, B3-UPHR-SDS110 | 100% |  | 2016-05-08 | 2016-06-05 |  |  | ATL522 - Engineering Submission (5x9) | Preparation and Submission Shop Drawing [14 h] |
| B3-UPHR-SDS150 |  | Preparation and Submission of Details Layout | 21d | 2016-05-15 A | 2016-05-31 A | RM-DF-002, B3-UPHR-SDS130 SS | 100% |  | 2016-05-08 | 2016-06-05 |  |  | ATL522 - Engineering Submission (5x9) | Preparation and Submission Shop Drawing [14 h] |

| ID | WBS | Activity | Duration | Start | Finish | Predecessors | Complete | Remaining | Planned start | Planned finish | Total float | Free float | Calendar | Resources |
| --- | --- | --- | --- | --- | --- | --- | --- | --- | --- | --- | --- | --- | --- | --- |
|  | 2 | **SD Approval of Bill 3-UP-HOTEL RECEPTION** |  | 2016-06-01 | 2016-07-25 |  |  |  |  |  |  |  |  |  |
| B3-UPHR-SDA110 |  | Review & Approval of RCP Layout | 21d | 2016-06-01 A | 2016-07-25 | B3-UPHR-SDS110 | 10% | 18.9d | 2016-05-06 | 2016-05-26 | 19.1d | 10.1d | ATL522 - Engineering Approval (7x9) | Eng Clinet Approval [14 h] |
| B3-UPHR-SDA130 |  | Review & Approval of Elevation Layout | 21d | 2016-06-01 A | 2016-07-25 | B3-UPHR-SDS130 | 10% | 18.9d | 2016-06-06 | 2016-06-26 | 59.1d | 3.1d | ATL522 - Engineering Approval (7x9) | Eng Clinet Approval [14 h] |
| B3-UPHR-SDA150 |  | Review & Approval of Details Layout | 21d | 2016-06-01 A | 2016-07-25 | B3-UPHR-SDS150 | 10% | 18.9d | 2016-06-06 | 2016-06-26 | 59.1d | 3.1d | ATL522 - Engineering Approval (7x9) | Eng Clinet Approval [14 h] |
|  | 3 | **Shop Drawing Process Bill 4-UP-VIP PROTOCOL** |  | 2016-05-01 | 2016-09-14 |  |  |  |  |  |  |  |  |  |
|  | 1 | **SD Preparation and Submission of Bill 4-UP-VIP PROTOCOL** |  | 2016-05-01 | 2016-08-25 |  |  |  |  |  |  |  |  |  |
| B4-UPVP-SDS150 |  | Preparation and Submission of Floor Layout | 21d | 2016-05-01 A | 2016-05-10 A | RM-DF-003 | 100% |  | 2016-04-06 | 2016-05-04 |  |  | ATL522 - Engineering Submission (5x9) | Preparation and Submission Shop Drawing [14 h] |
| B4-UPVP-SDS170 |  | Preparation and Submission of Elevation Layout | 21d | 2016-05-01 A | 2016-05-10 A | RM-DF-003 | 100% |  | 2016-04-06 | 2016-05-04 |  |  | ATL522 - Engineering Submission (5x9) | Preparation and Submission Shop Drawing [14 h] |
| B4-UPVP-SDS180 |  | Preparation and Submission of Joinery Layout | 21d | 2016-05-01 A | 2016-07-05 | B4-UPVP-SDS170, RM-DF-003 | 100% | 0d | 2016-05-08 | 2016-06-05 | 31.3d | 0d | ATL522 - Engineering Submission (5x9) | Preparation and Submission Shop Drawing [14 h] |
| B4-UPVP-SDS140 |  | Preparation and Submission of RCP Layout | 21d | 2016-05-15 A | 2016-07-11 | RM-DF-003 | 90% | 2.1d | 2016-04-06 | 2016-05-04 | 27.1d | 0d | ATL522 - Engineering Submission (5x9) | Preparation and Submission Shop Drawing [14 h] |
| B4-UPVP-SDS175 |  | Preparation and Submission of Details Layout | 28d | 2016-06-01 A | 2016-08-25 | B4-UPVP-SDS190, RM-DF-003 | 10% | 25.2d | 2016-07-05 | 2016-08-15 | 31.3d | 0d | ATL522 - Engineering Submission (5x9) | Preparation and Submission Shop Drawing [14 h] |
| B4-UPVP-SDS190 |  | Preparation and Submission of Furniture Layout | 21d | 2016-06-06 A | 2016-07-21 | B4-UPVP-SDS180, RM-DF-003 | 50% | 10.5d | 2016-06-06 | 2016-07-04 | 31.3d | 0d | ATL522 - Engineering Submission (5x9) | Preparation and Submission Shop Drawing [14 h] |
|  | 2 | **SD Approval of Bill 4-UP-VIP PROTOCOL** |  | 2016-05-11 | 2016-09-14 |  |  |  |  |  |  |  |  |  |
| B4-UPVP-SDA140 |  | Review & Approval of RCP Layout | 21d | 2016-05-11 A | 2016-07-27 | B4-UPVP-SDS140 | 20% | 16.8d | 2016-05-06 | 2016-05-26 | 37.1d | 8.1d | ATL522 - Engineering Approval (7x9) | Eng Clinet Approval [14 h] |
| B4-UPVP-SDA170 |  | Review & Approval of Floor Layout | 21d | 2016-05-11 A | 2016-07-23 | B4-UPVP-SDS150 | 20% | 16.8d | 2016-05-06 | 2016-05-26 | 56.2d | 0d | ATL522 - Engineering Approval (7x9) | Eng Clinet Approval [14 h] |
| B4-UPVP-SDA180 |  | Review & Approval of Elevation Layout | 21d | 2016-05-11 A | 2016-07-23 | B4-UPVP-SDS170 | 20% | 16.8d | 2016-05-06 | 2016-05-26 | 96.2d | 49.7d | ATL522 - Engineering Approval (7x9) | Eng Clinet Approval [14 h] |
| B4-UPVP-SDA190 |  | Review & Approval of Joinery Layout | 21d | 2016-05-12 A | 2016-07-23 | B4-UPVP-SDS180 | 20% | 16.8d | 2016-06-06 | 2016-06-26 | 89.2d | 39.2d | ATL522 - Engineering Approval (7x9) | Eng Clinet Approval [14 h] |
| B4-UPVP-SDA200 |  | Review & Approval of Details Layout | 21d | 2016-06-30 A | 2016-09-14 | B4-UPVP-SDS175 | 20% | 16.8d | 2016-08-05 | 2016-08-25 | 46.5d | 0d | ATL522 - Engineering Approval (7x9) | Eng Clinet Approval [14 h] |
| B4-UPVP-SDA210 |  | Review & Approval of Furniture Layout | 21d | 2016-07-21 | 2016-08-11 | B4-UPVP-SDS190 |  |  |  |  | 70.5d | 20.5d | ATL522 - Engineering Approval (7x9) | Eng Clinet Approval [14 h] |
|  | 4 | **Shop Drawing Process Bill 5-UP-SAFE DEPOSIT** |  | 2016-05-12 | 2016-08-30 |  |  |  |  |  |  |  |  |  |
|  | 1 | **SD Preparation and Submission of Bill 5-UP-SAFE DEPOSIT** |  | 2016-05-12 | 2016-08-11 |  |  |  |  |  |  |  |  |  |
| B5-UPSD-SDS155 |  | Preparation and Submission of Furniture Layout | 21d | 2016-05-12 A | 2016-05-19 A | RM-DF-004, B5-UPSD-SDS180 | 100% |  | 2016-06-15 | 2016-07-17 |  |  | ATL522 - Engineering Submission (5x9) | Preparation and Submission Shop Drawing [14 h] |
| B5-UPSD-SDS160 |  | Preparation and Submission of RCP Layout | 28d | 2016-05-12 A | 2016-07-11 | RM-DF-004 | 90% | 2.8d | 2016-04-06 | 2016-05-16 | 21.97d | 0d | ATL522 - Engineering Submission (5x9) | Preparation and Submission Shop Drawing [14 h] |
| B5-UPSD-SDS170 |  | Preparation and Submission of Floor Layout | 14d | 2016-05-12 A | 2016-05-19 A | B5-UPSD-SDS160, RM-DF-004 | 100% |  | 2016-05-08 | 2016-05-25 |  |  | ATL522 - Engineering Submission (5x9) | Preparation and Submission Shop Drawing [14 h] |
| B5-UPSD-SDS180 |  | Preparation and Submission of Elevation Layout | 14d | 2016-05-12 A | 2016-05-19 A | B5-UPSD-SDS170, RM-DF-004 | 100% |  | 2016-05-26 | 2016-06-14 |  |  | ATL522 - Engineering Submission (5x9) | Preparation and Submission Shop Drawing [14 h] |
| B5-UPSD-SDS190 |  | Preparation and Submission of Joinery Layout | 28d | 2016-05-12 A | 2016-08-11 | B5-UPSD-SDS180 SS, RM-DF-004 | 20% | 22.4d | 2016-05-26 | 2016-07-04 | 46.3d | 0d | ATL522 - Engineering Submission (5x9) | Preparation and Submission Shop Drawing [14 h] |
| B5-UPSD-SDS200 |  | Preparation and Submission of Doors Shop Drawing | 21d | 2016-05-12 A | 2016-05-19 A | B5-UPSD-SDS190, RM-DF-004 | 100% |  | 2016-06-26 | 2016-07-26 |  |  | ATL522 - Engineering Submission (5x9) | Preparation and Submission Shop Drawing [14 h] |
| B5-UPSD-SDS210 |  | Preparation and Submission of Details Layout | 28d | 2016-05-12 A | 2016-05-19 A | RM-DF-004, B5-UPSD-SDS180 SS | 100% |  | 2016-05-26 | 2016-07-04 |  |  | ATL522 - Engineering Submission (5x9) | Preparation and Submission Shop Drawing [14 h] |

| ID | WBS | Activity | Duration | Start | Finish | Predecessors | Complete | Remaining | Planned start | Planned finish | Total float | Free float | Calendar | Resources |
| --- | --- | --- | --- | --- | --- | --- | --- | --- | --- | --- | --- | --- | --- | --- |
|  | 2 | **SD Approval of Bill 5-UP-SAFE DEPOSIT** |  | 2016-05-22 | 2016-08-30 |  |  |  |  |  |  |  |  |  |
| B5-UPSD-SDA180 |  | Review & Approval of Floor Layout | 21d | 2016-05-22 A | 2016-07-30 | B5-UPSD-SDS170 | 10% | 18.9d | 2016-05-26 | 2016-06-15 | 194.3d | 146.3d | ATL522 - Engineering Approval (7x9) | Eng Clinet Approval [14 h] |
| B5-UPSD-SDA190 |  | Review & Approval of Elevation Layout | 21d | 2016-05-22 A | 2016-07-30 | B5-UPSD-SDS180 | 10% | 18.9d | 2016-06-15 | 2016-07-05 | 88.3d | 32.3d | ATL522 - Engineering Approval (7x9) | Eng Clinet Approval [14 h] |
| B5-UPSD-SDA210 |  | Review & Approval of Doors Shop Drawing | 21d | 2016-05-22 A | 2016-08-30 | B5-UPSD-SDS200 | 10% | 18.9d | 2016-07-27 | 2016-08-16 | 78.9d | 0d | ATL522 - Engineering Approval (7x9) | Eng Clinet Approval [14 h] |
| B5-UPSD-SDA220 |  | Review & Approval of Details Layout | 21d | 2016-05-22 A | 2016-07-30 | B5-UPSD-SDS210 | 10% | 18.9d | 2016-07-05 | 2016-07-27 | 132.63d | 76.63d | ATL522 - Engineering Approval (7x9) | Eng Clinet Approval [14 h] |
| B5-UPSD-SDA230 |  | Review & Approval of Furniture Layout | 21d | 2016-05-22 A | 2016-07-30 | B5-UPSD-SDS155 SS | 10% | 18.9d | 2016-06-15 | 2016-07-05 | 107.2d | 51.2d | ATL522 - Engineering Approval (7x9) | Eng Clinet Approval [14 h] |
| B5-UPSD-SDA170 |  | Review & Approval of RCP Layout | 21d | 2016-06-12 A | 2016-07-30 | B5-UPSD-SDS160 | 10% | 18.9d | 2016-05-06 | 2016-05-26 | 29.97d | 23.97d | ATL522 - Engineering Approval (7x9) | Eng Clinet Approval [14 h] |
| B5-UPSD-SDA200 |  | Review & Approval of Joinery Layout | 21d | 2016-06-24 A | 2016-08-21 | B5-UPSD-SDS190 | 50% | 10.5d | 2016-06-24 | 2016-07-16 | 66.3d | 10.3d | ATL522 - Engineering Approval (7x9) | Eng Clinet Approval [14 h] |
|  | 5 | **Shop Drawing Process Bill 6-UP-HOTEL LIFT LOBBY** |  | 2016-05-15 | 2016-08-15 |  |  |  |  |  |  |  |  |  |
|  | 1 | **SD Preparation and Submission of Bill 6-UP-HOTEL LIFT LOBBY** |  | 2016-05-15 | 2016-07-27 |  |  |  |  |  |  |  |  |  |
| B6-UPHLL-SDS110 |  | Preparation and Submission of RCP Layout | 21d | 2016-05-15 A | 2016-07-21 | RM-DF-005, RM-DF-005 SS | 50% | 10.5d | 2016-04-06 | 2016-05-04 | 17.6d | 0d | ATL522 - Engineering Submission (5x9) | Preparation and Submission Shop Drawing [14 h] |
| B6-UPHLL-SDS130 |  | Preparation and Submission of Elevation Layout | 21d | 2016-05-15 A | 2016-07-25 | B6-UPHLL-SDS110, RM-DF-005 | 90% | 2.1d | 2016-05-08 | 2016-06-05 | 36.5d | 0d | ATL522 - Engineering Submission (5x9) | Preparation and Submission Shop Drawing [14 h] |
| B6-UPHLL-SDS135 |  | Preparation and Submission of Furniture Layout | 21d | 2016-05-15 A | 2016-07-27 | B6-UPHLL-SDS130, RM-DF-005 | 90% | 2.1d | 2016-06-06 | 2016-07-04 | 59.4d | 0d | ATL522 - Engineering Submission (5x9) | Preparation and Submission Shop Drawing [14 h] |
| B6-UPHLL-SDS150 |  | Preparation and Submission of Details Layout | 21d | 2016-06-02 A | 2016-07-27 | RM-DF-005, B6-UPHLL-SDS130 | 90% | 2.1d | 2016-06-06 | 2016-07-04 | 62.4d | 0d | ATL522 - Engineering Submission (5x9) | Preparation and Submission Shop Drawing [14 h] |
|  | 2 | **SD Approval of Bill 6-UP-HOTEL LIFT LOBBY** |  | 2016-05-16 | 2016-08-15 |  |  |  |  |  |  |  |  |  |
| B6-UPHLL-SDA110 |  | Review & Approval of RCP Layout | 21d | 2016-05-16 A | 2016-08-09 | B6-UPHLL-SDS110 | 10% | 18.9d | 2016-05-06 | 2016-05-26 | 25.6d | 0d | ATL522 - Engineering Approval (7x9) | Eng Clinet Approval [14 h] |
| B6-UPHLL-SDA130 |  | Review & Approval of Elevation Layout | 21d | 2016-06-06 A | 2016-08-13 | B6-UPHLL-SDS130 | 10% | 18.9d | 2016-06-06 | 2016-06-26 | 52.5d | 0d | ATL522 - Engineering Approval (7x9) | Eng Clinet Approval [14 h] |
| B6-UPHLL-SDA160 |  | Review & Approval of Details Layout | 21d | 2016-07-03 A | 2016-08-15 | B6-UPHLL-SDS150 | 10% | 18.9d | 2016-07-05 | 2016-07-27 | 90.4d | 0d | ATL522 - Engineering Approval (7x9) | Eng Clinet Approval [14 h] |
| B6-UPHLL-SDA170 |  | Review & Approval of Furniture Layout | 21d | 2016-07-03 A | 2016-08-15 | B6-UPHLL-SDS135 | 10% | 18.9d | 2016-07-05 | 2016-07-27 | 85.4d | 32.9d | ATL522 - Engineering Approval (7x9) | Eng Clinet Approval [14 h] |
|  | 6 | **Shop Drawing Process Bill 7-UP-RESIDENCE'S LIFT LOBBY** |  | 2016-05-15 | 2016-09-03 |  |  |  |  |  |  |  |  |  |
|  | 1 | **SD Preparation and Submission of Bill 7-UP-RESIDENCE'S LIFT LOBBY** |  | 2016-05-15 | 2016-08-15 |  |  |  |  |  |  |  |  |  |
| B7-UPRLL-SDS110 |  | Preparation and Submission of RCP Layout | 14d | 2016-05-15 A | 2016-07-17 | RM-DF-006, RM-DF-006 SS | 50% | 7d | 2016-04-06 | 2016-04-25 | 17.1d | 0d | ATL522 - Engineering Submission (5x9) | Preparation and Submission Shop Drawing [14 h] |
| B7-UPRLL-SDS130 |  | Preparation and Submission of Elevation Layout | 14d | 2016-05-15 A | 2016-07-26 | RM-DF-006, B7-UPRLL-SDS110, RM-DF-006 SS | 50% | 7d | 2016-04-26 | 2016-05-16 | 49.1d | 0d | ATL522 - Engineering Submission (5x9) | Preparation and Submission Shop Drawing [14 h] |
| B7-UPRLL-SDS135 |  | Preparation and Submission of Furniture Layout | 14d | 2016-05-15 A | 2016-08-04 | RM-DF-006, B7-UPRLL-SDS130, RM-DF-006 SS | 50% | 7d | 2016-05-17 | 2016-06-05 | 49.1d | 0d | ATL522 - Engineering Submission (5x9) | Preparation and Submission Shop Drawing [14 h] |
| B7-UPRLL-SDS150 |  | Preparation and Submission of Details Layout | 14d | 2016-06-06 A | 2016-08-15 | RM-DF-006, B7-UPRLL-SDS135, RM-DF-006 SS | 50% | 7d | 2016-06-06 | 2016-06-23 | 49.1d | 0d | ATL522 - Engineering Submission (5x9) | Preparation and Submission Shop Drawing [14 h] |

| ID | WBS | Activity | Duration | Start | Finish | Predecessors | Complete | Remaining | Planned start | Planned finish | Total float | Free float | Calendar | Resources |
| --- | --- | --- | --- | --- | --- | --- | --- | --- | --- | --- | --- | --- | --- | --- |
|  | 2 | **SD Approval of Bill 7-UP-RESIDENCE'S LIFT LOBBY** |  | 2016-05-16 | 2016-09-03 |  |  |  |  |  |  |  |  |  |
| B7-UPRLL-SDA110 |  | Review & Approval of RCP Layout | 21d | 2016-05-16 A | 2016-08-05 | B7-UPRLL-SDS110 | 10% | 18.9d | 2016-04-26 | 2016-05-17 | 23.1d | 0d | ATL522 - Engineering Approval (7x9) | Eng Clinet Approval [14 h] |
| B7-UPRLL-SDA130 |  | Review & Approval of Elevation Layout | 21d | 2016-05-17 A | 2016-08-14 | B7-UPRLL-SDS130 | 10% | 18.9d | 2016-05-17 | 2016-06-06 | 114.1d | 74.1d | ATL522 - Engineering Approval (7x9) | Eng Clinet Approval [14 h] |
| B7-UPRLL-SDA170 |  | Review & Approval of Furniture Layout | 21d | 2016-06-06 A | 2016-08-23 | B7-UPRLL-SDS135 | 10% | 18.9d | 2016-06-06 | 2016-06-26 | 75.1d | 52d | ATL522 - Engineering Approval (7x9) | Eng Clinet Approval [14 h] |
| B7-UPRLL-SDA160 |  | Review & Approval of Details Layout | 21d | 2016-06-24 A | 2016-09-03 | B7-UPRLL-SDS150 | 10% | 18.9d | 2016-06-24 | 2016-07-16 | 71.1d | 54.1d | ATL522 - Engineering Approval (7x9) | Eng Clinet Approval [14 h] |
|  | 7 | **Shop Drawing Process Bill 8-UP-FRONT OFFICE** |  | 2016-05-12 | 2016-08-23 |  |  |  |  |  |  |  |  |  |
|  | 1 | **SD Preparation and Submission of Bill 8-UP-FRONT OFFICE** |  | 2016-05-12 | 2016-08-04 |  |  |  |  |  |  |  |  |  |
| B8-UPFO-SDS135 |  | Preparation and Submission of Furniture Layout | 7d | 2016-05-12 A | 2016-05-19 A | B8-UPFO-SDS180, RM-DF-007 | 100% |  | 2016-05-17 | 2016-05-25 |  |  | ATL522 - Engineering Submission (5x9) | Preparation and Submission Shop Drawing [14 h] |
| B8-UPFO-SDS170 |  | Preparation and Submission of Floor Layout | 7d | 2016-05-12 A | 2016-05-19 A | B8-UPFO-SDS160, RM-DF-007 | 100% |  | 2016-04-26 | 2016-05-04 |  |  | ATL522 - Engineering Submission (5x9) | Preparation and Submission Shop Drawing [14 h] |
| B8-UPFO-SDS180 |  | Preparation and Submission of Elevation Layout | 7d | 2016-05-12 A | 2016-05-19 A | B8-UPFO-SDS170, RM-DF-007 | 100% |  | 2016-05-08 | 2016-05-16 |  |  | ATL522 - Engineering Submission (5x9) | Preparation and Submission Shop Drawing [14 h] |
| B8-UPFO-SDS160 |  | Preparation and Submission of RCP Layout | 14d | 2016-05-15 A | 2016-07-10 | RM-DF-007, RM-DF-007 SS | 90% | 1.4d | 2016-04-06 | 2016-04-25 | 19.6d | 0d | ATL522 - Engineering Submission (5x9) | Preparation and Submission Shop Drawing [14 h] |
| B8-UPFO-SDS190 |  | Preparation and Submission of Joinery Layout | 14d | 2016-05-15 A | 2016-07-11 | B8-UPFO-SDS135, RM-DF-007 | 90% | 1.4d | 2016-05-26 | 2016-06-14 | 45.7d | 0d | ATL522 - Engineering Submission (5x9) | Preparation and Submission Shop Drawing [14 h] |
| B8-UPFO-SDS200 |  | Preparation and Submission of Doors Shop Drawing | 14d | 2016-06-15 A | 2016-07-28 | B8-UPFO-SDS190, RM-DF-007 | 10% | 12.6d | 2016-06-15 | 2016-07-04 | 45.7d | 0d | ATL522 - Engineering Submission (5x9) | Preparation and Submission Shop Drawing [14 h] |
| B8-UPFO-SDS210 |  | Preparation and Submission of Details Layout | 21d | 2016-06-15 A | 2016-08-04 | RM-DF-007, B8-UPFO-SDS180 | 10% | 18.9d | 2016-05-17 | 2016-06-14 | 40.8d | 0d | ATL522 - Engineering Submission (5x9) | Preparation and Submission Shop Drawing [14 h] |
|  | 2 | **SD Approval of Bill 8-UP-FRONT OFFICE** |  | 2016-05-22 | 2016-08-23 |  |  |  |  |  |  |  |  |  |
| B8-UPFO-SDA180 |  | Review & Approval of Floor Layout | 21d | 2016-05-22 A | 2016-07-27 | B8-UPFO-SDS170 | 20% | 16.8d | 2016-05-06 | 2016-05-26 | 115.8d | 35.8d | ATL522 - Engineering Approval (7x9) | Eng Clinet Approval [14 h] |
| B8-UPFO-SDA190 |  | Review & Approval of Elevation Layout | 21d | 2016-05-22 A | 2016-07-20 | B8-UPFO-SDS180 | 50% | 10.5d | 2016-05-17 | 2016-06-06 | 100.1d | 42.1d | ATL522 - Engineering Approval (7x9) | Eng Clinet Approval [14 h] |
| B8-UPFO-SDA230 |  | Review & Approval of Furniture Layout | 21d | 2016-05-22 A | 2016-07-29 | B8-UPFO-SDS135 | 10% | 18.9d | 2016-05-26 | 2016-06-15 | 91.7d | 33.7d | ATL522 - Engineering Approval (7x9) | Eng Clinet Approval [14 h] |
| B8-UPFO-SDA170 |  | Review & Approval of RCP Layout | 21d | 2016-06-12 A | 2016-07-27 | B8-UPFO-SDS160 | 20% | 16.8d | 2016-04-26 | 2016-05-17 | 26.8d | 8.8d | ATL522 - Engineering Approval (7x9) | Eng Clinet Approval [14 h] |
| B8-UPFO-SDA200 |  | Review & Approval of Joinery Layout | 21d | 2016-06-12 A | 2016-07-30 | B8-UPFO-SDS190 | 10% | 18.9d | 2016-06-15 | 2016-07-05 | 90.3d | 32.3d | ATL522 - Engineering Approval (7x9) | Eng Clinet Approval [14 h] |
| B8-UPFO-SDA210 |  | Review & Approval of Doors Shop Drawing | 21d | 2016-07-03 A | 2016-08-16 | B8-UPFO-SDS200 | 10% | 18.9d | 2016-07-05 | 2016-07-27 | 65.7d | 6.9d | ATL522 - Engineering Approval (7x9) | Eng Clinet Approval [14 h] |
| B8-UPFO-SDA220 |  | Review & Approval of Details Layout | 21d | 2016-07-03 A | 2016-08-23 | B8-UPFO-SDS210 | 10% | 18.9d | 2016-06-15 | 2016-07-05 | 58.8d | 0d | ATL522 - Engineering Approval (7x9) | Eng Clinet Approval [14 h] |
|  | 8 | **Shop Drawing Process Bill 9-UP-CHOCOLATE BOUTIQUE** |  | 2016-07-03 | 2016-10-30 |  |  |  |  |  |  |  |  |  |
|  | 1 | **SD Preparation and Submission of Bill 9-UP-CHOCOLATE BOUTIQUE** |  | 2016-07-03 | 2016-10-09 |  |  |  |  |  |  |  |  |  |
| B9-UPCB-SDS135 |  | Preparation and Submission of Furniture Layout | 10d | 2016-07-03 A | 2016-08-23 | B9-UPCB-SDS170, RM-DF-008 | 10% | 9d | 2016-07-03 | 2016-07-18 | 44.7d | 0d | ATL522 - Engineering Submission (5x9) | Preparation and Submission Shop Drawing [14 h] |
| B9-UPCB-SDS150 |  | Preparation and Submission of RCP Layout | 9d | 2016-07-03 A | 2016-07-19 | RM-DF-008 | 10% | 8.1d | 2016-04-06 | 2016-04-18 | 1.7d | 0d | ATL522 - Engineering Submission (5x9) | Preparation and Submission Shop Drawing [14 h] |
| B9-UPCB-SDS160 |  | Preparation and Submission of Floor Layout | 9d | 2016-07-03 A | 2016-07-31 | B9-UPCB-SDS150, RM-DF-008 | 10% | 8.1d | 2016-07-03 | 2016-07-17 | 1.7d | 0d | ATL522 - Engineering Submission (5x9) | Preparation and Submission Shop Drawing [14 h] |
| B9-UPCB-SDS170 |  | Preparation and Submission of Elevation Layout | 9d | 2016-07-03 A | 2016-08-10 | B9-UPCB-SDS160, RM-DF-008 | 10% | 8.1d | 2016-07-03 | 2016-07-17 | 1.7d | 0d | ATL522 - Engineering Submission (5x9) | Preparation and Submission Shop Drawing [14 h] |
| B9-UPCB-SDS180 |  | Preparation and Submission of Joinery Layout | 21d | 2016-07-03 A | 2016-09-06 | RM-DF-008, B9-UPCB-SDS170 | 10% | 18.9d | 2016-07-03 | 2016-08-02 | 34.8d | 0d | ATL522 - Engineering Submission (5x9) | Preparation and Submission Shop Drawing [14 h] |
| B9-UPCB-SDS190 |  | Preparation and Submission of Details Layout | 21d | 2016-07-03 A | 2016-10-09 | B9-UPCB-SDS180, RM-DF-008 | 10% | 18.9d | 2016-07-03 | 2016-08-02 | 43.9d | 0d | ATL522 - Engineering Submission (5x9) | Preparation and Submission Shop Drawing [14 h] |

| ID | WBS | Activity | Duration | Start | Finish | Predecessors | Complete | Remaining | Planned start | Planned finish | Total float | Free float | Calendar | Resources |
| --- | --- | --- | --- | --- | --- | --- | --- | --- | --- | --- | --- | --- | --- | --- |
|  | 2 | **SD Approval of Bill 9-UP-CHOCOLATE BOUTIQUE** |  | 2016-07-19 | 2016-10-30 |  |  |  |  |  |  |  |  |  |
| B9-UPCB-SDA160 |  | Review & Approval of RCP Layout | 21d | 2016-07-19 | 2016-08-09 | B9-UPCB-SDS150 |  |  |  |  | 50.9d | 0d | ATL522 - Engineering Approval (7x9) | Eng Clinet Approval [14 h] |
| B9-UPCB-SDA170 |  | Review & Approval of Floor Layout | 21d | 2016-07-31 | 2016-08-21 | B9-UPCB-SDS160 |  |  |  |  | 51.8d | 0d | ATL522 - Engineering Approval (7x9) | Eng Clinet Approval [14 h] |
| B9-UPCB-SDA180 |  | Review & Approval of Elevation Layout | 21d | 2016-08-10 | 2016-08-31 | B9-UPCB-SDS170 |  |  |  |  | 3.7d | 0d | ATL522 - Engineering Approval (7x9) | Eng Clinet Approval [14 h] |
| B9-UPCB-SDA210 |  | Review & Approval of Furniture Layout | 21d | 2016-08-23 | 2016-09-16 | B9-UPCB-SDS135 |  |  |  |  | 64.7d | 13.9d | ATL522 - Engineering Approval (7x9) | Eng Clinet Approval [14 h] |
| B9-UPCB-SDA190 |  | Review & Approval of Joinery Layout | 21d | 2016-09-06 | 2016-09-30 | B9-UPCB-SDS180 |  |  |  |  | 50.8d | 0d | ATL522 - Engineering Approval (7x9) | Eng Clinet Approval [14 h] |
| B9-UPCB-SDA200 |  | Review & Approval of Details Layout | 21d | 2016-10-09 | 2016-10-30 | B9-UPCB-SDS190 |  |  |  |  | 59.9d | 0d | ATL522 - Engineering Approval (7x9) | Eng Clinet Approval [14 h] |
|  | 9 | **Shop Drawing Process Bill 10-UP-RETAIL** |  | 2016-05-15 | 2016-08-17 |  |  |  |  |  |  |  |  |  |
|  | 1 | **SD Preparation and Submission of Bill 10-UP-RETAIL** |  | 2016-05-15 | 2016-07-31 |  |  |  |  |  |  |  |  |  |
| B10-UPRT-SDS110 |  | Preparation and Submission of RCP Layout | 21d | 2016-05-15 A | 2016-07-17 | RM-DF-009, RM-DF-009 SS | 70% | 6.3d | 2016-04-06 | 2016-05-04 | 56.3d | 0d | ATL522 - Engineering Submission (5x9) | Preparation and Submission Shop Drawing [14 h] |
| B10-UPRT-SDS130 |  | Preparation and Submission of Elevation Layout | 21d | 2016-05-15 A | 2016-07-27 | RM-DF-009, B10-UPRT-SDS110 | 60% | 8.4d | 2016-06-06 | 2016-07-04 | 56.3d | 0d | ATL522 - Engineering Submission (5x9) | Preparation and Submission Shop Drawing [14 h] |
| B10-UPRT-SDS135 |  | Preparation and Submission of Furniture Layout | 21d | 2016-05-15 A | 2016-07-31 | B10-UPRT-SDS130, RM-DF-009 | 90% | 2.1d | 2016-07-05 | 2016-08-04 | 113.2d | 0d | ATL522 - Engineering Submission (5x9) | Preparation and Submission Shop Drawing [14 h] |
| B10-UPRT-SDS150 |  | Preparation and Submission of Details Layout | 21d | 2016-06-19 A | 2016-07-03 A | RM-DF-009, B10-UPRT-SDS130 SS, B10-UPRT-SDS110 SS, B10-UPRT-SDS110 | 100% |  | 2016-06-06 | 2016-07-04 |  |  | ATL522 - Engineering Submission (5x9) | Preparation and Submission Shop Drawing [14 h] |
|  | 2 | **SD Approval of Bill 10-UP-RETAIL** |  | 2016-06-12 | 2016-08-17 |  |  |  |  |  |  |  |  |  |
| B10-UPRT-SDA130 |  | Review & Approval of Elevation Layout | 21d | 2016-06-12 A | 2016-08-15 | B10-UPRT-SDS130 | 10% | 18.9d | 2016-07-05 | 2016-07-27 | 80.3d | 0d | ATL522 - Engineering Approval (7x9) | Eng Clinet Approval [14 h] |
| B10-UPRT-SDA170 |  | Review & Approval of Furniture Layout | 21d | 2016-06-12 A | 2016-08-17 | B10-UPRT-SDS135 | 20% | 16.8d | 2016-08-05 | 2016-08-25 | 160.4d | 128.4d | ATL522 - Engineering Approval (7x9) | Eng Clinet Approval [14 h] |
| B10-UPRT-SDA160 |  | Review & Approval of Details Layout | 21d | 2016-07-03 A | 2016-07-03 A | B10-UPRT-SDS150 | 100% |  | 2016-07-05 | 2016-07-27 |  |  | ATL522 - Engineering Approval (7x9) | Eng Clinet Approval [14 h] |
| B10-UPRT-SDA110 |  | Review & Approval of RCP Layout | 21d | 2016-07-17 | 2016-08-07 | B10-UPRT-SDS110 |  |  |  |  | 90.7d | 8.3d | ATL522 - Engineering Approval (7x9) | Eng Clinet Approval [14 h] |
|  | 10 | **Shop Drawing Process Bill 11-UP-REST ROOMS** |  | 2016-05-12 | 2016-07-31 |  |  |  |  |  |  |  |  |  |
|  | 1 | **SD Preparation and Submission of Bill 11-UP-REST ROOMS** |  | 2016-05-12 | 2016-07-14 |  |  |  |  |  |  |  |  |  |
| B11-UPRER-SDS110 |  | Preparation and Submission of RCP Layout | 21d | 2016-05-12 A | 2016-07-11 | RM-DF-010, RM-DF-010 SS | 90% | 2.1d | 2016-04-06 | 2016-05-04 | 18.1d | 0d | ATL522 - Engineering Submission (5x9) | Preparation and Submission Shop Drawing [14 h] |
| B11-UPRER-SDS160 |  | Preparation and Submission of Elevation Layout | 14d | 2016-05-15 A | 2016-07-12 | RM-DF-010, B11-UPRER-SDS110 | 90% | 1.4d | 2016-05-08 | 2016-05-25 | 42.4d | 0d | ATL522 - Engineering Submission (5x9) | Preparation and Submission Shop Drawing [14 h] |
| B11-UPRER-SDS170 |  | Preparation and Submission of Joinery Layout | 21d | 2016-05-15 A | 2016-07-14 | RM-DF-010, B11-UPRER-SDS160 | 90% | 2.1d | 2016-05-26 | 2016-06-23 | 42.4d | 0d | ATL522 - Engineering Submission (5x9) | Preparation and Submission Shop Drawing [14 h] |
| B11-UPRER-SDS180 |  | Preparation and Submission of Doors Shop Drawing | 21d | 2016-05-15 A | 2016-05-25 A | RM-DF-010, B11-UPRER-SDS170 | 100% |  | 2016-06-26 | 2016-07-26 |  |  | ATL522 - Engineering Submission (5x9) | Preparation and Submission Shop Drawing [14 h] |
| B11-UPRER-SDS190 |  | Preparation and Submission of Details Layout | 21d | 2016-05-15 A | 2016-05-25 A | RM-DF-010, B11-UPRER-SDS160 | 100% |  | 2016-05-26 | 2016-06-23 |  |  | ATL522 - Engineering Submission (5x9) | Preparation and Submission Shop Drawing [14 h] |

| ID | WBS | Activity | Duration | Start | Finish | Predecessors | Complete | Remaining | Planned start | Planned finish | Total float | Free float | Calendar | Resources |
| --- | --- | --- | --- | --- | --- | --- | --- | --- | --- | --- | --- | --- | --- | --- |
|  | 2 | **SD Approval of Bill 11-UP-REST ROOMS** |  | 2016-05-26 | 2016-07-31 |  |  |  |  |  |  |  |  |  |
| B11-UPRER-SDA110 |  | Review & Approval of RCP Layout | 21d | 2016-05-26 A | 2016-07-27 | B11-UPRER-SDS110 | 20% | 16.8d | 2016-05-06 | 2016-05-26 | 24.1d | 8.1d | ATL522 - Engineering Approval (7x9) | Eng Clinet Approval [14 h] |
| B11-UPRER-SDA160 |  | Review & Approval of Elevation Layout | 21d | 2016-05-26 A | 2016-07-29 | B11-UPRER-SDS160 | 20% | 16.8d | 2016-05-26 | 2016-06-15 | 71.7d | 0d | ATL522 - Engineering Approval (7x9) | Eng Clinet Approval [14 h] |
| B11-UPRER-SDA170 |  | Review & Approval of Joinery Layout | 21d | 2016-05-26 A | 2016-07-31 | B11-UPRER-SDS170 | 20% | 16.8d | 2016-06-24 | 2016-07-16 | 60.6d | 31.6d | ATL522 - Engineering Approval (7x9) | Eng Clinet Approval [14 h] |
| B11-UPRER-SDA180 |  | Review & Approval of Doors Shop Drawing | 21d | 2016-05-26 A | 2016-07-31 | B11-UPRER-SDS180 | 20% | 16.8d | 2016-07-27 | 2016-08-16 | 128.6d | 15.5d | ATL522 - Engineering Approval (7x9) | Eng Clinet Approval [14 h] |
| B11-UPRER-SDA190 |  | Review & Approval of Details Layout | 21d | 2016-05-26 A | 2016-07-29 | B11-UPRER-SDS190 | 20% | 16.8d | 2016-06-24 | 2016-07-16 | 62.7d | 0d | ATL522 - Engineering Approval (7x9) | Eng Clinet Approval [14 h] |
|  | 11 | **Shop Drawing Process Bill 12-UP-PRAYER ROOMS** |  | 2016-04-26 | 2016-08-19 |  |  |  |  |  |  |  |  |  |
|  | 1 | **SD Preparation and Submission of Bill 12-UP-PRAYER ROOMS** |  | 2016-04-26 | 2016-07-31 |  |  |  |  |  |  |  |  |  |
| B12-UPPR-SDS160 |  | Preparation and Submission of RCP Layout | 21d | 2016-04-26 A | 2016-07-21 | RM-DF-011, RM-DF-011 SS | 50% | 10.5d | 2016-04-06 | 2016-05-04 | 12.6d | 0d | ATL522 - Engineering Submission (5x9) | Preparation and Submission Shop Drawing [14 h] |
| B12-UPPR-SDS170 |  | Preparation and Submission of Floor Layout | 21d | 2016-04-26 A | 2016-07-25 | RM-DF-011, B12-UPPR-SDS160 | 90% | 2.1d | 2016-05-08 | 2016-06-05 | 42.7d | 0d | ATL522 - Engineering Submission (5x9) | Preparation and Submission Shop Drawing [14 h] |
| B12-UPPR-SDS180 |  | Preparation and Submission of Elevation Layout | 21d | 2016-04-26 A | 2016-07-27 | RM-DF-011, B12-UPPR-SDS170 | 90% | 2.1d | 2016-05-26 | 2016-06-23 | 42.7d | 0d | ATL522 - Engineering Submission (5x9) | Preparation and Submission Shop Drawing [14 h] |
| B12-UPPR-SDS190 |  | Preparation and Submission of Joinery Layout | 21d | 2016-04-26 A | 2016-07-31 | RM-DF-011, B12-UPPR-SDS180 | 90% | 2.1d | 2016-06-15 | 2016-07-17 | 42.7d | 0d | ATL522 - Engineering Submission (5x9) | Preparation and Submission Shop Drawing [14 h] |
| B12-UPPR-SDS200 |  | Preparation and Submission of Doors Shop Drawing | 21d | 2016-04-26 A | 2016-07-31 | RM-DF-011, B12-UPPR-SDS190 SS | 90% | 2.1d | 2016-06-15 | 2016-07-17 | 42.7d | 0d | ATL522 - Engineering Submission (5x9) | Preparation and Submission Shop Drawing [14 h] |
| B12-UPPR-SDS210 |  | Preparation and Submission of Details Layout | 21d | 2016-04-26 A | 2016-07-27 | RM-DF-011, B12-UPPR-SDS180 SS | 90% | 2.1d | 2016-05-26 | 2016-06-23 | 47.3d | 0d | ATL522 - Engineering Submission (5x9) | Preparation and Submission Shop Drawing [14 h] |
|  | 2 | **SD Approval of Bill 12-UP-PRAYER ROOMS** |  | 2016-05-18 | 2016-08-19 |  |  |  |  |  |  |  |  |  |
| B12-UPPR-SDA160 |  | Review & Approval of RCP Layout | 21d | 2016-05-18 A | 2016-08-09 | B12-UPPR-SDS160 | 10% | 18.9d | 2016-05-06 | 2016-05-26 | 18.6d | 0d | ATL522 - Engineering Approval (7x9) | Eng Clinet Approval [14 h] |
| B12-UPPR-SDA170 |  | Review & Approval of Floor Layout | 21d | 2016-05-18 A | 2016-08-05 | B12-UPPR-SDS170 | 50% | 10.5d | 2016-05-26 | 2016-06-15 | 109.9d | 26.9d | ATL522 - Engineering Approval (7x9) | Eng Clinet Approval [14 h] |
| B12-UPPR-SDA180 |  | Review & Approval of Elevation Layout | 21d | 2016-05-18 A | 2016-07-29 | B12-UPPR-SDS180 | 90% | 2.1d | 2016-06-15 | 2016-07-05 | 68.2d | 17.1d | ATL522 - Engineering Approval (7x9) | Eng Clinet Approval [14 h] |
| B12-UPPR-SDA190 |  | Review & Approval of Joinery Layout | 21d | 2016-05-18 A | 2016-08-19 | B12-UPPR-SDS190 | 10% | 18.9d | 2016-07-05 | 2016-07-27 | 62.3d | 12.3d | ATL522 - Engineering Approval (7x9) | Eng Clinet Approval [14 h] |
| B12-UPPR-SDA200 |  | Review & Approval of Doors Shop Drawing | 21d | 2016-05-18 A | 2016-08-11 | B12-UPPR-SDS200 | 50% | 10.5d | 2016-07-05 | 2016-07-27 | 60.7d | 4.6d | ATL522 - Engineering Approval (7x9) | Eng Clinet Approval [14 h] |
| B12-UPPR-SDA210 |  | Review & Approval of Details Layout | 21d | 2016-05-18 A | 2016-08-13 | B12-UPPR-SDS210 | 20% | 16.8d | 2016-06-24 | 2016-07-16 | 68.5d | 18.5d | ATL522 - Engineering Approval (7x9) | Eng Clinet Approval [14 h] |
|  | 12 | **Shop Drawing Process Bill 13-UP-RESIDENCES LOBBY** |  | 2016-05-15 | 2016-11-02 |  |  |  |  |  |  |  |  |  |
|  | 1 | **SD Preparation and Submission of Bill 13-UP-RESIDENCES LOBBY** |  | 2016-05-15 | 2016-10-12 |  |  |  |  |  |  |  |  |  |
| B13-UPRL-SDS110 |  | Preparation and Submission of RCP Layout | 21d | 2016-05-15 A | 2016-08-01 | RM-DF-012, RM-DF-012 SS | 15% | 17.85d | 2016-04-06 | 2016-05-04 | 2.45d | 0d | ATL522 - Engineering Submission (5x9) | Preparation and Submission Shop Drawing [14 h] |
| B13-UPRL-SDS135 |  | Preparation and Submission of Furniture Layout | 14d | 2016-05-15 A | 2016-09-04 | RM-DF-012, B13-UPRL-SDS150 | 15% | 11.9d | 2016-05-26 | 2016-06-14 | 2.45d | 0d | ATL522 - Engineering Submission (5x9) | Preparation and Submission Shop Drawing [14 h] |
| B13-UPRL-SDS150 |  | Preparation and Submission of Elevation Layout | 14d | 2016-05-15 A | 2016-08-17 | RM-DF-012, B13-UPRL-SDS110 | 15% | 11.9d | 2016-05-08 | 2016-05-25 | 2.45d | 0d | ATL522 - Engineering Submission (5x9) | Preparation and Submission Shop Drawing [14 h] |
| B13-UPRL-SDS160 |  | Preparation and Submission of Joinery Layout | 14d | 2016-05-29 A | 2016-09-25 | RM-DF-012, B13-UPRL-SDS135 | 15% | 11.9d | 2016-06-15 | 2016-07-04 | 2.45d | 0d | ATL522 - Engineering Submission (5x9) | Preparation and Submission Shop Drawing [14 h] |
| B13-UPRL-SDS170 |  | Preparation and Submission of Details Layout | 14d | 2016-06-01 A | 2016-10-12 | RM-DF-012, B13-UPRL-SDS160 | 15% | 11.9d | 2016-07-05 | 2016-07-26 | 73.55d | 0d | ATL522 - Engineering Submission (5x9) | Preparation and Submission Shop Drawing [14 h] |

| ID | WBS | Activity | Duration | Start | Finish | Predecessors | Total float | Free float | Calendar | Resources |
| --- | --- | --- | --- | --- | --- | --- | --- | --- | --- | --- |
|  | 2 | **SD Approval of Bill 13-UP-RESIDENCES LOBBY** |  | 2016-08-01 | 2016-11-02 |  |  |  |  |  |
| B13-UPRL-SDA110 |  | Review & Approval of RCP Layout | 21d | 2016-08-01 | 2016-08-22 | B13-UPRL-SDS110 | 5.15d | 0d | ATL522 - Engineering Approval (7x9) | Eng Clinet Approval [14 h] |
| B13-UPRL-SDA160 |  | Review & Approval of Elevation Layout | 21d | 2016-08-17 | 2016-09-07 | B13-UPRL-SDS150 | 40.25d | 0d | ATL522 - Engineering Approval (7x9) | Eng Clinet Approval [14 h] |
| B13-UPRL-SDA190 |  | Review & Approval of Furniture Layout | 21d | 2016-09-04 | 2016-09-28 | B13-UPRL-SDS135 | 20.35d | 17.9d | ATL522 - Engineering Approval (7x9) | Eng Clinet Approval [14 h] |
| B13-UPRL-SDA170 |  | Review & Approval of Joinery Layout | 21d | 2016-09-25 | 2016-10-17 | B13-UPRL-SDS160 | 2.45d | 0d | ATL522 - Engineering Approval (7x9) | Eng Clinet Approval [14 h] |
| B13-UPRL-SDA180 |  | Review & Approval of Details Layout | 21d | 2016-10-12 | 2016-11-02 | B13-UPRL-SDS170 | 103.55d | 55.55d | ATL522 - Engineering Approval (7x9) | Eng Clinet Approval [14 h] |
|  | 15 | **Shop Drawing Process Bill 20-UP-COFFEE BAR** |  | 2016-07-05 | 2016-09-28 |  |  |  |  |  |
|  | 1 | **SD Preparation and Submission of Bill 20-UP-COFFEE BAR** |  | 2016-07-05 | 2016-09-04 |  |  |  |  |  |
| B20-UPCB-SDS150 |  | Preparation and Submission of Floor Layout | 21d | 2016-07-05 | 2016-08-04 | RM-DF-015 | 51d | 0d | ATL522 - Engineering Submission (5x9) | Preparation and Submission Shop Drawing [14 h] |
| B20-UPCB-SDS160 |  | Preparation and Submission of Elevation Layout | 21d | 2016-08-07 | 2016-09-04 | B20-UPCB-SDS150 | 51d | 0d | ATL522 - Engineering Submission (5x9) | Preparation and Submission Shop Drawing [14 h] |
| B20-UPCB-SDS170 |  | Preparation and Submission of Joinery Layout | 21d | 2016-08-07 | 2016-09-04 | B20-UPCB-SDS160 SS | 51d | 0d | ATL522 - Engineering Submission (5x9) | Preparation and Submission Shop Drawing [14 h] |
| B20-UPCB-SDS180 |  | Preparation and Submission of Details Layout | 21d | 2016-08-07 | 2016-09-04 | B20-UPCB-SDS160 SS | 51d | 0d | ATL522 - Engineering Submission (5x9) | Preparation and Submission Shop Drawing [14 h] |
|  | 2 | **SD Approval of Bill 20-UP-COFFEE BAR** |  | 2016-08-05 | 2016-09-28 |  |  |  |  |  |
| B20-UPCB-SDA150 |  | Review & Approval of Floor Layout | 21d | 2016-08-05 | 2016-08-25 | B20-UPCB-SDS150 | 83d | 16d | ATL522 - Engineering Approval (7x9) | Eng Clinet Approval [14 h] |
| B20-UPCB-SDA160 |  | Review & Approval of Elevation Layout | 21d | 2016-09-05 | 2016-09-28 | B20-UPCB-SDS160 | 73d | 0d | ATL522 - Engineering Approval (7x9) | Eng Clinet Approval [14 h] |
| B20-UPCB-SDA170 |  | Review & Approval of Joinery Layout | 21d | 2016-09-05 | 2016-09-28 | B20-UPCB-SDS170 | 73d | 0d | ATL522 - Engineering Approval (7x9) | Eng Clinet Approval [14 h] |
| B20-UPCB-SDA180 |  | Review & Approval of Details Layout | 21d | 2016-09-05 | 2016-09-28 | B20-UPCB-SDS180 | 73d | 0d | ATL522 - Engineering Approval (7x9) | Eng Clinet Approval [14 h] |
|  | 16 | **Shop Drawing Process Bill 28-LIFT CAR - TOWER A, B & D** |  | 2016-07-05 | 2016-11-17 |  |  |  |  |  |
|  | 1 | **SD Preparation and Submission of Bill 28-LIFT CAR - TOWER A, B & D** |  | 2016-07-05 | 2016-10-27 |  |  |  |  |  |
| B28-TsLC-SDS110 |  | Preparation and Submission of RCP Layout | 21d | 2016-07-05 | 2016-08-04 | RM-DF-016 | 0d |  | ATL522 - Engineering Submission (5x9) | Preparation and Submission Shop Drawing [14 h] |
| B28-TsLC-SDS150 |  | Preparation and Submission of Elevation Layout | 14d | 2016-08-07 | 2016-08-24 | B28-TsLC-SDS110 | 0d |  | ATL522 - Engineering Submission (5x9) | Preparation and Submission Shop Drawing [14 h] |
| B28-TsLC-SDS135 |  | Preparation and Submission of Furniture Layout | 21d | 2016-08-25 | 2016-09-27 | B28-TsLC-SDS150 | 5d | 0d | ATL522 - Engineering Submission (5x9) | Preparation and Submission Shop Drawing [14 h] |
| B28-TsLC-SDS170 |  | Preparation and Submission of Details Layout | 21d | 2016-08-25 | 2016-09-27 | B28-TsLC-SDS150 | 26d | 0d | ATL522 - Engineering Submission (5x9) | Preparation and Submission Shop Drawing [14 h] |
| B28-TsLC-SDS160 |  | Preparation and Submission of Joinery Layout | 21d | 2016-09-28 | 2016-10-27 | B28-TsLC-SDS135 | 5d | 0d | ATL522 - Engineering Submission (5x9) | Preparation and Submission Shop Drawing [14 h] |

| ID | WBS | Activity | Duration | Start | Finish | Predecessors | Complete | Remaining | Planned start | Planned finish | Total float | Free float | Calendar | Resources |
| --- | --- | --- | --- | --- | --- | --- | --- | --- | --- | --- | --- | --- | --- | --- |
|  | 2 | **SD Approval of Bill 28-LIFT CAR - TOWER A, B & D** |  | 2016-08-05 | 2016-11-17 |  |  |  |  |  |  |  |  |  |
| B28-TsLC-SDA110 |  | Review & Approval of RCP Layout | 21d | 2016-08-05 | 2016-08-25 | B28-TsLC-SDS110 |  |  |  |  | 8d | 0d | ATL522 - Engineering Approval (7x9) | Eng Clinet Approval [14 h] |
| B28-TsLC-SDA160 |  | Review & Approval of Elevation Layout | 21d | 2016-08-25 | 2016-09-17 | B28-TsLC-SDS150 |  |  |  |  | 0d |  | ATL522 - Engineering Approval (7x9) | Eng Clinet Approval [14 h] |
| B28-TsLC-SDA180 |  | Review & Approval of Details Layout | 21d | 2016-09-28 | 2016-10-19 | B28-TsLC-SDS170 |  |  |  |  | 37d | 0d | ATL522 - Engineering Approval (7x9) | Eng Clinet Approval [14 h] |
| B28-TsLC-SDA190 |  | Review & Approval of Furniture Layout | 21d | 2016-09-28 | 2016-10-19 | B28-TsLC-SDS135 |  |  |  |  | 37d | 29d | ATL522 - Engineering Approval (7x9) | Eng Clinet Approval [14 h] |
| B28-TsLC-SDA170 |  | Review & Approval of Joinery Layout | 21d | 2016-10-28 | 2016-11-17 | B28-TsLC-SDS160 |  |  |  |  | 8d | 0d | ATL522 - Engineering Approval (7x9) | Eng Clinet Approval [14 h] |
|  | 17 | **Shop Drawing Process Bill 29-SPA** |  | 2016-07-05 | 2016-11-09 |  |  |  |  |  |  |  |  |  |
|  | 1 | **SD Preparation and Submission of Bill 29-SPA** |  | 2016-07-05 | 2016-10-19 |  |  |  |  |  |  |  |  |  |
| B29-SPA-SDS160 |  | Preparation and Submission of RCP Layout | 10d | 2016-07-05 | 2016-07-20 | RM-DF-017, RM-DF-017 SS |  |  |  |  | 8d | 0d | ATL522 - Engineering Submission (5x9) | Preparation and Submission Shop Drawing [14 h] |
| B29-SPA-SDS170 |  | Preparation and Submission of Floor Layout | 10d | 2016-07-21 | 2016-08-03 | RM-DF-017, B29-SPA-SDS160, B29-SPA-SDS160 FF |  |  |  |  | 8d | 0d | ATL522 - Engineering Submission (5x9) | Preparation and Submission Shop Drawing [14 h] |
| B29-SPA-SDS180 |  | Preparation and Submission of Elevation Layout | 10d | 2016-08-04 | 2016-08-17 | RM-DF-017, B29-SPA-SDS170, B29-SPA-SDS170 FF |  |  |  |  | 8d | 0d | ATL522 - Engineering Submission (5x9) | Preparation and Submission Shop Drawing [14 h] |
| B29-SPA-SDS210 |  | Preparation and Submission of Details Layout | 21d | 2016-08-04 | 2016-09-01 | RM-DF-017, B29-SPA-SDS180 SS |  |  |  |  | 31d | 0d | ATL522 - Engineering Submission (5x9) | Preparation and Submission Shop Drawing [14 h] |
| B29-SPA-SDS135 |  | Preparation and Submission of Furniture Layout | 10d | 2016-08-18 | 2016-08-31 | RM-DF-017, B29-SPA-SDS180, B29-SPA-SDS180 FF |  |  |  |  | 8d | 0d | ATL522 - Engineering Submission (5x9) | Preparation and Submission Shop Drawing [14 h] |
| B29-SPA-SDS190 |  | Preparation and Submission of Joinery Layout | 10d | 2016-09-01 | 2016-09-19 | RM-DF-017, B29-SPA-SDS135, B29-SPA-SDS135 FF |  |  |  |  | 8d | 0d | ATL522 - Engineering Submission (5x9) | Preparation and Submission Shop Drawing [14 h] |
| B29-SPA-SDS200 |  | Preparation and Submission of Doors Shop Drawing | 21d | 2016-09-20 | 2016-10-19 | RM-DF-017, B29-SPA-SDS190 |  |  |  |  | 15d | 0d | ATL522 - Engineering Submission (5x9) | Preparation and Submission Shop Drawing [14 h] |
|  | 2 | **SD Approval of Bill 29-SPA** |  | 2016-07-21 | 2016-11-09 |  |  |  |  |  |  |  |  |  |
| B29-SPA-SDA170 |  | Review & Approval of RCP Layout | 21d | 2016-07-21 | 2016-08-10 | B29-SPA-SDS160 |  |  |  |  | 27d | 0d | ATL522 - Engineering Approval (7x9) | Eng Clinet Approval [14 h] |
| B29-SPA-SDA180 |  | Review & Approval of Floor Layout | 21d | 2016-08-04 | 2016-08-24 | B29-SPA-SDS170 |  |  |  |  | 46d | 0d | ATL522 - Engineering Approval (7x9) | Eng Clinet Approval [14 h] |
| B29-SPA-SDA190 |  | Review & Approval of Elevation Layout | 21d | 2016-08-18 | 2016-09-07 | B29-SPA-SDS180 |  |  |  |  | 19d | 0d | ATL522 - Engineering Approval (7x9) | Eng Clinet Approval [14 h] |
| B29-SPA-SDA230 |  | Review & Approval of Furniture Layout | 21d | 2016-09-01 | 2016-09-24 | B29-SPA-SDS135 |  |  |  |  | 48d | 16d | ATL522 - Engineering Approval (7x9) | Eng Clinet Approval [14 h] |
| B29-SPA-SDA220 |  | Review & Approval of Details Layout | 21d | 2016-09-02 | 2016-09-25 | B29-SPA-SDS210 |  |  |  |  | 47d | 0d | ATL522 - Engineering Approval (7x9) | Eng Clinet Approval [14 h] |
| B29-SPA-SDA200 |  | Review & Approval of Joinery Layout | 21d | 2016-09-20 | 2016-10-11 | B29-SPA-SDS190 |  |  |  |  | 10d | 0d | ATL522 - Engineering Approval (7x9) | Eng Clinet Approval [14 h] |
| B29-SPA-SDA210 |  | Review & Approval of Doors Shop Drawing | 21d | 2016-10-20 | 2016-11-09 | B29-SPA-SDS200 |  |  |  |  | 21d | 0d | ATL522 - Engineering Approval (7x9) | Eng Clinet Approval [14 h] |
|  | 22 | **Shop Drawing Process Bill 34-UP-SPEAK EASY BAR** |  | 2016-04-04 | 2016-09-25 |  |  |  |  |  |  |  |  |  |
|  | 1 | **SD Preparation and Submission of Bill 34-UP-SPEAK EASY BAR** |  | 2016-04-04 | 2016-09-14 |  |  |  |  |  |  |  |  |  |
| B34-UPSEB-SDS160 |  | Preparation and Submission of RCP Layout | 21d | 2016-04-04 A | 2016-07-21 | RM-DF-020, RM-DF-020 SS | 50% | 10.5d | 2016-04-06 | 2016-05-04 | 5.6d | 0d | ATL522 - Engineering Submission (5x9) | Preparation and Submission Shop Drawing [14 h] |
| B34-UPSEB-SDS180 |  | Preparation and Submission of Elevation Layout | 10d | 2016-04-04 A | 2016-04-28 A | RM-DF-020, B34-UPSEB-SDS170 | 100% |  | 2016-05-22 | 2016-06-02 |  |  | ATL522 - Engineering Submission (5x9) | Preparation and Submission Shop Drawing [14 h] |
| B34-UPSEB-SDS190 |  | Preparation and Submission of Joinery Layout | 21d | 2016-04-04 A | 2016-08-28 | RM-DF-020, B34-UPSEB-SDS135 | 50% | 10.5d | 2016-07-04 | 2016-08-03 | 14.6d | 0d | ATL522 - Engineering Submission (5x9) | Preparation and Submission Shop Drawing [14 h] |
| B34-UPSEB-SDS170 |  | Preparation and Submission of Floor Layout | 10d | 2016-04-18 A | 2016-07-28 | RM-DF-020, B34-UPSEB-SDS160 | 50% | 5d | 2016-05-08 | 2016-05-19 | 14.6d | 0d | ATL522 - Engineering Submission (5x9) | Preparation and Submission Shop Drawing [14 h] |
| B34-UPSEB-SDS200 |  | Preparation and Submission of Doors Shop Drawing | 21d | 2016-05-01 A | 2016-09-14 | RM-DF-020, B34-UPSEB-SDS190 | 50% | 10.5d | 2016-08-04 | 2016-09-01 | 53.5d | 0d | ATL522 - Engineering Submission (5x9) | Preparation and Submission Shop Drawing [14 h] |
| B34-UPSEB-SDS210 |  | Preparation and Submission of Details Layout | 14d | 2016-05-01 A | 2016-07-17 | RM-DF-020 | 50% | 7d | 2016-04-06 | 2016-04-25 | 55d | 0d | ATL522 - Engineering Submission (5x9) | Preparation and Submission Shop Drawing [14 h] |
| B34-UPSEB-SDS135 |  | Preparation and Submission of Furniture Layout | 21d | 2016-06-19 A | 2016-08-11 | RM-DF-020, B34-UPSEB-SDS180 | 50% | 10.5d | 2016-06-05 | 2016-07-03 | 14.6d | 0d | ATL522 - Engineering Submission (5x9) | Preparation and Submission Shop Drawing [14 h] |

| ID | WBS | Activity | Duration | Start | Finish | Predecessors | Complete | Remaining | Planned start | Planned finish | Total float | Free float | Calendar | Resources |
| --- | --- | --- | --- | --- | --- | --- | --- | --- | --- | --- | --- | --- | --- | --- |
|  | 2 | **SD Approval of Bill 34-UP-SPEAK EASY BAR** |  | 2016-04-28 | 2016-09-25 |  |  |  |  |  |  |  |  |  |
| B34-UPSEB-SDA190 |  | Review & Approval of Elevation Layout | 21d | 2016-04-28 A | 2016-05-27 A | B34-UPSEB-SDS180 | 100% |  | 2016-06-03 | 2016-06-23 |  |  | ATL522 - Engineering Approval (7x9) | Eng Clinet Approval [14 h] |
| B34-UPSEB-SDA170 |  | Review & Approval of RCP Layout | 21d | 2016-05-06 A | 2016-08-09 | B34-UPSEB-SDS160 | 10% | 18.9d | 2016-05-06 | 2016-05-26 | 9.6d | 0d | ATL522 - Engineering Approval (7x9) | Eng Clinet Approval [14 h] |
| B34-UPSEB-SDA210 |  | Review & Approval of Doors Shop Drawing | 21d | 2016-05-11 A | 2016-09-25 | B34-UPSEB-SDS200 | 50% | 10.5d | 2016-09-02 | 2016-09-25 | 75.5d | 0d | ATL522 - Engineering Approval (7x9) | Eng Clinet Approval [14 h] |
| B34-UPSEB-SDA220 |  | Review & Approval of Details Layout | 21d | 2016-05-11 A | 2016-07-26 | B34-UPSEB-SDS210 | 60% | 8.4d | 2016-04-26 | 2016-05-17 | 77.6d | 2.6d | ATL522 - Engineering Approval (7x9) | Eng Clinet Approval [14 h] |
| B34-UPSEB-SDA180 |  | Review & Approval of Floor Layout | 21d | 2016-05-20 A | 2016-08-16 | B34-UPSEB-SDS170 | 10% | 18.9d | 2016-05-20 | 2016-06-09 | 58.6d | 15.6d | ATL522 - Engineering Approval (7x9) | Eng Clinet Approval [14 h] |
| B34-UPSEB-SDA200 |  | Review & Approval of Joinery Layout | 21d | 2016-07-03 A | 2016-09-19 | B34-UPSEB-SDS190 | 10% | 18.9d | 2016-08-04 | 2016-08-24 | 20.6d | 0d | ATL522 - Engineering Approval (7x9) | Eng Clinet Approval [14 h] |
| B34-UPSEB-SDA230 |  | Review & Approval of Furniture Layout | 21d | 2016-07-03 A | 2016-08-30 | B34-UPSEB-SDS135 | 10% | 18.9d | 2016-07-04 | 2016-07-26 | 37.1d | 16.5d | ATL522 - Engineering Approval (7x9) | Eng Clinet Approval [14 h] |
|  | 20 | **Shop Drawing Process Bill 35-LIFT CAR - TOWER C** |  | 2016-07-05 | 2016-11-08 |  |  |  |  |  |  |  |  |  |
|  | 1 | **SD Preparation and Submission of Bill 35-LIFT CAR - TOWER C** |  | 2016-07-05 | 2016-10-18 |  |  |  |  |  |  |  |  |  |
| B35-TCLC-SDS110 |  | Preparation and Submission of RCP Layout | 21d | 2016-07-05 | 2016-08-04 | RM-DF-021, RM-DF-021 SS |  |  |  |  | 2d | 0d | ATL522 - Engineering Submission (5x9) | Preparation and Submission Shop Drawing [14 h] |
| B35-TCLC-SDS150 |  | Preparation and Submission of Elevation Layout | 14d | 2016-08-07 | 2016-08-24 | RM-DF-021, B35-TCLC-SDS110 |  |  |  |  | 2d | 0d | ATL522 - Engineering Submission (5x9) | Preparation and Submission Shop Drawing [14 h] |
| B35-TCLC-SDS160 |  | Preparation and Submission of Joinery Layout | 14d | 2016-08-25 | 2016-09-18 | RM-DF-021, B35-TCLC-SDS150 |  |  |  |  | 2d | 0d | ATL522 - Engineering Submission (5x9) | Preparation and Submission Shop Drawing [14 h] |
| B35-TCLC-SDS170 |  | Preparation and Submission of Details Layout | 21d | 2016-09-19 | 2016-10-18 | RM-DF-021, B35-TCLC-SDS160 |  |  |  |  | 69d | 0d | ATL522 - Engineering Submission (5x9) | Preparation and Submission Shop Drawing [14 h] |
|  | 2 | **SD Approval of Bill 35-LIFT CAR - TOWER C** |  | 2016-08-05 | 2016-11-08 |  |  |  |  |  |  |  |  |  |
| B35-TCLC-SDA110 |  | Review & Approval of RCP Layout | 21d | 2016-08-05 | 2016-08-25 | B35-TCLC-SDS110 |  |  |  |  | 29d | 0d | ATL522 - Engineering Approval (7x9) | Eng Clinet Approval [14 h] |
| B35-TCLC-SDA150 |  | Review & Approval of Elevation Layout | 21d | 2016-08-25 | 2016-09-17 | B35-TCLC-SDS150 |  |  |  |  | 24d | 22d | ATL522 - Engineering Approval (7x9) | Eng Clinet Approval [14 h] |
| B35-TCLC-SDA160 |  | Review & Approval of Joinery Layout | 21d | 2016-09-19 | 2016-10-10 | B35-TCLC-SDS160 |  |  |  |  | 2d | 0d | ATL522 - Engineering Approval (7x9) | Eng Clinet Approval [14 h] |
| B35-TCLC-SDA170 |  | Review & Approval of Details Layout | 21d | 2016-10-19 | 2016-11-08 | B35-TCLC-SDS170 |  |  |  |  | 97d | 49d | ATL522 - Engineering Approval (7x9) | Eng Clinet Approval [14 h] |
|  | 21 | **Shop Drawing Process Bill 39-LG- LIFT LOBBY** |  | 2016-07-05 | 2016-12-29 |  |  |  |  |  |  |  |  |  |
|  | 1 | **SD Preparation and Submission of Bill 39-LG- LIFT LOBBY** |  | 2016-07-05 | 2016-12-07 |  |  |  |  |  |  |  |  |  |
| B39-LGLL-SDS110 |  | Preparation and Submission of RCP Layout | 21d | 2016-07-05 | 2016-08-04 | RM-DF-022, RM-DF-022 SS |  |  |  |  | 4d | 0d | ATL522 - Engineering Submission (5x9) | Preparation and Submission Shop Drawing [14 h] |
| B39-LGLL-SDS150 |  | Preparation and Submission of Elevation Layout | 21d | 2016-08-07 | 2016-09-04 | RM-DF-022, B39-LGLL-SDS110 |  |  |  |  | 4d | 0d | ATL522 - Engineering Submission (5x9) | Preparation and Submission Shop Drawing [14 h] |
| B39-LGLL-SDS135 |  | Preparation and Submission of Furniture Layout | 21d | 2016-09-05 | 2016-10-09 | RM-DF-022, B39-LGLL-SDS150 |  |  |  |  | 6.33d | 0d | ATL522 - Engineering Submission (5x9) | Preparation and Submission Shop Drawing [14 h] |
| B39-LGLL-SDS160 |  | Preparation and Submission of Joinery Layout | 21d | 2016-10-10 | 2016-11-07 | RM-DF-022, B39-LGLL-SDS135 |  |  |  |  | 6.33d | 0d | ATL522 - Engineering Submission (5x9) | Preparation and Submission Shop Drawing [14 h] |
| B39-LGLL-SDS170 |  | Preparation and Submission of Details Layout | 21d | 2016-11-08 | 2016-12-07 | RM-DF-022, B39-LGLL-SDS160 |  |  |  |  | 6.33d | 0d | ATL522 - Engineering Submission (5x9) | Preparation and Submission Shop Drawing [14 h] |

| ID | WBS | Activity | Duration | Start | Finish | Predecessors | Complete | Remaining | Planned start | Planned finish | Total float | Free float | Calendar | Resources |
| --- | --- | --- | --- | --- | --- | --- | --- | --- | --- | --- | --- | --- | --- | --- |
|  | 2 | **SD Approval of Bill 39-LG- LIFT LOBBY** |  | 2016-08-05 | 2016-12-29 |  |  |  |  |  |  |  |  |  |
| B39-LGLL-SDA110 |  | Review & Approval of RCP Layout | 21d | 2016-08-05 | 2016-08-25 | B39-LGLL-SDS110 |  |  |  |  | 13d | 0d | ATL522 - Engineering Approval (7x9) | Eng Clinet Approval [14 h] |
| B39-LGLL-SDA160 |  | Review & Approval of Elevation Layout | 21d | 2016-09-05 | 2016-09-28 | B39-LGLL-SDS150 |  |  |  |  | 4d | 0d | ATL522 - Engineering Approval (7x9) | Eng Clinet Approval [14 h] |
| B39-LGLL-SDA190 |  | Review & Approvalof Furniture Layout | 21d | 2016-10-10 | 2016-10-30 | B39-LGLL-SDS135 |  |  |  |  | 39d | 29d | ATL522 - Engineering Approval (7x9) | Eng Clinet Approval [14 h] |
| B39-LGLL-SDA170 |  | Review & Approval of Joinery Layout | 21d | 2016-11-08 | 2016-11-28 | B39-LGLL-SDS160 |  |  |  |  | 10d | 0d | ATL522 - Engineering Approval (7x9) | Eng Clinet Approval [14 h] |
| B39-LGLL-SDA180 |  | Review & Approval of Details Layout | 21d | 2016-12-08 | 2016-12-29 | B39-LGLL-SDS170 |  |  |  |  | 10.33d | 0d | ATL522 - Engineering Approval (7x9) | Eng Clinet Approval [14 h] |
|  | 2 | **Material Process** |  | 2016-04-04 | 2016-09-04 |  |  |  |  |  |  |  |  |  |
|  | 1 | **Material Process Bill 2 UP-HOTEL LOBBY** |  | 2016-05-01 | 2016-08-25 |  |  |  |  |  |  |  |  |  |
| B2-UPHL-MS110 |  | Preparation and Submission of Veneer | 30d | 2016-05-01 A | 2016-07-27 | RM-DF-001 | 50% | 15d | 2016-04-06 | 2016-05-18 | 64.5d | 0d | ATL522 - Engineering Submission (5x9) | Preparation and Submission Material [14 h] |
| B2-UPHL-MS150 |  | Preparation and Submission of Paint | 30d | 2016-05-01 A | 2016-07-18 | RM-DF-001 | 75% | 7.5d | 2016-04-06 | 2016-05-18 | 40d | 0d | ATL522 - Engineering Submission (5x9) | Preparation and Submission Material [14 h] |
| B2-UPHL-MS160 |  | Preparation and Submission of Glass | 30d | 2016-05-01 A | 2016-07-18 | RM-DF-001 | 75% | 7.5d | 2016-04-06 | 2016-05-18 | 74d | 0d | ATL522 - Engineering Submission (5x9) | Preparation and Submission Material [14 h] |
| B2-UPHL-MS200 |  | Preparation and Submission of Metal | 30d | 2016-05-01 A | 2016-07-27 | RM-DF-001 | 50% | 15d | 2016-04-06 | 2016-05-18 | 31.3d | 0d | ATL522 - Engineering Submission (5x9) | Preparation and Submission Material [14 h] |
| B2-UPHL-MS220 |  | Preparation and Submission of Ceiling System | 30d | 2016-05-01 A | 2016-07-14 | RM-DF-001 | 80% | 6d | 2016-04-06 | 2016-05-18 | 18d | 0d | ATL522 - Engineering Submission (5x9) | Preparation and Submission Material [14 h] |
| B2-UPHL-MS270 |  | Preparation and Submission of Doors , Ironmongery and Hardware | 30d | 2016-05-01 A | 2016-07-27 | RM-DF-001 | 50% | 15d | 2016-04-06 | 2016-05-18 | 75.1d | 0d | ATL522 - Engineering Submission (5x9) | Preparation and Submission Material [14 h] |
| B2-UPHL-MA110 |  | Review & Approval of Veneer | 21d | 2016-05-16 A | 2016-08-07 | B2-UPHL-MS110 | 50% | 10.5d | 2016-05-19 | 2016-06-08 | 92.5d | 43.3d | ATL522 - Engineering Approval (7x9) | Eng Clinet Approval [14 h] |
| B2-UPHL-MA150 |  | Review & Approval of Paint | 21d | 2016-05-16 A | 2016-07-28 | B2-UPHL-MS150 | 50% | 10.5d | 2016-05-19 | 2016-06-08 | 56d | 17.6d | ATL522 - Engineering Approval (7x9) | Eng Clinet Approval [14 h] |
| B2-UPHL-MA160 |  | Review & Approval of Glass | 21d | 2016-05-16 A | 2016-07-28 | B2-UPHL-MS160 | 50% | 10.5d | 2016-05-19 | 2016-06-08 | 104d | 17.6d | ATL522 - Engineering Approval (7x9) | Eng Clinet Approval [14 h] |
| B2-UPHL-MA200 |  | Review & Approval of Metal | 21d | 2016-05-16 A | 2016-08-11 | B2-UPHL-MS200 | 30% | 14.7d | 2016-05-19 | 2016-06-08 | 45.3d | 3.9d | ATL522 - Engineering Approval (7x9) | Eng Clinet Approval [14 h] |
| B2-UPHL-MA270 |  | Review & Approval of Doors , Ironmongery and Hardware | 21d | 2016-05-16 A | 2016-08-15 | B2-UPHL-MS270 | 10% | 18.9d | 2016-05-19 | 2016-06-08 | 107.1d | 53.5d | ATL522 - Engineering Approval (7x9) | Eng Clinet Approval [14 h] |
| B2-UPHL-MS210 |  | Preparation and Submission of Tiles | 30d | 2016-06-12 A | 2016-07-27 | RM-DF-001 | 50% | 15d | 2016-04-06 | 2016-05-18 | 1d | 0d | ATL522 - Engineering Submission (5x9) | Preparation and Submission Material [14 h] |
| B2-UPHL-MS230 |  | Preparation and Submission of Stone | 30d | 2016-06-12 A | 2016-08-04 | RM-DF-001 | 30% | 21d | 2016-04-06 | 2016-05-18 | 0d |  | ATL522 - Engineering Submission (5x9) | Preparation and Submission Material [14 h] |
| B2-UPHL-MA220 |  | Review & Approval of Ceiling System | 21d | 2016-07-15 | 2016-08-04 | B2-UPHL-MS220 |  |  |  |  | 26d | 18.9d | ATL522 - Engineering Approval (7x9) | Eng Clinet Approval [14 h] |
| B2-UPHL-MA210 |  | Review & Approval of Tiles | 21d | 2016-07-28 | 2016-08-17 | B2-UPHL-MS210 |  |  |  |  | 2d | 0d | ATL522 - Engineering Approval (7x9) | Eng Clinet Approval [14 h] |
| B2-UPHL-MA230 |  | Review & Approval of Stone | 21d | 2016-08-05 | 2016-08-25 | B2-UPHL-MS230 |  |  |  |  | 1d | 0d | ATL522 - Engineering Approval (7x9) | Eng Clinet Approval [14 h] |

| ID | WBS | Activity | Duration | Start | Finish | Predecessors | Complete | Remaining | Planned start | Planned finish | Total float | Free float | Calendar | Resources |
| --- | --- | --- | --- | --- | --- | --- | --- | --- | --- | --- | --- | --- | --- | --- |
|  | 2 | **Material Process Bill 3-UP-HOTEL RECEPTION** |  | 2016-05-01 | 2016-08-11 |  |  |  |  |  |  |  |  |  |
| B3-UPHR-MS150 |  | Preparation and Submission of Glass | 30d | 2016-05-01 A | 2016-07-18 | RM-DF-002 | 75% | 7.5d | 2016-04-06 | 2016-05-18 | 40d | 0d | ATL522 - Engineering Submission (5x9) | Preparation and Submission Material [14 h] |
| B3-UPHR-MS160 |  | Preparation and Submission of Metal | 30d | 2016-05-01 A | 2016-07-27 | RM-DF-002 | 50% | 15d | 2016-04-06 | 2016-05-18 | 38.3d | 0d | ATL522 - Engineering Submission (5x9) | Preparation and Submission Material [14 h] |
| B3-UPHR-MS190 |  | Preparation and Submission of Ceiling System | 30d | 2016-05-15 A | 2016-07-14 | RM-DF-002 | 80% | 6d | 2016-04-06 | 2016-05-18 | 5d | 0d | ATL522 - Engineering Submission (5x9) | Preparation and Submission Material [14 h] |
| B3-UPHR-MA150 |  | Review & Approval of Glass | 21d | 2016-06-01 A | 2016-07-28 | B3-UPHR-MS150 | 50% | 10.5d | 2016-05-19 | 2016-06-08 | 56d | 0d | ATL522 - Engineering Approval (7x9) | Eng Clinet Approval [14 h] |
| B3-UPHR-MA160 |  | Review & Approval of Metal | 21d | 2016-06-01 A | 2016-08-11 | B3-UPHR-MS160 | 30% | 14.7d | 2016-05-19 | 2016-06-08 | 56.3d | 0d | ATL522 - Engineering Approval (7x9) | Eng Clinet Approval [14 h] |
| B3-UPHR-MA190 |  | Review & Approval of Ceiling System | 21d | 2016-07-15 | 2016-08-04 | B3-UPHR-MS190 |  |  |  |  | 9d | 0d | ATL522 - Engineering Approval (7x9) | Eng Clinet Approval [14 h] |
|  | 3 | **Material Process Bill 4-UP-VIP PROTOCOL** |  | 2016-05-01 | 2016-08-15 |  |  |  |  |  |  |  |  |  |
| B4-UPVP-MS110 |  | Preparation and Submission of Veneer | 30d | 2016-05-01 A | 2016-07-27 | RM-DF-003 | 50% | 15d | 2016-04-06 | 2016-05-18 | 52d | 0d | ATL522 - Engineering Submission (5x9) | Preparation and Submission Material [14 h] |
| B4-UPVP-MS140 |  | Preparation and Submission of Glass | 30d | 2016-05-01 A | 2016-07-18 | RM-DF-003 | 75% | 7.5d | 2016-04-06 | 2016-05-18 | 64.5d | 0d | ATL522 - Engineering Submission (5x9) | Preparation and Submission Material [14 h] |
| B4-UPVP-MS170 |  | Preparation and Submission of Wall Covering | 30d | 2016-05-01 A | 2016-07-27 | RM-DF-003 | 50% | 15d | 2016-04-06 | 2016-05-18 | 62d | 0d | ATL522 - Engineering Submission (5x9) | Preparation and Submission Material [14 h] |
| B4-UPVP-MS190 |  | Preparation and Submission of Ceiling System | 30d | 2016-05-01 A | 2016-07-14 | RM-DF-003 | 80% | 6d | 2016-04-06 | 2016-05-18 | 20d | 0d | ATL522 - Engineering Submission (5x9) | Preparation and Submission Material [14 h] |
| B4-UPVP-MS270 |  | Preparation and Submission of Doors , Ironmongery and Hardware | 30d | 2016-05-01 A | 2016-07-27 | RM-DF-003 | 50% | 15d | 2016-04-06 | 2016-05-18 | 62d | 0d | ATL522 - Engineering Submission (5x9) | Preparation and Submission Material [14 h] |
| B4-UPVP-MA110 |  | Review & Approval of Veneer | 21d | 2016-05-16 A | 2016-08-07 | B4-UPVP-MS110 | 50% | 10.5d | 2016-05-19 | 2016-06-08 | 74.5d | 24.5d | ATL522 - Engineering Approval (7x9) | Eng Clinet Approval [14 h] |
| B4-UPVP-MA140 |  | Review & Approval of Glass | 21d | 2016-05-16 A | 2016-07-28 | B4-UPVP-MS140 | 50% | 10.5d | 2016-05-19 | 2016-06-08 | 91d | 44.5d | ATL522 - Engineering Approval (7x9) | Eng Clinet Approval [14 h] |
| B4-UPVP-MA170 |  | Review & Approval of Wall Covering | 21d | 2016-05-16 A | 2016-08-15 | B4-UPVP-MS170 | 10% | 18.9d | 2016-05-19 | 2016-06-08 | 89.1d | 26.6d | ATL522 - Engineering Approval (7x9) | Eng Clinet Approval [14 h] |
| B4-UPVP-MA270 |  | Review & Approval of Doors , Ironmongery and Hardware | 21d | 2016-05-16 A | 2016-08-15 | B4-UPVP-MS270 | 10% | 18.9d | 2016-05-19 | 2016-06-08 | 89.1d | 26.6d | ATL522 - Engineering Approval (7x9) | Eng Clinet Approval [14 h] |
| B4-UPVP-MA190 |  | Review & Approval of Ceiling System | 21d | 2016-07-15 | 2016-08-04 | B4-UPVP-MS190 |  |  |  |  | 29d | 0d | ATL522 - Engineering Approval (7x9) | Eng Clinet Approval [14 h] |
|  | 4 | **Material Process Bill 5-UP-SAFE DEPOSIT** |  | 2016-04-04 | 2016-08-07 |  |  |  |  |  |  |  |  |  |
| B5-UPSD-MS110 |  | Preparation and Submission of Veneer | 30d | 2016-04-04 A | 2016-07-27 | RM-DF-004 | 50% | 15d | 2016-04-06 | 2016-05-18 | 56.5d | 0d | ATL522 - Engineering Submission (5x9) | Preparation and Submission Material [14 h] |
| B5-UPSD-MS190 |  | Preparation and Submission of Ceiling System | 30d | 2016-04-04 A | 2016-07-14 | RM-DF-004 | 80% | 6d | 2016-04-06 | 2016-05-18 | 4d | 0d | ATL522 - Engineering Submission (5x9) | Preparation and Submission Material [14 h] |
| B5-UPSD-MS270 |  | Preparation and Submission of Doors , Ironmongery and Hardware | 30d | 2016-04-04 A | 2016-05-16 A | RM-DF-004 | 100% |  | 2016-04-06 | 2016-05-18 |  |  | ATL522 - Engineering Submission (5x9) | Preparation and Submission Material [14 h] |
| B5-UPSD-MA110 |  | Review & Approval of Veneer | 21d | 2016-05-16 A | 2016-08-07 | B5-UPSD-MS110 | 50% | 10.5d | 2016-05-19 | 2016-06-08 | 80.5d | 24.5d | ATL522 - Engineering Approval (7x9) | Eng Clinet Approval [14 h] |
| B5-UPSD-MA270 |  | Review & Approval of Doors , Ironmongery and Hardware | 21d | 2016-05-16 A | 2016-07-25 | B5-UPSD-MS270 | 10% | 18.9d | 2016-05-19 | 2016-06-08 | 114.1d | 35.2d | ATL522 - Engineering Approval (7x9) | Eng Clinet Approval [14 h] |
| B5-UPSD-MA190 |  | Review & Approval of Ceiling System | 21d | 2016-07-15 | 2016-08-04 | B5-UPSD-MS190 |  |  |  |  | 6d | 0d | ATL522 - Engineering Approval (7x9) | Eng Clinet Approval [14 h] |

| ID | WBS | Activity | Duration | Start | Finish | Predecessors | Complete | Remaining | Planned start | Planned finish | Total float | Free float | Calendar | Resources |
| --- | --- | --- | --- | --- | --- | --- | --- | --- | --- | --- | --- | --- | --- | --- |
|  | 5 | **Material Process Bill 6-UP-HOTEL LIFT LOBBY** |  | 2016-06-01 | 2016-08-11 |  |  |  |  |  |  |  |  |  |
| B6-UPHLL-MA150 |  | Review & Approval of Glass | 21d | 2016-06-01 A | 2016-07-28 | B6-UPHLL-MS150 | 50% | 10.5d | 2016-05-19 | 2016-06-08 | 108d | 17.6d | ATL522 - Engineering Approval (7x9) | Eng Clinet Approval [14 h] |
| B6-UPHLL-MA160 |  | Review & Approval of Metal | 21d | 2016-06-01 A | 2016-08-11 | B6-UPHLL-MS160 | 30% | 14.7d | 2016-05-19 | 2016-06-08 | 54.3d | 1.8d | ATL522 - Engineering Approval (7x9) | Eng Clinet Approval [14 h] |
| B6-UPHLL-MS150 |  | Preparation and Submission of Glass | 30d | 2016-06-05 A | 2016-07-18 | RM-DF-005 | 75% | 7.5d | 2016-04-06 | 2016-05-18 | 76d | 0d | ATL522 - Engineering Submission (5x9) | Preparation and Submission Material [14 h] |
| B6-UPHLL-MS160 |  | Preparation and Submission of Metal | 30d | 2016-06-05 A | 2016-07-27 | RM-DF-005 | 50% | 15d | 2016-04-06 | 2016-05-18 | 38d | 0d | ATL522 - Engineering Submission (5x9) | Preparation and Submission Material [14 h] |
| B6-UPHLL-MS190 |  | Preparation and Submission of Ceiling System | 30d | 2016-06-05 A | 2016-07-14 | RM-DF-005 | 80% | 6d | 2016-04-06 | 2016-05-18 | 20d | 0d | ATL522 - Engineering Submission (5x9) | Preparation and Submission Material [14 h] |
| B6-UPHLL-MA190 |  | Review & Approval of Ceiling System | 21d | 2016-07-15 | 2016-08-04 | B6-UPHLL-MS190 |  |  |  |  | 30d | 4.4d | ATL522 - Engineering Approval (7x9) | Eng Clinet Approval [14 h] |
|  | 6 | **Material Process Bill 7-UP-RESIDENCE'S LIFT LOBBY** |  | 2016-06-05 | 2016-08-04 |  |  |  |  |  |  |  |  |  |
| B7-UPRLL-MS190 |  | Preparation and Submission of Ceiling System | 30d | 2016-06-05 A | 2016-07-14 | RM-DF-006 | 80% | 6d | 2016-04-06 | 2016-05-18 | 16d | 0d | ATL522 - Engineering Submission (5x9) | Preparation and Submission Material [14 h] |
| B7-UPRLL-MA190 |  | Review & Approval of Ceiling System | 21d | 2016-07-15 | 2016-08-04 | B7-UPRLL-MS190 |  |  |  |  | 24d | 0.9d | ATL522 - Engineering Approval (7x9) | Eng Clinet Approval [14 h] |
|  | 7 | **Material Process Bill 8-UP-FRONT OFFICE** |  | 2016-04-04 | 2016-08-15 |  |  |  |  |  |  |  |  |  |
| B8-UPFO-MS110 |  | Preparation and Submission of Veneer | 30d | 2016-04-04 A | 2016-07-27 | RM-DF-007 | 50% | 15d | 2016-04-06 | 2016-05-18 | 57d | 0d | ATL522 - Engineering Submission (5x9) | Preparation and Submission Material [14 h] |
| B8-UPFO-MS190 |  | Preparation and Submission of Ceiling System | 30d | 2016-04-04 A | 2016-07-14 | RM-DF-007 | 80% | 6d | 2016-04-06 | 2016-05-18 | 12d | 0d | ATL522 - Engineering Submission (5x9) | Preparation and Submission Material [14 h] |
| B8-UPFO-MS210 |  | Preparation and Submission of Carpet | 30d | 2016-04-04 A | 2016-07-11 | RM-DF-007 | 90% | 3d | 2016-04-06 | 2016-05-18 | 78d | 0d | ATL522 - Engineering Submission (5x9) | Preparation and Submission Material [14 h] |
| B8-UPFO-MS270 |  | Preparation and Submission of Doors , Ironmongery and Hardware | 30d | 2016-04-04 A | 2016-07-27 | RM-DF-007 | 50% | 15d | 2016-04-06 | 2016-05-18 | 46.1d | 0d | ATL522 - Engineering Submission (5x9) | Preparation and Submission Material [14 h] |
| B8-UPFO-MA110 |  | Review & Approval of Veneer | 21d | 2016-05-16 A | 2016-08-07 | B8-UPFO-MS110 | 50% | 10.5d | 2016-05-19 | 2016-06-08 | 82.5d | 24.5d | ATL522 - Engineering Approval (7x9) | Eng Clinet Approval [14 h] |
| B8-UPFO-MA270 |  | Review & Approval of Doors , Ironmongery and Hardware | 21d | 2016-06-12 A | 2016-08-15 | B8-UPFO-MS270 | 10% | 18.9d | 2016-05-19 | 2016-06-08 | 66.1d | 7.3d | ATL522 - Engineering Approval (7x9) | Eng Clinet Approval [14 h] |
| B8-UPFO-MA210 |  | Review & Approval of Carpet | 21d | 2016-07-12 | 2016-08-01 | B8-UPFO-MS210 |  |  |  |  | 110d | 30d | ATL522 - Engineering Approval (7x9) | Eng Clinet Approval [14 h] |
| B8-UPFO-MA190 |  | Review & Approval of Ceiling System | 21d | 2016-07-15 | 2016-08-04 | B8-UPFO-MS190 |  |  |  |  | 18d | 0d | ATL522 - Engineering Approval (7x9) | Eng Clinet Approval [14 h] |
|  | 8 | **Material Process Bill 9-UP-CHOCOLATE BOUTIQUE** |  | 2016-04-04 | 2016-08-17 |  |  |  |  |  |  |  |  |  |
| B9-UPCB-MS150 |  | Preparation and Submission of Paint | 30d | 2016-04-04 A | 2016-07-18 | RM-DF-008 | 75% | 7.5d | 2016-04-06 | 2016-05-18 | 64.5d | 0d | ATL522 - Engineering Submission (5x9) | Preparation and Submission Material [14 h] |
| B9-UPCB-MS190 |  | Preparation and Submission of Metal | 30d | 2016-04-04 A | 2016-07-27 | RM-DF-008 | 50% | 15d | 2016-04-06 | 2016-05-18 | 16d | 0d | ATL522 - Engineering Submission (5x9) | Preparation and Submission Material [14 h] |
| B9-UPCB-MA150 |  | Review & Approval of Paint | 21d | 2016-05-16 A | 2016-07-28 | B9-UPCB-MS150 | 50% | 10.5d | 2016-05-19 | 2016-06-08 | 91d | 33.3d | ATL522 - Engineering Approval (7x9) | Eng Clinet Approval [14 h] |
| B9-UPCB-MA110 |  | Review & Approval of Veneer | 21d | 2016-06-01 A | 2016-08-07 | B9-UPCB-MS110 | 50% | 10.5d | 2016-05-19 | 2016-06-08 | 101.5d | 50.7d | ATL522 - Engineering Approval (7x9) | Eng Clinet Approval [14 h] |
| B9-UPCB-MA160 |  | Review & Approval of Glass | 21d | 2016-06-01 A | 2016-07-28 | B9-UPCB-MS160 | 50% | 10.5d | 2016-05-19 | 2016-06-08 | 149d | 89.1d | ATL522 - Engineering Approval (7x9) | Eng Clinet Approval [14 h] |
| B9-UPCB-MA190 |  | Review & Approval of Metal | 21d | 2016-06-01 A | 2016-08-11 | B9-UPCB-MS190 | 30% | 14.7d | 2016-05-12 | 2016-06-01 | 23.3d | 19.6d | ATL522 - Engineering Approval (7x9) | Eng Clinet Approval [14 h] |
| B9-UPCB-MS110 |  | Preparation and Submission of Veneer | 30d | 2016-06-12 A | 2016-07-27 | RM-DF-008 | 50% | 15d | 2016-04-06 | 2016-05-18 | 71.5d | 0d | ATL522 - Engineering Submission (5x9) | Preparation and Submission Material [14 h] |
| B9-UPCB-MS160 |  | Preparation and Submission of Glass | 30d | 2016-06-12 A | 2016-07-18 | RM-DF-008 | 75% | 7.5d | 2016-04-06 | 2016-05-18 | 105d | 0d | ATL522 - Engineering Submission (5x9) | Preparation and Submission Material [14 h] |
| B9-UPCB-MS200 |  | Preparation and Submission of Tiles | 30d | 2016-06-12 A | 2016-07-27 | RM-DF-008 | 50% | 15d | 2016-04-06 | 2016-05-18 | 38d | 0d | ATL522 - Engineering Submission (5x9) | Preparation and Submission Material [14 h] |
| B9-UPCB-MS210 |  | Preparation and Submission of Ceiling System | 30d | 2016-06-12 A | 2016-07-14 | RM-DF-008 | 80% | 6d | 2016-04-06 | 2016-05-18 | 39d | 0d | ATL522 - Engineering Submission (5x9) | Preparation and Submission Material [14 h] |
| B9-UPCB-MA210 |  | Review & Approval of Ceiling System | 21d | 2016-07-15 | 2016-08-04 | B9-UPCB-MS210 |  |  |  |  | 55d | 4.1d | ATL522 - Engineering Approval (7x9) | Eng Clinet Approval [14 h] |
| B9-UPCB-MA200 |  | Review & Approval of Tiles | 21d | 2016-07-28 | 2016-08-17 | B9-UPCB-MS200 |  |  |  |  | 55d | 3.2d | ATL522 - Engineering Approval (7x9) | Eng Clinet Approval [14 h] |

| ID | WBS | Activity | Duration | Start | Finish | Predecessors | Complete | Remaining | Planned start | Planned finish | Total float | Free float | Calendar | Resources |
| --- | --- | --- | --- | --- | --- | --- | --- | --- | --- | --- | --- | --- | --- | --- |
|  | 9 | **Material Process Bill 10-UP-RETAIL** |  | 2016-04-04 | 2016-08-17 |  |  |  |  |  |  |  |  |  |
| B10-UPRT-MS140 |  | Preparation and Submission of Paint | 30d | 2016-04-04 A | 2016-07-18 | RM-DF-009 | 75% | 7.5d | 2016-04-06 | 2016-05-18 | 55d | 0d | ATL522 - Engineering Submission (5x9) | Preparation and Submission Material [14 h] |
| B10-UPRT-MS150 |  | Preparation and Submission of Glass | 30d | 2016-04-04 A | 2016-07-18 | RM-DF-009 | 75% | 7.5d | 2016-04-06 | 2016-05-18 | 70d | 0d | ATL522 - Engineering Submission (5x9) | Preparation and Submission Material [14 h] |
| B10-UPRT-MA140 |  | Review & Approval of Paint | 21d | 2016-05-16 A | 2016-07-28 | B10-UPRT-MS140 | 50% | 10.5d | 2016-05-19 | 2016-06-08 | 79d | 0d | ATL522 - Engineering Approval (7x9) | Eng Clinet Approval [14 h] |
| B10-UPRT-MA150 |  | Review & Approval of Glass | 21d | 2016-06-01 A | 2016-07-28 | B10-UPRT-MS150 | 50% | 10.5d | 2016-05-19 | 2016-06-08 | 100d | 17.6d | ATL522 - Engineering Approval (7x9) | Eng Clinet Approval [14 h] |
| B10-UPRT-MS180 |  | Preparation and Submission of Tiles | 30d | 2016-06-12 A | 2016-07-27 | RM-DF-009 | 50% | 15d | 2016-04-06 | 2016-05-18 | 33d | 0d | ATL522 - Engineering Submission (5x9) | Preparation and Submission Material [14 h] |
| B10-UPRT-MA180 |  | Review & Approval of Tiles | 21d | 2016-07-28 | 2016-08-17 | B10-UPRT-MS180 |  |  |  |  | 49d | 0d | ATL522 - Engineering Approval (7x9) | Eng Clinet Approval [14 h] |
|  | 10 | **Material Process Bill 11-UP-REST ROOMS** |  | 2016-04-04 | 2016-09-04 |  |  |  |  |  |  |  |  |  |
| B11-UPRR-MS110 |  | Preparation and Submission of Veneer | 30d | 2016-04-04 A | 2016-07-27 | RM-DF-010 | 50% | 15d | 2016-04-06 | 2016-05-18 | 37.5d | 0d | ATL522 - Engineering Submission (5x9) | Preparation and Submission Material [14 h] |
| B11-UPRR-MS150 |  | Preparation and Submission of Glass | 30d | 2016-04-04 A | 2016-07-18 | RM-DF-010 | 75% | 7.5d | 2016-04-06 | 2016-05-18 | 71d | 0d | ATL522 - Engineering Submission (5x9) | Preparation and Submission Material [14 h] |
| B11-UPRR-MS170 |  | Preparation and Submission of Metal | 30d | 2016-04-04 A | 2016-07-27 | RM-DF-010 | 50% | 15d | 2016-04-06 | 2016-05-18 | 40.3d | 0d | ATL522 - Engineering Submission (5x9) | Preparation and Submission Material [14 h] |
| B11-UPRR-MS190 |  | Preparation and Submission of Wall Covering | 30d | 2016-04-04 A | 2016-07-27 | RM-DF-010 | 50% | 15d | 2016-04-06 | 2016-05-18 | 36.1d | 0d | ATL522 - Engineering Submission (5x9) | Preparation and Submission Material [14 h] |
| B11-UPRR-MS200 |  | Preparation and Submission of Ceiling System | 30d | 2016-04-04 A | 2016-07-14 | RM-DF-010 | 80% | 6d | 2016-04-06 | 2016-05-18 | 10d | 0d | ATL522 - Engineering Submission (5x9) | Preparation and Submission Material [14 h] |
| B11-UPRR-MS280 |  | Preparation and Submission of Doors , Ironmongery and Hardware | 30d | 2016-04-04 A | 2016-07-27 | RM-DF-010 | 50% | 15d | 2016-04-06 | 2016-05-18 | 79.1d | 0d | ATL522 - Engineering Submission (5x9) | Preparation and Submission Material [14 h] |
| B11-UPRR-MS290 |  | Preparation and Submission of Sanitary Ware , Fitttings and Accessories | 30d | 2016-04-04 A | 2016-08-14 | RM-DF-010 | 10% | 27d | 2016-04-06 | 2016-05-18 | 40d | 0d | ATL522 - Engineering Submission (5x9) | Preparation and Submission Material [14 h] |
| B11-UPRR-MA110 |  | Review & Approval of Veneer | 21d | 2016-05-16 A | 2016-08-07 | B11-UPRR-MS110 | 50% | 10.5d | 2016-05-19 | 2016-06-08 | 53.5d | 24.5d | ATL522 - Engineering Approval (7x9) | Eng Clinet Approval [14 h] |
| B11-UPRR-MA150 |  | Review & Approval of Glass | 21d | 2016-05-16 A | 2016-07-28 | B11-UPRR-MS150 | 50% | 10.5d | 2016-05-19 | 2016-06-08 | 101d | 0.3d | ATL522 - Engineering Approval (7x9) | Eng Clinet Approval [14 h] |
| B11-UPRR-MA170 |  | Review & Approval of Metal | 21d | 2016-05-16 A | 2016-08-11 | B11-UPRR-MS170 | 30% | 14.7d | 2016-05-19 | 2016-06-08 | 58.3d | 0d | ATL522 - Engineering Approval (7x9) | Eng Clinet Approval [14 h] |
| B11-UPRR-MA190 |  | Review & Approval of Wall Covering | 21d | 2016-05-16 A | 2016-08-15 | B11-UPRR-MS190 | 10% | 18.9d | 2016-05-19 | 2016-06-08 | 52.1d | 0d | ATL522 - Engineering Approval (7x9) | Eng Clinet Approval [14 h] |
| B11-UPRR-MA280 |  | Review & Approval of Doors , Ironmongery and Hardware | 21d | 2016-05-16 A | 2016-08-15 | B11-UPRR-MS280 | 10% | 18.9d | 2016-05-19 | 2016-06-08 | 113.1d | 0d | ATL522 - Engineering Approval (7x9) | Eng Clinet Approval [14 h] |
| B11-UPRR-MA200 |  | Review & Approval of Ceiling System | 21d | 2016-07-15 | 2016-08-04 | B11-UPRR-MS200 |  |  |  |  | 16d | 0d | ATL522 - Engineering Approval (7x9) | Eng Clinet Approval [14 h] |
| B11-UPRR-MA290 |  | Review & Approval of Sanitary Ware , Fitttings and Accessories | 21d | 2016-08-15 | 2016-09-04 | B11-UPRR-MS290 |  |  |  |  | 58d | 0d | ATL522 - Engineering Approval (7x9) | Eng Clinet Approval [14 h] |
|  | 11 | **Material Process Bill 12-UP-PRAYER ROOMS** |  | 2016-04-04 | 2016-08-15 |  |  |  |  |  |  |  |  |  |
| B12-UPPR-MS110 |  | Preparation and Submission of Veneer | 30d | 2016-04-04 A | 2016-07-27 | RM-DF-011 | 50% | 15d | 2016-04-06 | 2016-05-18 | 52d | 0d | ATL522 - Engineering Submission (5x9) | Preparation and Submission Material [14 h] |
| B12-UPPR-MS140 |  | Preparation and Submission of Glass | 30d | 2016-04-04 A | 2016-07-18 | RM-DF-011 | 75% | 7.5d | 2016-04-06 | 2016-05-18 | 138d | 0d | ATL522 - Engineering Submission (5x9) | Preparation and Submission Material [14 h] |
| B12-UPPR-MS170 |  | Preparation and Submission of Wall Covering | 30d | 2016-04-04 A | 2016-07-27 | RM-DF-011 | 50% | 15d | 2016-04-06 | 2016-05-18 | 35.1d | 0d | ATL522 - Engineering Submission (5x9) | Preparation and Submission Material [14 h] |
| B12-UPPR-MS190 |  | Preparation and Submission of Ceiling System | 30d | 2016-04-04 A | 2016-07-14 | RM-DF-011 | 80% | 6d | 2016-04-06 | 2016-05-18 | 15d | 0d | ATL522 - Engineering Submission (5x9) | Preparation and Submission Material [14 h] |
| B12-UPPR-MS210 |  | Preparation and Submission of Carpet | 30d | 2016-04-04 A | 2016-07-11 | RM-DF-011 | 90% | 3d | 2016-04-06 | 2016-05-18 | 81.1d | 0d | ATL522 - Engineering Submission (5x9) | Preparation and Submission Material [14 h] |
| B12-UPPR-MS270 |  | Preparation and Submission of Doors , Ironmongery and Hardware | 30d | 2016-04-04 A | 2016-07-27 | RM-DF-011 | 50% | 15d | 2016-04-06 | 2016-05-18 | 38.1d | 0d | ATL522 - Engineering Submission (5x9) | Preparation and Submission Material [14 h] |
| B12-UPPR-MA110 |  | Review & Approval of Veneer | 21d | 2016-05-16 A | 2016-08-07 | B12-UPPR-MS110 | 50% | 10.5d | 2016-05-19 | 2016-06-08 | 74.5d | 24.5d | ATL522 - Engineering Approval (7x9) | Eng Clinet Approval [14 h] |
| B12-UPPR-MA140 |  | Review & Approval of Glass | 21d | 2016-05-16 A | 2016-07-28 | B12-UPPR-MS140 | 50% | 10.5d | 2016-05-19 | 2016-06-08 | 196d | 148d | ATL522 - Engineering Approval (7x9) | Eng Clinet Approval [14 h] |
| B12-UPPR-MA170 |  | Review & Approval of Wall Covering | 21d | 2016-05-16 A | 2016-08-15 | B12-UPPR-MS170 | 10% | 18.9d | 2016-05-19 | 2016-06-08 | 51.1d | 0d | ATL522 - Engineering Approval (7x9) | Eng Clinet Approval [14 h] |
| B12-UPPR-MA210 |  | Review & Approval of Carpet | 21d | 2016-05-16 A | 2016-07-30 | B12-UPPR-MS210 | 10% | 18.9d | 2016-05-19 | 2016-06-08 | 115.1d | 32.1d | ATL522 - Engineering Approval (7x9) | Eng Clinet Approval [14 h] |
| B12-UPPR-MA270 |  | Review & Approval of Doors , Ironmongery and Hardware | 21d | 2016-05-16 A | 2016-08-15 | B12-UPPR-MS270 | 10% | 18.9d | 2016-05-19 | 2016-06-08 | 56.1d | 0d | ATL522 - Engineering Approval (7x9) | Eng Clinet Approval [14 h] |
| B12-UPPR-MA190 |  | Review & Approval of Ceiling System | 21d | 2016-07-15 | 2016-08-04 | B12-UPPR-MS190 |  |  |  |  | 23d | 4.4d | ATL522 - Engineering Approval (7x9) | Eng Clinet Approval [14 h] |

| ID | WBS | Activity | Duration | Start | Finish | Predecessors | Complete | Remaining | Planned start | Planned finish | Total float | Free float | Calendar | Resources |
| --- | --- | --- | --- | --- | --- | --- | --- | --- | --- | --- | --- | --- | --- | --- |
|  | 12 | **Material Process Bill 13-UP-RESIDENCES LOBBY** |  | 2016-04-04 | 2016-08-11 |  |  |  |  |  |  |  |  |  |
| B13-UPRL-MS110 |  | Preparation and Submission of Veneer | 30d | 2016-04-04 A | 2016-07-27 | RM-DF-012 | 50% | 15d | 2016-04-06 | 2016-05-18 | 47.5d | 0d | ATL522 - Engineering Submission (5x9) | Preparation and Submission Material [14 h] |
| B13-UPRL-MS150 |  | Preparation and Submission of Metal | 30d | 2016-04-04 A | 2016-07-27 | RM-DF-012 | 50% | 15d | 2016-04-06 | 2016-05-18 | 47d | 0d | ATL522 - Engineering Submission (5x9) | Preparation and Submission Material [14 h] |
| B13-UPRL-MS190 |  | Preparation and Submission of Ceiling System | 30d | 2016-04-04 A | 2016-07-14 | RM-DF-012 | 80% | 6d | 2016-04-06 | 2016-05-18 | 15d | 0d | ATL522 - Engineering Submission (5x9) | Preparation and Submission Material [14 h] |
| B13-UPRL-MA110 |  | Review & Approval of Veneer | 21d | 2016-05-16 A | 2016-08-07 | B13-UPRL-MS110 | 50% | 10.5d | 2016-05-19 | 2016-06-08 | 69.5d | 67.05d | ATL522 - Engineering Approval (7x9) | Eng Clinet Approval [14 h] |
| B13-UPRL-MA150 |  | Review & Approval of Metal | 21d | 2016-05-16 A | 2016-08-11 | B13-UPRL-MS150 | 30% | 14.7d | 2016-05-19 | 2016-06-08 | 67.3d | 27.05d | ATL522 - Engineering Approval (7x9) | Eng Clinet Approval [14 h] |
| B13-UPRL-MA190 |  | Review & Approval of Ceiling System | 21d | 2016-07-15 | 2016-08-04 | B13-UPRL-MS190 |  |  |  |  | 23d | 17.85d | ATL522 - Engineering Approval (7x9) | Eng Clinet Approval [14 h] |
|  | 15 | **Material Process Bill 20-UP-COFFEE BAR** |  | 2016-04-04 | 2016-08-07 |  |  |  |  |  |  |  |  |  |
| B20-UPCB-MS110 |  | Preparation and Submission of Veneer | 30d | 2016-04-04 A | 2016-07-27 | RM-DF-015 | 50% | 15d | 2016-04-06 | 2016-05-18 | 86d | 0d | ATL522 - Engineering Submission (5x9) | Preparation and Submission Material [14 h] |
| B20-UPCB-MA110 |  | Review & Approval of Veneer | 21d | 2016-05-16 A | 2016-08-07 | B20-UPCB-MS110 | 50% | 10.5d | 2016-05-19 | 2016-06-08 | 122.5d | 49.5d | ATL522 - Engineering Approval (7x9) | Eng Clinet Approval [14 h] |
|  | 16 | **Material Process Bill 28-LIFT CAR - TOWER A, B & D** |  | 2016-04-04 | 2016-08-30 |  |  |  |  |  |  |  |  |  |
| B28-TsLC-MS110 |  | Preparation and Submission of Veneer | 30d | 2016-04-04 A | 2016-07-27 | RM-DF-016 | 50% | 15d | 2016-04-06 | 2016-05-18 | 74.5d | 0d | ATL522 - Engineering Submission (5x9) | Preparation and Submission Material [14 h] |
| B28-TsLC-MS150 |  | Preparation and Submission of Glass | 30d | 2016-04-04 A | 2016-07-18 | RM-DF-016 | 75% | 7.5d | 2016-04-06 | 2016-05-18 | 88d | 0d | ATL522 - Engineering Submission (5x9) | Preparation and Submission Material [14 h] |
| B28-TsLC-MS160 |  | Preparation and Submission of Metal | 30d | 2016-04-04 A | 2016-07-27 | RM-DF-016 | 50% | 15d | 2016-04-06 | 2016-05-18 | 24.3d | 0d | ATL522 - Engineering Submission (5x9) | Preparation and Submission Material [14 h] |
| B28-TsLC-MS190 |  | Preparation and Submission of Ceiling System | 30d | 2016-04-04 A | 2016-07-14 | RM-DF-016 | 80% | 6d | 2016-04-06 | 2016-05-18 | 20d | 0d | ATL522 - Engineering Submission (5x9) | Preparation and Submission Material [14 h] |
| B28-TsLC-MS230 |  | Preparation and Submission of Streached Printed Panel | 30d | 2016-04-04 A | 2016-08-09 | RM-DF-016 | 20% | 24d | 2016-04-06 | 2016-05-18 | 45d | 0d | ATL522 - Engineering Submission (5x9) | Preparation and Submission Material [14 h] |
| B28-TsLC-MA110 |  | Review & Approval of Veneer | 21d | 2016-05-16 A | 2016-08-07 | B28-TsLC-MS110 | 50% | 10.5d | 2016-05-19 | 2016-06-08 | 106.5d | 98.5d | ATL522 - Engineering Approval (7x9) | Eng Clinet Approval [14 h] |
| B28-TsLC-MA150 |  | Review & Approval of Glass | 21d | 2016-05-16 A | 2016-07-28 | B28-TsLC-MS150 | 50% | 10.5d | 2016-05-19 | 2016-06-08 | 124d | 79d | ATL522 - Engineering Approval (7x9) | Eng Clinet Approval [14 h] |
| B28-TsLC-MA160 |  | Review & Approval of Metal | 21d | 2016-05-16 A | 2016-08-11 | B28-TsLC-MS160 | 30% | 14.7d | 2016-05-19 | 2016-06-08 | 34.3d |  | ATL522 - Engineering Approval (7x9) | Eng Clinet Approval [14 h] |
| B28-TsLC-MA190 |  | Review & Approval of Ceiling System | 21d | 2016-07-15 | 2016-08-04 | B28-TsLC-MS190 |  |  |  |  | 29d | 21d | ATL522 - Engineering Approval (7x9) | Eng Clinet Approval [14 h] |
| B28-TsLC-MA230 |  | Review & Approval of Streached Printed Panel | 21d | 2016-08-10 | 2016-08-30 | B28-TsLC-MS230 |  |  |  |  | 65d | 0d | ATL522 - Engineering Approval (7x9) | Eng Clinet Approval [14 h] |
|  | 17 | **Material Process Bill 29-SPA** |  | 2016-04-04 | 2016-08-25 |  |  |  |  |  |  |  |  |  |
| B29-SPALC-MS110 |  | Preparation and Submission of Veneer | 30d | 2016-04-04 A | 2016-07-27 | RM-DF-017 | 50% | 15d | 2016-04-06 | 2016-05-18 | 65.5d | 0d | ATL522 - Engineering Submission (5x9) | Preparation and Submission Material [14 h] |
| B29-SPALC-MS150 |  | Preparation and Submission of Paint | 30d | 2016-04-04 A | 2016-07-18 | RM-DF-017 | 75% | 7.5d | 2016-04-06 | 2016-05-18 | 54.5d | 0d | ATL522 - Engineering Submission (5x9) | Preparation and Submission Material [14 h] |
| B29-SPALC-MS200 |  | Preparation and Submission of Glass | 30d | 2016-04-04 A | 2016-07-18 | RM-DF-017 | 75% | 7.5d | 2016-04-06 | 2016-05-18 | 80d | 0d | ATL522 - Engineering Submission (5x9) | Preparation and Submission Material [14 h] |
| B29-SPALC-MS220 |  | Preparation and Submission of Metal | 30d | 2016-04-04 A | 2016-07-27 | RM-DF-017 | 50% | 15d | 2016-04-06 | 2016-05-18 | 32.3d | 0d | ATL522 - Engineering Submission (5x9) | Preparation and Submission Material [14 h] |
| B29-SPALC-MS230 |  | Preparation and Submission of Wall Covering | 30d | 2016-04-04 A | 2016-07-27 | RM-DF-017 | 50% | 15d | 2016-04-06 | 2016-05-18 | 64.1d | 0d | ATL522 - Engineering Submission (5x9) | Preparation and Submission Material [14 h] |
| B29-SPALC-MS250 |  | Preparation and Submission of Ceiling System | 30d | 2016-04-04 A | 2016-07-14 | RM-DF-017 | 80% | 6d | 2016-04-06 | 2016-05-18 | 23d | 0d | ATL522 - Engineering Submission (5x9) | Preparation and Submission Material [14 h] |
| B29-SPALC-MS280 |  | Preparation and Submission of Leather and Fabric | 30d | 2016-04-04 A | 2016-07-27 | RM-DF-017 | 50% | 15d | 2016-04-06 | 2016-05-18 | 43d | 0d | ATL522 - Engineering Submission (5x9) | Preparation and Submission Material [14 h] |
| B29-SPALC-MS290 |  | Preparation and Submission of Doors , Ironmongery and Hardware | 30d | 2016-04-04 A | 2016-07-27 | RM-DF-017 | 50% | 15d | 2016-04-06 | 2016-05-18 | 72d | 0d | ATL522 - Engineering Submission (5x9) | Preparation and Submission Material [14 h] |
| B29-SPALC-MA110 |  | Review & Approval of Veneer | 21d | 2016-05-16 A | 2016-08-07 | B29-SPALC-MS110 | 50% | 10.5d | 2016-05-19 | 2016-06-08 | 93.5d | 61.5d | ATL522 - Engineering Approval (7x9) | Eng Clinet Approval [14 h] |
| B29-SPALC-MA150 |  | Review & Approval of Paint | 21d | 2016-05-16 A | 2016-07-28 | B29-SPALC-MS150 | 50% | 10.5d | 2016-05-19 | 2016-06-08 | 77d | 41d | ATL522 - Engineering Approval (7x9) | Eng Clinet Approval [14 h] |
| B29-SPALC-MA200 |  | Review & Approval of Glass | 21d | 2016-05-16 A | 2016-07-28 | B29-SPALC-MS200 | 50% | 10.5d | 2016-05-19 | 2016-06-08 | 114d | 56d | ATL522 - Engineering Approval (7x9) | Eng Clinet Approval [14 h] |
| B29-SPALC-MA220 |  | Review & Approval of Metal | 21d | 2016-05-16 A | 2016-08-11 | B29-SPALC-MS220 | 30% | 14.7d | 2016-05-19 | 2016-06-08 | 46.3d | 27.3d | ATL522 - Engineering Approval (7x9) | Eng Clinet Approval [14 h] |
| B29-SPALC-MA230 |  | Review & Approval of Wall Covering | 21d | 2016-05-16 A | 2016-08-15 | B29-SPALC-MS230 | 10% | 18.9d | 2016-05-19 | 2016-06-08 | 92.1d | 23.1d | ATL522 - Engineering Approval (7x9) | Eng Clinet Approval [14 h] |
| B29-SPALC-MA290 |  | Review & Approval of Doors , Ironmongery and Hardware | 21d | 2016-05-16 A | 2016-08-15 | B29-SPALC-MS290 | 10% | 18.9d | 2016-05-19 | 2016-06-08 | 103.1d | 82.1d | ATL522 - Engineering Approval (7x9) | Eng Clinet Approval [14 h] |
| B29-SPALC-MS240 |  | Preparation and Submission of Tiles | 30d | 2016-06-12 A | 2016-07-27 | RM-DF-017 | 50% | 15d | 2016-04-06 | 2016-05-18 | 37d | 0d | ATL522 - Engineering Submission (5x9) | Preparation and Submission Material [14 h] |
| B29-SPALC-MS270 |  | Preparation and Submission of Stone | 30d | 2016-06-12 A | 2016-08-04 | RM-DF-017 | 30% | 21d | 2016-04-06 | 2016-05-18 | 31d | 0d | ATL522 - Engineering Submission (5x9) | Preparation and Submission Material [14 h] |
| B29-SPALC-MA250 |  | Review & Approval of Ceiling System | 21d | 2016-07-15 | 2016-08-04 | B29-SPALC-MS250 |  |  |  |  | 33d | 6d | ATL522 - Engineering Approval (7x9) | Eng Clinet Approval [14 h] |
| B29-SPALC-MA240 |  | Review & Approval of Tiles | 21d | 2016-07-28 | 2016-08-17 | B29-SPALC-MS240 |  |  |  |  | 53d | 7d | ATL522 - Engineering Approval (7x9) | Eng Clinet Approval [14 h] |
| B29-SPALC-MA280 |  | Review & Approval of Leather and Fabric | 21d | 2016-07-28 | 2016-08-17 | B29-SPALC-MS280 |  |  |  |  | 61d | 51d | ATL522 - Engineering Approval (7x9) | Eng Clinet Approval [14 h] |
| B29-SPALC-MA270 |  | Review & Approval of Stone | 21d | 2016-08-05 | 2016-08-25 | B29-SPALC-MS270 |  |  |  |  | 45d | 0d | ATL522 - Engineering Approval (7x9) | Eng Clinet Approval [14 h] |

| ID | WBS | Activity | Duration | Start | Finish | Predecessors | Complete | Remaining | Planned start | Planned finish | Total float | Free float | Calendar | Resources |
| --- | --- | --- | --- | --- | --- | --- | --- | --- | --- | --- | --- | --- | --- | --- |
|  | 22 | **Material Process Bill 34-UP-SPEAK EASY BAR** |  | 2016-04-04 | 2016-08-25 |  |  |  |  |  |  |  |  |  |
| B34-UPSEB-MS150 |  | Preparation and Submission of Veneer | 30d | 2016-04-04 A | 2016-07-27 | RM-DF-020 | 50% | 15d | 2016-04-06 | 2016-05-18 | 42.5d | 0d | ATL522 - Engineering Submission (5x9) | Preparation and Submission Material [14 h] |
| B34-UPSEB-MS200 |  | Preparation and Submission of Solid Wood | 30d | 2016-04-04 A | 2016-07-27 | RM-DF-020 | 50% | 15d | 2016-04-06 | 2016-05-18 | 41.1d | 0d | ATL522 - Engineering Submission (5x9) | Preparation and Submission Material [14 h] |
| B34-UPSEB-MS220 |  | Preparation and Submission of Paint | 30d | 2016-04-04 A | 2016-07-18 | RM-DF-020 | 75% | 7.5d | 2016-04-06 | 2016-05-18 | 36d | 0d | ATL522 - Engineering Submission (5x9) | Preparation and Submission Material [14 h] |
| B34-UPSEB-MS230 |  | Preparation and Submission of Glass | 30d | 2016-04-04 A | 2016-07-18 | RM-DF-020 | 75% | 7.5d | 2016-04-06 | 2016-05-18 | 53d | 0d | ATL522 - Engineering Submission (5x9) | Preparation and Submission Material [14 h] |
| B34-UPSEB-MS240 |  | Preparation and Submission of Metal | 30d | 2016-04-04 A | 2016-07-27 | RM-DF-020 | 50% | 15d | 2016-04-06 | 2016-05-18 | 22.3d | 0d | ATL522 - Engineering Submission (5x9) | Preparation and Submission Material [14 h] |
| B34-UPSEB-MS250 |  | Preparation and Submission of Wall Covering | 30d | 2016-04-04 A | 2016-07-27 | RM-DF-020 | 50% | 15d | 2016-04-06 | 2016-05-18 | 64.1d | 0d | ATL522 - Engineering Submission (5x9) | Preparation and Submission Material [14 h] |
| B34-UPSEB-MS280 |  | Preparation and Submission of Ceiling System | 30d | 2016-04-04 A | 2016-07-14 | RM-DF-020 | 80% | 6d | 2016-04-06 | 2016-05-18 | 10d | 0d | ATL522 - Engineering Submission (5x9) | Preparation and Submission Material [14 h] |
| B34-UPSEB-MS300 |  | Preparation and Submission of Leather and Fabric | 30d | 2016-04-04 A | 2016-07-27 | RM-DF-020 | 50% | 15d | 2016-04-06 | 2016-05-18 | 71.1d | 0d | ATL522 - Engineering Submission (5x9) | Preparation and Submission Material [14 h] |
| B34-UPSEB-MS310 |  | Preparation and Submission of Doors , Ironmongery and Hardware | 30d | 2016-04-04 A | 2016-07-27 | RM-DF-020 | 50% | 15d | 2016-04-06 | 2016-05-18 | 79.1d | 0d | ATL522 - Engineering Submission (5x9) | Preparation and Submission Material [14 h] |
| B34-UPSEB-MA150 |  | Review & Approval of Veneer | 21d | 2016-05-16 A | 2016-08-07 | B34-UPSEB-MS150 | 50% | 10.5d | 2016-05-19 | 2016-06-08 | 60.5d | 39.9d | ATL522 - Engineering Approval (7x9) | Eng Clinet Approval [14 h] |
| B34-UPSEB-MA200 |  | Review & Approval of Solid Wood | 21d | 2016-05-16 A | 2016-08-15 | B34-UPSEB-MS200 | 10% | 18.9d | 2016-05-19 | 2016-06-08 | 59.1d | 16.1d | ATL522 - Engineering Approval (7x9) | Eng Clinet Approval [14 h] |
| B34-UPSEB-MA220 |  | Review & Approval of Paint | 21d | 2016-05-16 A | 2016-07-28 | B34-UPSEB-MS220 | 50% | 10.5d | 2016-05-19 | 2016-06-08 | 50d | 0d | ATL522 - Engineering Approval (7x9) | Eng Clinet Approval [14 h] |
| B34-UPSEB-MA230 |  | Review & Approval of Glass | 21d | 2016-05-16 A | 2016-07-28 | B34-UPSEB-MS230 | 50% | 10.5d | 2016-05-19 | 2016-06-08 | 75d | 0d | ATL522 - Engineering Approval (7x9) | Eng Clinet Approval [14 h] |
| B34-UPSEB-MA240 |  | Review & Approval of Metal | 21d | 2016-05-16 A | 2016-08-11 | B34-UPSEB-MS240 | 30% | 14.7d | 2016-05-19 | 2016-06-08 | 32.3d | 0d | ATL522 - Engineering Approval (7x9) | Eng Clinet Approval [14 h] |
| B34-UPSEB-MA250 |  | Review & Approval of Wall Covering | 21d | 2016-05-16 A | 2016-08-15 | B34-UPSEB-MS250 | 10% | 18.9d | 2016-05-19 | 2016-06-08 | 92.1d | 0d | ATL522 - Engineering Approval (7x9) | Eng Clinet Approval [14 h] |
| B34-UPSEB-MA300 |  | Review & Approval of Leather and Fabric | 21d | 2016-05-16 A | 2016-08-15 | B34-UPSEB-MS300 | 10% | 18.9d | 2016-05-19 | 2016-06-08 | 101.1d | 0d | ATL522 - Engineering Approval (7x9) | Eng Clinet Approval [14 h] |
| B34-UPSEB-MA310 |  | Review & Approval of Doors , Ironmongery and Hardware | 21d | 2016-05-16 A | 2016-08-15 | B34-UPSEB-MS310 | 10% | 18.9d | 2016-05-19 | 2016-06-08 | 113.1d | 37.6d | ATL522 - Engineering Approval (7x9) | Eng Clinet Approval [14 h] |
| B34-UPSEB-MS270 |  | Preparation and Submission of Tiles | 30d | 2016-06-12 A | 2016-07-27 | RM-DF-020 | 50% | 15d | 2016-04-06 | 2016-05-18 | 47d | 0d | ATL522 - Engineering Submission (5x9) | Preparation and Submission Material [14 h] |
| B34-UPSEB-MS290 |  | Preparation and Submission of Stone | 30d | 2016-06-12 A | 2016-08-04 | RM-DF-020 | 30% | 21d | 2016-04-06 | 2016-05-18 | 9d | 0d | ATL522 - Engineering Submission (5x9) | Preparation and Submission Material [14 h] |
| B34-UPSEB-MA280 |  | Review & Approval of Ceiling System | 21d | 2016-07-15 | 2016-08-04 | B34-UPSEB-MS280 |  |  |  |  | 14d | 4.4d | ATL522 - Engineering Approval (7x9) | Eng Clinet Approval [14 h] |
| B34-UPSEB-MA270 |  | Review & Approval of Tiles | 21d | 2016-07-28 | 2016-08-17 | B34-UPSEB-MS270 |  |  |  |  | 67d | 0d | ATL522 - Engineering Approval (7x9) | Eng Clinet Approval [14 h] |
| B34-UPSEB-MA290 |  | Review & Approval of Stone | 21d | 2016-08-05 | 2016-08-25 | B34-UPSEB-MS290 |  |  |  |  | 13d | 0d | ATL522 - Engineering Approval (7x9) | Eng Clinet Approval [14 h] |
|  | 20 | **Material Process Bill 35-LIFT CAR - TOWER C** |  | 2016-04-04 | 2016-08-08 |  |  |  |  |  |  |  |  |  |
| B35-TCSR-MS150 |  | Preparation and Submission of Metal | 30d | 2016-04-04 A | 2016-07-24 | RM-DF-021 | 50% | 15d | 2016-04-06 | 2016-05-11 | 52.3d | 0d |  | Preparation and Submission Material [14 h] |
| B35-TCSR-MS190 |  | Preparation and Submission of Ceiling System | 30d | 2016-04-04 A | 2016-07-13 | RM-DF-021 | 80% | 6d | 2016-04-06 | 2016-05-11 | 43d | 0d |  | Preparation and Submission Material [14 h] |
| B35-TCSR-MA150 |  | Review & Approval of Metal | 21d | 2016-05-09 A | 2016-08-08 | B35-TCSR-MS150 | 30% | 14.7d | 2016-05-12 | 2016-06-01 | 61.3d | 59.3d | ATL522 - Engineering Approval (7x9) | Eng Clinet Approval [14 h] |
| B35-TCSR-MA190 |  | Review & Approval of Ceiling System | 21d | 2016-07-14 | 2016-08-03 | B35-TCSR-MS190 |  |  |  |  | 51d | 22d | ATL522 - Engineering Approval (7x9) | Eng Clinet Approval [14 h] |

| ID | WBS | Activity | Duration | Start | Finish | Predecessors | Complete | Remaining | Planned start | Planned finish | Total float | Free float | Calendar | Resources |
| --- | --- | --- | --- | --- | --- | --- | --- | --- | --- | --- | --- | --- | --- | --- |
|  | 21 | **Material Process Bill 39-LG- LIFT LOBBY** |  | 2016-04-04 | 2016-08-08 |  |  |  |  |  |  |  |  |  |
| B39-LGLL-MS110 |  | Preparation and Submission of Veneer | 30d | 2016-04-04 A | 2016-07-24 | RM-DF-021 | 50% | 15d | 2016-04-06 | 2016-05-11 | 104.5d | 0d |  | Preparation and Submission Material [14 h] |
| B39-LGLL-MS150 |  | Preparation and Submission of Glass | 30d | 2016-04-04 A | 2016-07-16 | RM-DF-021 | 75% | 7.5d | 2016-04-06 | 2016-05-11 | 123d | 0d |  | Preparation and Submission Material [14 h] |
| B39-LGLL-MS160 |  | Preparation and Submission of Metal | 30d | 2016-04-04 A | 2016-07-24 | RM-DF-021 | 50% | 15d | 2016-04-06 | 2016-05-11 | 44.3d | 0d |  | Preparation and Submission Material [14 h] |
| B39-LGLL-MS190 |  | Preparation and Submission of Ceiling System | 30d | 2016-04-04 A | 2016-07-13 | RM-DF-021 | 80% | 6d | 2016-04-06 | 2016-05-11 | 30d | 0d |  | Preparation and Submission Material [14 h] |
| B39-LGLL-MA110 |  | Review & Approval of Veneer | 21d | 2016-05-09 A | 2016-08-04 | B39-LGLL-MS110 | 50% | 10.5d | 2016-05-12 | 2016-06-01 | 122.5d | 112.5d | ATL522 - Engineering Approval (7x9) | Eng Clinet Approval [14 h] |
| B39-LGLL-MA150 |  | Review & Approval of Glass | 21d | 2016-05-09 A | 2016-07-26 | B39-LGLL-MS150 | 50% | 10.5d | 2016-05-12 | 2016-06-01 | 144d | 133.67d | ATL522 - Engineering Approval (7x9) | Eng Clinet Approval [14 h] |
| B39-LGLL-MA160 |  | Review & Approval of Metal | 21d | 2016-05-09 A | 2016-08-08 | B39-LGLL-MS160 | 30% | 14.7d | 2016-05-12 | 2016-06-01 | 52.3d | 48.3d | ATL522 - Engineering Approval (7x9) | Eng Clinet Approval [14 h] |
| B39-LGLL-MA190 |  | Review & Approval of Ceiling System | 21d | 2016-07-14 | 2016-08-03 | B39-LGLL-MS190 |  |  |  |  | 35d | 22d | ATL522 - Engineering Approval (7x9) | Eng Clinet Approval [14 h] |
|  | 4 | **Procurement Phase** |  | 2016-07-23 | 2017-01-17 |  |  |  |  |  |  |  |  |  |
|  | 1 | **Procurement Process Bill 2 UP-HOTEL LOBBY** |  | 2016-08-15 | 2016-12-01 |  |  |  |  |  |  |  |  |  |
| B2-UPHL-PR120 |  | Fabrication and Delivery of Paint | 56d | 2016-08-15 | 2016-10-14 | B2-UPHL-MA150, KD03, B2-UPHL-SDA190 |  |  |  |  | 38.77d | 37.77d | ATL522 - Local Procurment (7x24) | Procurement [28 h] |
| B2-UPHL-PR130 |  | Fabrication and Delivery of Glass | 56d | 2016-08-15 | 2016-10-14 | B2-UPHL-MA160, KD03, B2-UPHL-SDA190, B2-UPHL-SDA220 |  |  |  |  | 86.77d | 65.77d | ATL522 - Local Procurment (7x24) | Procurement [35 h] |
| B2-UPHL-PR140 |  | Fabrication and Delivery of Metal | 77d | 2016-08-15 | 2016-11-04 | B2-UPHL-MA200, KD03, B2-UPHL-SDA190 |  |  |  |  | 41.77d | 19.78d | ATL522 - Local Procurment (7x24) | Procurement [49 h] |
| B2-UPHL-PR170 |  | Fabrication and Delivery of Tiles | 70d | 2016-08-17 | 2016-10-30 | B2-UPHL-MA210, KD03, B2-UPHL-SDA180, B2-UPHL-SDA190 |  |  |  |  | 2.62d | 1.62d | ATL522 - Local Procurment (7x24) | Procurement [56 h] |
| B2-UPHL-PR180 |  | Fabrication and Delivery of Ceiling System | 35d | 2016-08-23 | 2016-09-30 | B2-UPHL-MA220, KD03, B2-UPHL-SDA170 |  |  |  |  | 7.66d | 3.66d | ATL522 - Local Procurment (7x24) | Procurement [28 h] |
| B2-UPHL-PR190 |  | Fabrication and Delivery of Stone | 63d | 2016-08-25 | 2016-10-31 | B2-UPHL-MA230, KD03, B2-UPHL-SDA180 |  |  |  |  | 1.62d | 0.62d | ATL522 - Local Procurment (7x24) | Procurement [56 h] |
| B2-UPHL-PR100 |  | Fabrication and Delivery of Veneer Works - Joinery | 42d | 2016-09-22 | 2016-11-04 | B2-UPHL-MA110, KD03, B2-UPHL-SDA200, B2-UPHL-SDA220, B2-UPHL-SDA230 |  |  |  |  | 49.7d | 19.7d | ATL522 - EU Procurment (7x24) | Procurement [84 h] |
| B2-UPHL-PR260 |  | Fabrication and Delivery of Doors , Ironmongery and Hardware | 49d | 2016-10-12 | 2016-12-01 | B2-UPHL-MA270, KD03, B2-UPHL-SDA220, B2-UPHL-SDA210 |  |  |  |  | 53.85d | 10.85d | ATL522 - Local Procurment (7x24) | Procurement [42 h] |
|  | 2 | **Procurement Process Bill 3-UP-HOTEL RECEPTION** |  | 2016-07-28 | 2016-10-31 |  |  |  |  |  |  |  |  |  |
| B3-UPHR-PR130 |  | Fabrication and Delivery of Glass | 56d | 2016-07-28 | 2016-09-25 | B3-UPHR-MA150, KD03, B3-UPHR-SDA130, B3-UPHR-SDA150 |  |  |  |  | 56d | 49d | ATL522 - Local Procurment (7x24) | Procurement [35 h] |
| B3-UPHR-PR180 |  | Fabrication and Delivery of Ceiling System | 70d | 2016-08-04 | 2016-10-17 | B3-UPHR-MA190, KD03, B3-UPHR-SDA110 |  |  |  |  | 9.62d | 2.62d | ATL522 - Local Procurment (7x24) | Procurement [28 h] |
| B3-UPHR-PR140 |  | Fabrication and Delivery of Metal | 77d | 2016-08-11 | 2016-10-31 | B3-UPHR-MA160, KD03 |  |  |  |  | 56.74d | 41.74d | ATL522 - Local Procurment (7x24) | Procurement [49 h] |
|  | 3 | **Procurement Process Bill 4-UP-VIP PROTOCOL** |  | 2016-07-23 | 2016-11-10 |  |  |  |  |  |  |  |  |  |
| B4-UPVP-PR110 |  | Fabrication and Delivery of Solid Works - Joinery | 63d | 2016-07-23 | 2016-10-30 | KD03, B4-UPVP-SDA170 |  |  |  |  | 24.7d | 0d | ATL522 - EU Procurment (7x24) | Procurement [84 h] |
| B4-UPVP-PR180 |  | Fabrication and Delivery of Ceiling System | 42d | 2016-08-04 | 2016-09-18 | B4-UPVP-MA190, KD03, B4-UPVP-SDA140 |  |  |  |  | 29d | 2d | ATL522 - Local Procurment (7x24) | Procurement [28 h] |
| B4-UPVP-PR100 |  | Fabrication and Delivery of Veneer Works - Joinery | 63d | 2016-09-01 | 2016-11-07 | B4-UPVP-MA110, KD03, B4-UPVP-SDA190, B4-UPVP-SDA210 |  |  |  |  | 49.69d | 25.61d | ATL522 - EU Procurment (7x24) | Procurement [84 h] |
| B4-UPVP-PR130 |  | Fabrication and Delivery of Glass | 56d | 2016-09-14 | 2016-11-10 | B4-UPVP-MA140, KD03, B4-UPVP-SDA180, B4-UPVP-SDA200 |  |  |  |  | 46.81d | 22.11d | ATL522 - Local Procurment (7x24) | Procurement [35 h] |
| B4-UPVP-PR160 |  | Fabrication and Delivery of Wall Covering | 49d | 2016-09-14 | 2016-11-03 | B4-UPVP-MA170, KD03, B4-UPVP-SDA180, B4-UPVP-SDA200 |  |  |  |  | 62.81d | 12.11d | ATL522 - Local Procurment (7x24) | Procurement [35 h] |
| B4-UPVP-PR260 |  | Fabrication and Delivery of Doors , Ironmongery and Hardware | 49d | 2016-09-14 | 2016-11-03 | B4-UPVP-MA270, KD03, B4-UPVP-SDA180, B4-UPVP-SDA200 |  |  |  |  | 62.81d | 35.81d | ATL522 - Local Procurment (7x24) | Procurement [42 h] |

| ID | WBS | Activity | Duration | Start | Finish | Predecessors | Total float | Free float | Calendar | Resources |
| --- | --- | --- | --- | --- | --- | --- | --- | --- | --- | --- |
|  | 4 | **Procurement Process Bill 5-UP-SAFE DEPOSIT** |  | 2016-08-04 | 2016-11-07 |  |  |  |  |  |
| B5-UPSD-PR180 |  | Fabrication and Delivery of Ceiling System | 63d | 2016-08-04 | 2016-10-10 | B5-UPSD-MA190, KD03, B5-UPSD-SDA170 FS-18.67d | 6d | 5d | ATL522 - Local Procurment (7x24) | Procurement [28 h] |
| B5-UPSD-PR260 |  | Fabrication and Delivery of Doors , Ironmongery and Hardware | 49d | 2016-08-30 | 2016-10-22 | B5-UPSD-MA270, KD03, B5-UPSD-SDA210 | 78.96d | 50.96d | ATL522 - Local Procurment (7x24) | Procurement [42 h] |
| B5-UPSD-PR100 |  | Fabrication and Delivery of Veneer Works - Joinery | 63d | 2016-09-01 | 2016-11-07 | B5-UPSD-MA110, KD03, B5-UPSD-SDA200, B5-UPSD-SDA220 FF+18.67d, B5-UPSD-SDA190, B5-UPSD-SDA230 SS | 55.69d | 8.69d | ATL522 - EU Procurment (7x24) | Procurement [84 h] |
|  | 5 | **Procurement Process Bill 6-UP-HOTEL LIFT LOBBY** |  | 2016-08-09 | 2016-11-02 |  |  |  |  |  |
| B6-UPHLL-PR180 |  | Fabrication and Delivery of Ceiling System | 77d | 2016-08-09 | 2016-10-29 | B6-UPHLL-MA190, KD03, B6-UPHLL-SDA110 | 25.85d | 14.85d | ATL522 - Local Procurment (7x24) | Procurement [28 h] |
| B6-UPHLL-PR140 |  | Fabrication and Delivery of Metal | 77d | 2016-08-13 | 2016-11-02 | B6-UPHLL-MA160, KD03, B6-UPHLL-SDA130, B6-UPHLL-SDA170 FF+42d | 52.19d | 41.19d | ATL522 - Local Procurment (7x24) | Procurement [49 h] |
| B6-UPHLL-PR130 |  | Fabrication and Delivery of Glass | 56d | 2016-08-15 | 2016-10-14 | B6-UPHLL-MA150, KD03, B6-UPHLL-SDA130, B6-UPHLL-SDA160 | 90.77d | 78.77d | ATL522 - Local Procurment (7x24) | Procurement [35 h] |
|  | 6 | **Procurement Process Bill 7-UP-RESIDENCE'S LIFT LOBBY** |  | 2016-08-05 | 2016-10-18 |  |  |  |  |  |
| B7-UPRLL-PR180 |  | Fabrication and Delivery of Ceiling System | 70d | 2016-08-05 | 2016-10-18 | KD03, B7-UPRLL-MA190, B7-UPRLL-SDA110, B7-UPRLL-SDA170 FF | 23.04d | 6.04d | ATL522 - Local Procurment (7x24) | Procurement [28 h] |
|  | 7 | **Procurement Process Bill 8-UP-FRONT OFFICE** |  | 2016-08-04 | 2016-11-21 |  |  |  |  |  |
| B8-UPFO-PR180 |  | Fabrication and Delivery of Ceiling System | 49d | 2016-08-04 | 2016-09-25 | B8-UPFO-MA190, KD03, B8-UPFO-SDA170 | 18.62d | 1.62d | ATL522 - Local Procurment (7x24) | Procurement [28 h] |
| B8-UPFO-PR260 |  | Fabrication and Delivery of Doors , Ironmongery and Hardware | 49d | 2016-08-23 | 2016-10-15 | B8-UPFO-MA270, KD03, B8-UPFO-SDA210, B8-UPFO-SDA220 | 58.93d | 42.93d | ATL522 - Local Procurment (7x24) | Procurement [42 h] |
| B8-UPFO-PR100 |  | Fabrication and Delivery of Veneer Works - Joinery | 77d | 2016-09-01 | 2016-11-21 | B8-UPFO-MA110, KD03, B8-UPFO-SDA190, B8-UPFO-SDA200, B8-UPFO-SDA220 FF+18.67d, B8-UPFO-SDA230 | 57.69d | 22.69d | ATL522 - EU Procurment (7x24) | Procurement [84 h] |
| B8-UPFO-PR200 |  | Fabrication and Delivery of Carpet | 63d | 2016-09-01 | 2016-11-07 | B8-UPFO-MA210, KD03, B8-UPFO-SDA180 | 80.31d | 63.31d | ATL522 - EU Procurment (7x24) | Procurement [56 h] |
|  | 8 | **Procurement Process Bill 9-UP-CHOCOLATE BOUTIQUE** |  | 2016-08-09 | 2016-12-05 |  |  |  |  |  |
| B9-UPCB-PR180 |  | Fabrication and Delivery of Ceiling System | 28d | 2016-08-09 | 2016-09-06 | B9-UPCB-MA210, KD03, B9-UPCB-SDA160 | 50.96d | 3.96d | ATL522 - Local Procurment (7x24) | Procurement [28 h] |
| B9-UPCB-PR170 |  | Fabrication and Delivery of Tiles | 49d | 2016-08-21 | 2016-10-13 | B9-UPCB-MA200, KD03, B9-UPCB-SDA170 | 51.93d | 0d | ATL522 - Local Procurment (7x24) | Procurement [56 h] |
| B9-UPCB-PR120 |  | Fabrication and Delivery of Paint | 56d | 2016-08-31 | 2016-10-30 | B9-UPCB-MA150, KD03, B9-UPCB-SDA180 | 57.89d | 54d | ATL522 - Local Procurment (7x24) | Procurement [28 h] |
| B9-UPCB-PR140 |  | Fabrication and Delivery of Metal | 77d | 2016-08-31 | 2016-11-20 | B9-UPCB-MA190, KD03, B9-UPCB-SDA180 | 3.89d | 0d | ATL522 - Local Procurment (7x24) | Procurement [49 h] |
| B9-UPCB-PR100 |  | Fabrication and Delivery of Veneer Works - Joinery | 56d | 2016-09-30 | 2016-11-26 | B9-UPCB-MA110, KD03, B9-UPCB-SDA190, B9-UPCB-SDA210 | 50.93d | 30.04d | ATL522 - EU Procurment (7x24) | Procurement [84 h] |
| B9-UPCB-PR130 |  | Fabrication and Delivery of Glass | 35d | 2016-10-30 | 2016-12-05 | B9-UPCB-MA160, KD03, B9-UPCB-SDA180, B9-UPCB-SDA200 | 59.96d | 39.07d | ATL522 - Local Procurment (7x24) | Procurement [35 h] |
|  | 9 | **Procurement Process Bill 10-UP-RETAIL** |  | 2016-07-28 | 2016-10-16 |  |  |  |  |  |
| B10-UPRT-PR120 |  | Fabrication and Delivery of Paint | 56d | 2016-07-28 | 2016-09-25 | KD03, B10-UPRT-MA140, B10-UPRT-SDA130 SS | 79d | 66d | ATL522 - Local Procurment (7x24) | Procurement [28 h] |
| B10-UPRT-PR130 |  | Fabrication and Delivery of Glass | 56d | 2016-08-15 | 2016-10-14 | KD03, B10-UPRT-MA150, B10-UPRT-SDA130, B10-UPRT-SDA160 SS, B10-UPRT-SDA110 | 82.77d | 43.77d | ATL522 - Local Procurment (7x24) | Procurement [35 h] |
| B10-UPRT-PR170 |  | Fabrication and Delivery of Tiles | 56d | 2016-08-17 | 2016-10-16 | KD03, B10-UPRT-MA180, B10-UPRT-SDS110, RM-DF-009 | 49d | 36d | ATL522 - Local Procurment (7x24) | Procurement [56 h] |

| ID | WBS | Activity | Duration | Start | Finish | Predecessors | Total float | Free float | Calendar | Resources |
| --- | --- | --- | --- | --- | --- | --- | --- | --- | --- | --- |
|  | 10 | **Procurement Process Bill 11-UP-REST ROOMS** |  | 2016-07-29 | 2016-12-02 |  |  |  |  |  |
| B11-UPRR-PR130 |  | Fabrication and Delivery of Glass | 56d | 2016-07-29 | 2016-09-26 | KD03, B11-UPRR-MA150, B11-UPRER-SDA160, B11-UPRER-SDA190 | 100.89d | 88.89d | ATL522 - Local Procurment (7x24) | Procurement [35 h] |
| B11-UPRR-PR180 |  | Fabrication and Delivery of Ceiling System | 49d | 2016-08-04 | 2016-09-25 | KD03, B11-UPRR-MA200, B11-UPRER-SDA110 | 16.62d | 5.62d | ATL522 - Local Procurment (7x24) | Procurement [28 h] |
| B11-UPRR-PR140 |  | Fabrication and Delivery of Metal | 77d | 2016-08-11 | 2016-10-31 | KD03, B11-UPRR-MA170, B11-UPRER-SDA160 | 58.74d | 46.74d | ATL522 - Local Procurment (7x24) | Procurement [49 h] |
| B11-UPRR-PR160 |  | Fabrication and Delivery of Wall Covering | 70d | 2016-08-15 | 2016-10-28 | KD03, B11-UPRR-MA190 | 52.66d | 41.66d | ATL522 - Local Procurment (7x24) | Procurement [35 h] |
| B11-UPRR-PR260 |  | Fabrication and Delivery of Doors , Ironmongery and Hardware | 49d | 2016-08-15 | 2016-10-07 | KD03, B11-UPRR-MA280, B11-UPRER-SDA180 | 113.66d | 94.66d | ATL522 - Local Procurment (7x24) | Procurement [42 h] |
| B11-UPRR-PR100 |  | Fabrication and Delivery of Veneer Works - Joinery | 70d | 2016-09-01 | 2016-11-14 | KD03, B11-UPRR-MA110, B11-UPRER-SDA170, B11-UPRER-SDA190 | 28.69d | 16.69d | ATL522 - EU Procurment (7x24) | Procurement [84 h] |
| B11-UPRR-PR270 |  | Fabrication and Delivery of Sanitary Ware , Fitttings and Accessories | 84d | 2016-09-04 | 2016-12-02 | KD03, B11-UPRR-MA290 | 58.62d | 39.62d | ATL522 - Local Procurment (7x24) | Procurement [77 h] |
|  | 11 | **Procurement Process Bill 12-UP-PRAYER ROOMS** |  | 2016-08-09 | 2016-12-06 |  |  |  |  |  |
| B12-UPPR-PR180 |  | Fabrication and Delivery of Ceiling System | 35d | 2016-08-09 | 2016-09-16 | KD03, B12-UPPR-MA190, B12-UPPR-SDA160 | 18.22d | 5.23d | ATL522 - Local Procurment (7x24) | Procurement [28 h] |
| B12-UPPR-PR160 |  | Fabrication and Delivery of Wall Covering | 70d | 2016-08-15 | 2016-10-28 | KD03, B12-UPPR-MA170, B12-UPPR-SDA180 | 51.66d | 22.66d | ATL522 - Local Procurment (7x24) | Procurement [35 h] |
| B12-UPPR-PR260 |  | Fabrication and Delivery of Doors , Ironmongery and Hardware | 49d | 2016-08-15 | 2016-10-07 | KD03, B12-UPPR-MA270, B12-UPPR-SDA200 | 56.66d | 43.66d | ATL522 - Local Procurment (7x24) | Procurement [42 h] |
| B12-UPPR-PR100 |  | Fabrication and Delivery of Veneer Works - Joinery | 91d | 2016-09-01 | 2016-12-06 | KD03, B12-UPPR-MA110, B12-UPPR-SDA190, B12-UPPR-SDA210 | 49.69d | 36.69d | ATL522 - EU Procurment (7x24) | Procurement [84 h] |
| B12-UPPR-PR200 |  | Fabrication and Delivery of Carpet | 63d | 2016-09-01 | 2016-11-07 | KD03, B12-UPPR-MA210, B12-UPPR-SDA170 | 83.31d | 69.56d | ATL522 - EU Procurment (7x24) | Procurement [56 h] |
|  | 12 | **Procurement Process Bill 13-UP-RESIDENCES LOBBY** |  | 2016-08-22 | 2016-12-21 |  |  |  |  |  |
| B13-UPRL-PR180 |  | Fabrication and Delivery of Ceiling System | 35d | 2016-08-22 | 2016-09-29 | KD03, B13-UPRL-MA190, B13-UPRL-SDA110 | 5.68d | 4.68d | ATL522 - Local Procurment (7x24) | Procurement [28 h] |
| B13-UPRL-PR140 |  | Fabrication and Delivery of Metal | 77d | 2016-09-07 | 2016-11-27 | KD03, B13-UPRL-MA150, B13-UPRL-SDA160 | 40.72d | 39.72d | ATL522 - Local Procurment (7x24) | Procurement [49 h] |
| B13-UPRL-PR100 |  | Fabrication and Delivery of Veneer Works - Joinery | 63d | 2016-10-17 | 2016-12-21 | KD03, B13-UPRL-MA110, B13-UPRL-SDA170, B13-UPRL-SDA190 | 2.79d | 0.79d | ATL522 - EU Procurment (7x24) | Procurement [84 h] |
|  | 15 | **Procurement Process Bill 20-UP-COFFEE BAR** |  | 2016-09-28 | 2016-11-17 |  |  |  |  |  |
| B20-UPCB-PR100 |  | Fabrication and Delivery of Veneer Works - Joinery | 49d | 2016-09-28 | 2016-11-17 | B20-UPCB-MA110, KD03, B20-UPCB-SDA160, B20-UPCB-SDA170, B20-UPCB-SDA180 | 73d | 6d | ATL522 - EU Procurment (7x24) | Procurement [84 h] |
|  | 16 | **Procurement Process Bill 28-LIFT CAR - TOWER A, B & D** |  | 2016-08-25 | 2016-12-31 |  |  |  |  |  |
| B28-TsLC-PR180 |  | Fabrication and Delivery of Ceiling System | 42d | 2016-08-25 | 2016-10-10 | B28-TsLC-MA190, KD03, B28-TsLC-SDA110 | 8.62d | 1.62d | ATL522 - Local Procurment (7x24) | Procurement [28 h] |
| B28-TsLC-PR220 |  | Fabrication and Delivery of Streached Printed Panel | 84d | 2016-08-30 | 2016-11-26 | B28-TsLC-MA230, KD03 | 65.62d | 49.88d | ATL522 - Local Procurment (7x24) | Procurement [56 h] |
| B28-TsLC-PR140 |  | Fabrication and Delivery of Metal | 77d | 2016-09-17 | 2016-12-05 | B28-TsLC-MA160, KD03, B28-TsLC-SDA160 | 0.62d |  | ATL522 - Local Procurment (7x24) | Procurement [49 h] |
| B28-TsLC-PR130 |  | Fabrication and Delivery of Glass | 56d | 2016-10-19 | 2016-12-16 | B28-TsLC-MA150, KD03, B28-TsLC-SDA160, B28-TsLC-SDA180 | 45.62d | 31.88d | ATL522 - Local Procurment (7x24) | Procurement [35 h] |
| B28-TsLC-PR100 |  | Fabrication and Delivery of Veneer Works - Joinery | 42d | 2016-11-17 | 2016-12-31 | B28-TsLC-MA110, KD03, B28-TsLC-SDA170, B28-TsLC-SDA180, B28-TsLC-SDA190 | 8.62d |  | ATL522 - EU Procurment (7x24) | Procurement [84 h] |

| ID | WBS | Activity | Duration | Start | Finish | Predecessors | Total float | Free float | Calendar | Resources |
| --- | --- | --- | --- | --- | --- | --- | --- | --- | --- | --- |
|  | 17 | **Procurement Process Bill 29-SPA** |  | 2016-08-10 | 2016-12-16 |  |  |  |  |  |
| B29-SPALC-PR180 |  | Fabrication and Delivery of Ceiling System | 49d | 2016-08-10 | 2016-10-01 | B29-SPALC-MA250, KD03, B29-SPA-SDA170 | 27.62d | 10.62d | ATL522 - Local Procurment (7x24) | Procurement [28 h] |
| B29-SPALC-PR170 |  | Fabrication and Delivery of Tiles | 77d | 2016-08-24 | 2016-11-13 | B29-SPALC-MA240, KD03, B29-SPA-SDA180 | 46.62d | 13.62d | ATL522 - Local Procurment (7x24) | Procurement [56 h] |
| B29-SPALC-PR190 |  | Fabrication and Delivery of Stone | 77d | 2016-08-25 | 2016-11-14 | B29-SPALC-MA270, KD03, B29-SPA-SDA180 | 45.62d | 12.62d | ATL522 - Local Procurment (7x24) | Procurement [56 h] |
| B29-SPALC-PR120 |  | Fabrication and Delivery of Paint | 56d | 2016-09-07 | 2016-11-06 | B29-SPALC-MA150, KD03, B29-SPA-SDA190 | 36.62d | 20.62d | ATL522 - Local Procurment (7x24) | Procurement [28 h] |
| B29-SPALC-PR140 |  | Fabrication and Delivery of Metal | 77d | 2016-09-07 | 2016-11-27 | B29-SPALC-MA220, KD03, B29-SPA-SDA190 | 19.62d | 2.62d | ATL522 - Local Procurment (7x24) | Procurement [49 h] |
| B29-SPALC-PR160 |  | Fabrication and Delivery of Wall Covering | 70d | 2016-09-07 | 2016-11-20 | B29-SPALC-MA230, KD03, B29-SPA-SDA190 | 69.62d | 55.88d | ATL522 - Local Procurment (7x24) | Procurement [35 h] |
| B29-SPALC-PR130 |  | Fabrication and Delivery of Glass | 56d | 2016-09-25 | 2016-11-21 | B29-SPALC-MA200, KD03, B29-SPA-SDA190, B29-SPA-SDA220 | 58.62d | 40.62d | ATL522 - Local Procurment (7x24) | Procurement [35 h] |
| B29-SPALC-PR100 |  | Fabrication and Delivery of Veneer Works - Joinery | 42d | 2016-10-11 | 2016-11-22 | B29-SPALC-MA110, KD03, B29-SPA-SDA200, B29-SPA-SDA220, B29-SPA-SDA230 | 32.62d | 14.62d | ATL522 - EU Procurment (7x24) | Procurement [84 h] |
| B29-SPALC-PR210 |  | Fabrication and Delivery of Leather and Fabric | 56d | 2016-10-11 | 2016-12-07 | B29-SPALC-MA280, KD03, B29-SPA-SDA200 | 10.62d | 0.62d | ATL522 - EU Procurment (7x24) | Procurement [56 h] |
| B29-SPALC-PR260 |  | Fabrication and Delivery of Doors , Ironmongery and Hardware | 35d | 2016-11-09 | 2016-12-16 | B29-SPALC-MA290, KD03, B29-SPA-SDA210 | 21.62d | 0.62d | ATL522 - Local Procurment (7x24) | Procurement [42 h] |
|  | 22 | **Procurement Process Bill 34-UP-SPEAK EASY BAR** |  | 2016-07-28 | 2016-11-29 |  |  |  |  |  |
| B34-UPSEB-PR120 |  | Fabrication and Delivery of Paint | 56d | 2016-07-28 | 2016-09-25 | B34-UPSEB-MA220, KD03, B34-UPSEB-SDA190 | 50.62d | 41.77d | ATL522 - Local Procurment (7x24) | Procurement [28 h] |
| B34-UPSEB-PR130 |  | Fabrication and Delivery of Glass | 56d | 2016-07-28 | 2016-09-25 | B34-UPSEB-MA230, KD03, B34-UPSEB-SDA190, B34-UPSEB-SDA220 | 75.62d | 66.77d | ATL522 - Local Procurment (7x24) | Procurement [35 h] |
| B34-UPSEB-PR180 |  | Fabrication and Delivery of Ceiling System | 28d | 2016-08-09 | 2016-09-06 | B34-UPSEB-MA280, KD03, B34-UPSEB-SDA170 | 9.85d | 0d | ATL522 - Local Procurment (7x24) | Procurement [28 h] |
| B34-UPSEB-PR140 |  | Fabrication and Delivery of Metal | 77d | 2016-08-11 | 2016-10-31 | B34-UPSEB-MA240, KD03, B34-UPSEB-SDA190 | 32.74d | 9.89d | ATL522 - Local Procurment (7x24) | Procurement [49 h] |
| B34-UPSEB-PR160 |  | Fabrication and Delivery of Wall Covering | 70d | 2016-08-15 | 2016-10-28 | B34-UPSEB-MA250, KD03, B34-UPSEB-SDA190, B34-UPSEB-SDA220 | 92.66d | 75.81d | ATL522 - Local Procurment (7x24) | Procurement [35 h] |
| B34-UPSEB-PR210 |  | Fabrication and Delivery of Leather and Fabric | 77d | 2016-08-15 | 2016-11-04 | B34-UPSEB-MA300, KD03 | 101.04d | 71.91d | ATL522 - Local Procurment (7x24) | Procurement [56 h] |
| B34-UPSEB-PR170 |  | Fabrication and Delivery of Tiles | 77d | 2016-08-17 | 2016-11-06 | B34-UPSEB-MA270, KD03, B34-UPSEB-SDA190 | 67.62d | 41.77d | ATL522 - Local Procurment (7x24) | Procurement [56 h] |
| B34-UPSEB-PR190 |  | Fabrication and Delivery of Stone | 49d | 2016-08-25 | 2016-10-17 | B34-UPSEB-MA290, KD03 | 13.62d | 4.77d | ATL522 - Local Procurment (7x24) | Procurement [56 h] |
| B34-UPSEB-PR110 |  | Fabrication and Delivery of Solid Works - Joinery | 63d | 2016-09-01 | 2016-11-07 | B34-UPSEB-MA200, KD03, B34-UPSEB-SDA180, B34-UPSEB-SDA220 FF+18.67d | 42.69d | 34.46d | ATL522 - EU Procurment (7x24) | Procurement [84 h] |
| B34-UPSEB-PR100 |  | Fabrication and Delivery of Veneer Works - Joinery | 70d | 2016-09-19 | 2016-11-29 | B34-UPSEB-MA150, KD03, B34-UPSEB-SDA200, B34-UPSEB-SDA230 | 20.22d | 12d | ATL522 - EU Procurment (7x24) | Procurement [84 h] |
| B34-UPSEB-PR260 |  | Fabrication and Delivery of Doors , Ironmongery and Hardware | 49d | 2016-09-25 | 2016-11-14 | B34-UPSEB-MA310, KD03, B34-UPSEB-SDA210 | 75.81d | 62.06d | ATL522 - Local Procurment (7x24) | Procurement [42 h] |
|  | 20 | **Procurement Process Bill 35-LIFT CAR - TOWER C** |  | 2016-08-25 | 2016-12-28 |  |  |  |  |  |
| B35-TCSR-PR180 |  | Fabrication and Delivery of Ceiling System | 42d | 2016-08-25 | 2016-10-10 | B35-TCSR-MA190, KD03, B35-TCLC-SDA110 | 29.62d | 2.62d | ATL522 - Local Procurment (7x24) | Procurement [28 h] |
| B35-TCSR-PR140 |  | Fabrication and Delivery of Metal | 77d | 2016-10-10 | 2016-12-28 | B35-TCSR-MA150, KD03, B35-TCLC-SDA150, B35-TCLC-SDA160 | 2.62d | 0.62d | ATL522 - Local Procurment (7x24) | Procurement [49 h] |

| ID | WBS | Activity | Type | Duration | Start | Finish | Predecessors | Complete | Remaining | Planned start | Planned finish | Total float | Free float | Calendar | Resources |
| --- | --- | --- | --- | --- | --- | --- | --- | --- | --- | --- | --- | --- | --- | --- | --- |
|  | 21 | **Procurement Process Bill 39-LG- LIFT LOBBY** |  |  | 2016-08-25 | 2017-01-17 |  |  |  |  |  |  |  |  |  |
| B39-LGLL-PR180 |  | Fabrication and Delivery of Ceiling System |  | 42d | 2016-08-25 | 2016-10-10 | B39-LGLL-MA190, KD03, B39-LGLL-SDA110 |  |  |  |  | 13.62d | 1.62d | ATL522 - Local Procurment (7x24) | Procurement [28 h] |
| B39-LGLL-PR140 |  | Fabrication and Delivery of Metal |  | 77d | 2016-09-28 | 2016-12-17 | B39-LGLL-MA160, KD03, B39-LGLL-SDA160 |  |  |  |  | 4.62d | 0.62d | ATL522 - Local Procurment (7x24) | Procurement [49 h] |
| B39-LGLL-PR100 |  | Fabrication and Delivery of Veneer Works - Joinery |  | 28d | 2016-11-28 | 2016-12-28 | B39-LGLL-MA110, KD03, B39-LGLL-SDA170, B39-LGLL-SDA190 |  |  |  |  | 10.62d | 0.62d | ATL522 - EU Procurment (7x24) | Procurement [84 h] |
| B39-LGLL-PR130 |  | Fabrication and Delivery of Glass |  | 35d | 2016-12-13 | 2017-01-17 | B39-LGLL-MA150, KD03, B39-LGLL-SDA160, B39-LGLL-SDA180 FF+18.67d |  |  |  |  | 10.75d | 0d | ATL522 - Local Procurment (7x24) | Procurement [35 h] |
|  | 5 | **Construction Phase** |  |  | 2016-06-05 | 2017-02-15 |  |  |  |  |  |  |  |  |  |
|  | 0 | **Mobilization** |  |  | 2016-06-05 | 2016-07-17 |  |  |  |  |  |  |  |  |  |
| Con000 |  | Site Mobilization |  | 14d | 2016-06-05 A | 2016-07-17 | RM-SA-000 | 40% | 8.4d | 2016-05-01 | 2016-05-17 | 21.6d | 9.6d |  | Steel [42 M3] |
|  | 1 | **Bill 2 UP-HOTEL LOBBY** |  |  | 2016-08-07 | 2017-02-14 |  |  |  |  |  |  |  |  |  |
| B2-UPHL-1stP001 |  | MEP 1st , 2nd Fix and Wall System | milestone | 0d | 2016-08-07 | 2016-08-07 | RM-SA-001 |  |  |  |  | 3d | 0d |  |  |
| B2-UPHL-C021 |  | Clearance process for Measurements , Framing&Enabling Works |  | 5d | 2016-08-07 | 2016-08-11 | B2-UPHL-1stP001 |  |  |  |  | 3d | 0d |  |  |
| B2-UPHL-C031 |  | Measurements , Framing & Enabling Works |  | 14d | 2016-08-13 | 2016-08-28 | B2-UPHL-C021 |  |  |  |  | 3d | 0d |  | Steel [28 M3] |
| B2-UPHL-C001 |  | Installation of Celling System |  | 21d | 2016-08-29 | 2016-09-25 | B2-UPHL-1stP001, RM-SA-001, Con000, B2-UPHL-C031 |  |  |  |  | 3d | 0d |  | Steel [46 M3] |
| B2-UPHL-2ndP002 |  | MEP Ceiling Closure Clearance |  | 7d | 2016-09-26 | 2016-10-04 | RM-SA-001, B2-UPHL-C001 |  |  |  |  | 3d | 0d |  |  |
| B2-UPHL-C002 |  | Ceiling Closure |  | 21d | 2016-10-05 | 2016-10-29 | B2-UPHL-2ndP002, RM-SA-001, Con000, B2-UPHL-PR180 |  |  |  |  | 3d | 2d |  | Steel [46 M3] |
| B2-UPHL-C003 |  | Installation of Wall Tiling |  | 7d | 2016-11-01 | 2016-11-08 | B2-UPHL-C002, RM-SA-001, Con000, B2-UPHL-PR170, B2-UPHL-PR190 |  |  |  |  | 1d | 0d |  | Steel [16 M3] |
| B2-UPHL-3rdP003 |  | Flooring (by others) |  | 10d | 2016-11-09 | 2016-11-20 | B2-UPHL-C003, RM-SA-001 |  |  |  |  | 1d | 0d |  |  |
| B2-UPHL-C004 |  | 1st Coat of Paint |  | 30d | 2016-11-21 | 2016-12-27 | B2-UPHL-3rdP003, RM-SA-001, Con000, B2-UPHL-PR120 |  |  |  |  | 1d | 0d |  | Steel [41 M3] |
| B2-UPHL-C006 |  | Installation of Wooden wall panelling |  | 14d | 2016-11-23 | 2016-12-10 | B2-UPHL-C004 SS+2d, RM-SA-001, Con000, RM-AC-001 |  |  |  |  | 26d | 8d |  | Steel [70 M3] |
| B2-UPHL-C007 |  | Installation of Metal panelling |  | 14d | 2016-11-24 | 2016-12-12 | B2-UPHL-C004 SS+3d, RM-SA-001, Con000, B2-UPHL-PR140 |  |  |  |  | 18d | 0d |  | Steel [127 M3] |
| B2-UPHL-C008 |  | Installation of Joinery Works |  | 14d | 2016-11-24 | 2016-12-12 | B2-UPHL-C004 SS+3d, RM-SA-001, Con000, B2-UPHL-PR100, RM-AC-001 |  |  |  |  | 25d | 0d |  | Steel [27 M3] |
| B2-UPHL-C005 |  | Installation of Metal Skirting |  | 7d | 2016-12-13 | 2016-12-20 | B2-UPHL-C007, RM-SA-001, Con000, B2-UPHL-PR140 |  |  |  |  | 18d | 0d |  | Steel [2 M3] |
| B2-UPHL-C011 |  | Installation of Doors & Ironmongery |  | 7d | 2016-12-13 | 2016-12-20 | RM-SA-001, Con000, B2-UPHL-PR260, RM-AC-001, B2-UPHL-C008 |  |  |  |  | 37d | 36d |  | Steel [21 M3] |
| B2-UPHL-C009 |  | Installation of Mirror |  | 5d | 2016-12-21 | 2016-12-26 | B2-UPHL-C007, B2-UPHL-C006, B2-UPHL-C008, B2-UPHL-C005, RM-SA-001, Con000, B2-UPHL-PR130 |  |  |  |  | 18d | 0d |  | Steel [4 M3] |
| B2-UPHL-C010 |  | Installation of Light Fittings |  | 14d | 2016-12-27 | 2017-01-11 | B2-UPHL-C009, RM-SA-001, Con000 |  |  |  |  | 18d | 17d |  | Steel [49 M3] |
| B2-UPHL-C014 |  | Final Coat of Paint |  | 30d | 2016-12-28 | 2017-01-31 | B2-UPHL-C004 |  |  |  |  | 1d | 0d |  |  |
| B2-UPHL-C012 |  | FF&E |  | 5d | 2017-02-01 | 2017-02-06 | B2-UPHL-C004, RM-SA-001, Con000, RM-AC-002, B2-UPHL-C008, B2-UPHL-C007, B2-UPHL-C006, B2-UPHL-C009, B2-UPHL-C011, B2-UPHL-C010, B2-UPHL-C014 |  |  |  |  | 1d | 0d |  | Steel [14 M3] |
| B2-UPHL-S13 |  | Snagging and De-Snagging |  | 7d | 2017-02-07 | 2017-02-14 | B2-UPHL-C012, RM-SA-001, Con000, B2-UPHL-C011, B2-UPHL-C010, B2-UPHL-C014 |  |  |  |  | 1d | 0d |  | Steel [14 M3] |

| ID | WBS | Activity | Type | Duration | Start | Finish | Predecessors | Total float | Free float | Resources |
| --- | --- | --- | --- | --- | --- | --- | --- | --- | --- | --- |
|  | 2 | **Bill 3-UP-HOTEL RECEPTION** |  |  | 2016-08-14 | 2017-02-08 |  |  |  |  |
| B3-UPHR-1stP001 |  | MEP 1st , 2nd Fix and Wall System | milestone | 0d | 2016-08-14 | 2016-08-14 | RM-SA-002 | 6d | 0d |  |
| B3-UPHR-C021 |  | Clearance process for Measurements , Framing&Enabling Works |  | 5d | 2016-08-14 | 2016-08-18 | B3-UPHR-1stP001 | 6d | 0d |  |
| B3-UPHR-C031 |  | Measurements , Framing & Enabling Works |  | 14d | 2016-08-20 | 2016-09-04 | B3-UPHR-C021 | 6d | 0d |  |
| B3-UPHR-C001 |  | Installation of Celling System |  | 28d | 2016-09-05 | 2016-10-11 | B3-UPHR-1stP001, RM-SA-002, Con000, B3-UPHR-C031 | 6d | 0d | Steel [11 M3] |
| B3-UPHR-2ndP002 |  | MEP Ceiling Closure Clearance |  | 7d | 2016-10-12 | 2016-10-19 | RM-SA-002, B3-UPHR-C001 | 6d | 0d |  |
| B3-UPHR-C002 |  | Ceiling Closure |  | 28d | 2016-10-20 | 2016-11-21 | B3-UPHR-2ndP002, RM-SA-002, Con000, B3-UPHR-PR180, B3-UPHR-PR130 FF+7d | 6d | 0d | Steel [11 M3] |
| B3-UPHR-3rdP003 |  | Flooring (by others) |  | 14d | 2016-11-22 | 2016-12-08 | B3-UPHR-C002, RM-SA-002 | 6d | 0d |  |
| B3-UPHR-C003 |  | Paint Works |  | 30d | 2016-12-10 | 2017-01-14 | B3-UPHR-3rdP003, RM-SA-002, Con000 | 6d | 0d | Steel [21 M3] |
| B3-UPHR-C007 |  | Installation of Metal panelling |  | 14d | 2016-12-14 | 2016-12-29 | B3-UPHR-C003 SS+3d, RM-SA-002, Con000, B3-UPHR-PR140 | 13d | 0d | Steel [8 M3] |
| B3-UPHR-C008 |  | Installation of Joinery Works |  | 21d | 2016-12-14 | 2017-01-07 | B3-UPHR-C003 SS+3d, RM-SA-002, Con000, RM-AC-002, B3-UPHR-PR130 | 6d | 0d | Steel [9 M3] |
| B3-UPHR-C004 |  | Installation of Metal Skirting |  | 7d | 2016-12-31 | 2017-01-07 | B3-UPHR-C007, RM-SA-002, Con000, B3-UPHR-PR140 | 20d | 14d | Steel [9 M3] |
| B3-UPHR-C010 |  | Installation of Light Fittings |  | 14d | 2017-01-08 | 2017-01-23 | B3-UPHR-C007, B3-UPHR-C008, RM-SA-002, Con000 | 6d | 0d | Steel [15 M3] |
| B3-UPHR-C011 |  | FF&E |  | 7d | 2017-01-24 | 2017-01-31 | B3-UPHR-C003, RM-SA-002, Con000, RM-AC-002, B3-UPHR-C004, B3-UPHR-C008, B3-UPHR-C010 | 6d | 0d | Steel [14 M3] |
| B3-UPHR-S012 |  | Snagging and De-Snagging |  | 7d | 2017-02-01 | 2017-02-08 | B3-UPHR-C011, RM-SA-002, Con000, B3-UPHR-C010 | 6d | 0d | Steel [14 M3] |
|  | 3 | **Bill 4-UP-VIP PROTOCOL** |  |  | 2016-07-05 | 2017-01-22 |  |  |  |  |
| B4-UPVP-1stP001 |  | MEP 1st , 2nd Fix and Wall System | milestone | 0d | 2016-07-05 | 2016-07-05 | RM-SA-003 | 23d | 0d |  |
| B4-UPVP-C021 |  | Clearance process for Measurements , Framing&Enabling Works |  | 5d | 2016-07-05 | 2016-07-12 | B4-UPVP-1stP001 | 23d | 0d |  |
| B4-UPVP-C031 |  | Measurements , Framing & Enabling Works |  | 14d | 2016-07-13 | 2016-07-28 | B4-UPVP-C021 | 23d | 0d |  |
| B4-UPVP-C001 |  | Installation of Celling System |  | 21d | 2016-07-30 | 2016-08-22 | B4-UPVP-1stP001, RM-SA-003, Con000, B4-UPVP-C031 | 23d | 0d | Steel [7 M3] |
| B4-UPVP-2ndP002 |  | MEP Ceiling Closure Clearance |  | 7d | 2016-08-23 | 2016-08-30 | B4-UPVP-C001, RM-SA-003 | 23d | 0d |  |
| B4-UPVP-C002 |  | Ceiling Closure |  | 21d | 2016-08-31 | 2016-09-27 | B4-UPVP-2ndP002, RM-SA-003, Con000, B4-UPVP-PR180 FF+7d | 23d | 0d | Steel [7 M3] |
| B4-UPVP-C003 |  | 1st Coat of Paint |  | 30d | 2016-09-28 | 2016-11-02 | RM-SA-003, Con000, B4-UPVP-C002 | 23d | 0d | Steel [14 M3] |
| B4-UPVP-C004 |  | Installation of Wooden wall panelling |  | 21d | 2016-10-03 | 2016-10-26 | B4-UPVP-C003 SS, RM-SA-003, Con000, RM-AC-003 | 24d | 2.8d | Steel [10 M3] |
| B4-UPVP-C005 |  | Installation of Timber Flooring |  | 14d | 2016-10-30 | 2016-11-15 | B4-UPVP-C004, RM-SA-003, Con000, B4-UPVP-PR110, RM-AC-003 | 21.2d | 0d | Steel [15 M3] |
| B4-UPVP-C013 |  | Fianl Coat of Paint |  | 30d | 2016-11-03 | 2016-12-08 | B4-UPVP-C003 | 23d | 0d |  |
| B4-UPVP-C006 |  | Installation of Joinery Works |  | 14d | 2016-11-15 | 2016-12-03 | B4-UPVP-C003 SS, RM-SA-003, Con000, B4-UPVP-PR100 FF, RM-AC-003, B4-UPVP-C005 | 21.2d | 0d | Steel [10 M3] |
| B4-UPVP-C007 |  | Installation of Wall Covering |  | 14d | 2016-11-15 | 2016-12-03 | RM-SA-003, Con000, B4-UPVP-PR160, B4-UPVP-C005 | 42.2d | 21d | Steel [6 M3] |
| B4-UPVP-C010 |  | Installation of Light Fittings |  | 14d | 2016-11-15 | 2016-12-03 | B4-UPVP-C005, RM-SA-003, Con000 | 49.2d | 28d | Steel [10 M3] |
| B4-UPVP-C008 |  | Installation of Glazing Works |  | 21d | 2016-12-03 | 2016-12-28 | B4-UPVP-C005, RM-SA-003, Con000, B4-UPVP-PR130, B4-UPVP-C006 | 21.2d | 0d | Steel [10 M3] |
| B4-UPVP-C011 |  | Installation of Doors & Ironmongery |  | 7d | 2016-12-10 | 2016-12-18 | RM-SA-003, Con000, B4-UPVP-PR260, B4-UPVP-C003, B4-UPVP-C013, B4-UPVP-C006 | 23d | 0d | Steel [6 M3] |
| B4-UPVP-C009 |  | Installation of Mirror |  | 14d | 2016-12-19 | 2017-01-03 | B4-UPVP-C005, RM-SA-003, Con000, B4-UPVP-C011, B4-UPVP-C004, B4-UPVP-C006 | 23d | 1.8d | Steel [4 M3] |
| B4-UPVP-C012 |  | FF&E |  | 7d | 2016-12-28 | 2017-01-05 | B4-UPVP-C003, RM-SA-003, Con000, B4-UPVP-C008, B4-UPVP-C007, B4-UPVP-C006, B4-UPVP-C005, B4-UPVP-C013 | 21.2d | 0d | Steel [6 M3] |
| B4-UPVP-S013 |  | Snagging and De-Snagging |  | 14d | 2017-01-05 | 2017-01-22 | B4-UPVP-C012, RM-SA-003, Con000, B4-UPVP-C007, B4-UPVP-C003, B4-UPVP-C006, B4-UPVP-C005, B4-UPVP-C011, B4-UPVP-C009, B4-UPVP-C010, B4-UPVP-C013 | 21.2d | 0d | Steel [14 M3] |

| ID | WBS | Activity | Type | Duration | Start | Finish | Predecessors | Total float | Free float | Resources |
| --- | --- | --- | --- | --- | --- | --- | --- | --- | --- | --- |
|  | 4 | **Bill 5-UP-SAFE DEPOSIT** |  |  | 2016-08-07 | 2017-02-14 |  |  |  |  |
| B5-UPSD-1stP001 |  | MEP 1st , 2nd Fix and Wall System | milestone | 0d | 2016-08-07 | 2016-08-07 | RM-SA-004 | 1d | 0d |  |
| B5-UPSD-C011 |  | Clearance process for Measurements , Framing&Enabling Works |  | 5d | 2016-08-07 | 2016-08-11 | B5-UPSD-1stP001 | 1d | 0d |  |
| B5-UPSD-C021 |  | Measurements , Framing & Enabling Works |  | 14d | 2016-08-13 | 2016-08-28 | B5-UPSD-C011 | 1d | 0d |  |
| B5-UPSD-C001 |  | Installation of Celling System |  | 21d | 2016-08-29 | 2016-09-25 | B5-UPSD-1stP001, RM-SA-004, Con000, B5-UPSD-C021 | 1d | 0d | Steel [10 M3] |
| B5-UPSD-2ndP002 |  | MEP Ceiling Closure Clearance |  | 7d | 2016-09-26 | 2016-10-04 | B5-UPSD-C001, RM-SA-004 | 1d | 0d |  |
| B5-UPSD-C002 |  | Ceiling Closure |  | 21d | 2016-10-05 | 2016-10-29 | B5-UPSD-2ndP002, RM-SA-004, Con000, B5-UPSD-PR180 FF+14d | 1d | 0d | Steel [10 M3] |
| B5-UPSD-3rdP003 |  | Flooring (by others) |  | 7d | 2016-10-30 | 2016-11-06 | B5-UPSD-C002, RM-SA-004 | 1d | 0d |  |
| B5-UPSD-C003 |  | 1st Coat of Paint |  | 30d | 2016-11-07 | 2016-12-13 | B5-UPSD-3rdP003, RM-SA-004, Con000 | 1d | 0d | Steel [28 M3] |
| B5-UPSD-C004 |  | Installation of Wooden wall panelling |  | 14d | 2016-11-07 | 2016-11-22 | B5-UPSD-C003 SS, RM-SA-004, Con000, RM-AC-004, B5-UPSD-PR100 FF+7d | 40d | 16d | Steel [6 M3] |
| B5-UPSD-C006 |  | Installation of Light Fittings |  | 14d | 2016-12-14 | 2016-12-29 | B5-UPSD-C003, RM-SA-004, Con000 | 1d | 0d | Steel [6 M3] |
| B5-UPSD-C007 |  | Installation of Doors & Ironmongery |  | 7d | 2016-12-14 | 2016-12-21 | RM-SA-004, Con000, B5-UPSD-PR260, RM-AC-004, B5-UPSD-C003, B5-UPSD-C004 | 24d | 0d | Steel [6 M3] |
| B5-UPSD-C005 |  | Installation of Joinery Works |  | 14d | 2016-12-22 | 2017-01-07 | B5-UPSD-C003 SS+3d, RM-SA-004, Con000, B5-UPSD-PR100, RM-AC-004, B5-UPSD-C007 | 24d | 23d | Steel [6 M3] |
| B5-UPSD-C013 |  | Fianl Coat of Paint |  | 30d | 2016-12-31 | 2017-02-02 | B5-UPSD-C003, B5-UPSD-C006 | 1d | 0d |  |
| B5-UPSD-C008 |  | FF&E |  | 3d | 2017-02-04 | 2017-02-06 | B5-UPSD-C003, B5-UPSD-C004, B5-UPSD-C005, RM-SA-004, Con000, B5-UPSD-C013 | 1d | 0d | Steel [6 M3] |
| B5-UPSD-S009 |  | Snagging and De-Snagging |  | 7d | 2017-02-07 | 2017-02-14 | B5-UPSD-C008, RM-SA-004, Con000, B5-UPSD-C007, B5-UPSD-C006, B5-UPSD-C013 | 1d | 0d | Steel [10 M3] |
|  | 5 | **Bill 6-UP-HOTEL LIFT LOBBY** |  |  | 2016-08-21 | 2017-02-04 |  |  |  |  |
| B5-UPSD-C21 |  | Clearance process for Measurements , Framing&Enabling Works |  | 5d | 2016-08-21 | 2016-08-25 | B6-UPHLL-1stP001 | 10d | 0d |  |
| B6-UPHLL-1stP001 |  | MEP 1st , 2nd Fix and Wall System | milestone | 0d | 2016-08-21 | 2016-08-21 | RM-SA-005 | 10d | 0d |  |
| B5-UPSD-C31 |  | Measurements , Framing & Enabling Works |  | 14d | 2016-08-27 | 2016-09-14 | B5-UPSD-C21 | 10d | 0d |  |
| B6-UPHLL-C001 |  | Installation of Celling System |  | 28d | 2016-09-15 | 2016-10-18 | B6-UPHLL-1stP001, RM-SA-005, Con000, B5-UPSD-C31 | 10d | 0d | Steel [10 M3] |
| B6-UPHLL-2ndP002 |  | MEP Ceiling Closure Clearance |  | 7d | 2016-10-19 | 2016-10-26 | B6-UPHLL-C001, RM-SA-005 | 10d | 0d |  |
| B6-UPHLL-3rdP003 |  | Flooring (by others) |  | 14d | 2016-10-27 | 2016-11-12 | RM-SA-005, B6-UPHLL-2ndP002 | 10d | 0d |  |
| B6-UPHLL-C002 |  | Ceiling Closure |  | 28d | 2016-11-13 | 2016-12-17 | B6-UPHLL-2ndP002, RM-SA-005, Con000, B6-UPHLL-PR180, B6-UPHLL-PR140 FF+2d, B6-UPHLL-3rdP003 | 10d | 0d | Steel [10 M3] |
| B6-UPHLL-C003 |  | Installation of Light Fittings |  | 14d | 2016-12-18 | 2017-01-02 | B6-UPHLL-3rdP003, RM-SA-005, Con000, B6-UPHLL-C002 | 10d | 0d | Steel [6 M3] |
| B6-UPHLL-C004 |  | Installation of Mirror |  | 7d | 2017-01-03 | 2017-01-10 | B6-UPHLL-C003, RM-SA-005, Con000, B6-UPHLL-PR130, RM-AC-005 | 10d | 0d | Steel [4 M3] |
| B6-UPHLL-C005 |  | FF&E |  | 7d | 2017-01-11 | 2017-01-18 | B6-UPHLL-C004, RM-SA-005, Con000, RM-AC-006 | 10d | 0d | Steel [4 M3] |
| B6-UPHLL-S006 |  | Snagging and De-Snagging |  | 14d | 2017-01-19 | 2017-02-04 | B6-UPHLL-C005, RM-SA-005, Con000 | 10d | 0d | Steel [6 M3] |

| ID | WBS | Activity | Type | Duration | Start | Finish | Predecessors | Total float | Free float | Calendar | Resources |
| --- | --- | --- | --- | --- | --- | --- | --- | --- | --- | --- | --- |
|  | 6 | **Bill 7-UP-RESIDENCE'S LIFT LOBBY** |  |  | 2016-07-24 | 2017-01-30 |  |  |  |  |  |
| B5-UPSD-C41 |  | Clearance process for Measurements , Framing&Enabling Works |  | 5d | 2016-07-24 | 2016-07-28 | B7-UPRLL-1stP001 | 15d | 0d |  |  |
| B7-UPRLL-1stP001 |  | MEP 1st , 2nd Fix and Wall System | milestone | 0d | 2016-07-24 | 2016-07-24 | RM-SA-006 | 15d | 0d |  |  |
| B5-UPSD-C51 |  | Measurements , Framing & Enabling Works |  | 14d | 2016-07-30 | 2016-08-14 | B5-UPSD-C41 | 15d | 0d |  |  |
| B7-UPRLL-C001 |  | Installation of Celling System |  | 28d | 2016-08-15 | 2016-09-19 | B7-UPRLL-1stP001, RM-SA-006, Con000, B5-UPSD-C51 | 15d | 0d |  | Steel [35 M3] |
| B7-UPRLL-2ndP002 |  | MEP Ceiling Closure Clearance |  | 7d | 2016-09-20 | 2016-09-27 | B7-UPRLL-C001, RM-SA-006 | 15d | 0d |  |  |
| B7-UPRLL-C002 |  | Ceiling Closure |  | 28d | 2016-09-28 | 2016-10-31 | B7-UPRLL-2ndP002, RM-SA-006, Con000, B7-UPRLL-PR180 FF+7d, B7-UPRLL-SDA160 FF | 15d | 0d |  | Steel [14 M3] |
| B7-UPRLL-C012 |  | 1st Coat of Paint |  | 30d | 2016-10-31 | 2016-11-30 | B7-UPRLL-C002 | 18.64d | 0.64d | 7x24 |  |
| B7-UPRLL-3rdP003 |  | Flooring (by others) |  | 7d | 2016-11-01 | 2016-11-08 | B7-UPRLL-C002, RM-SA-006 | 32d | 18d |  |  |
| B7-UPRLL-C004 |  | Installation of Wooden wall panelling |  | 21d | 2016-11-01 | 2016-11-24 | RM-SA-006, Con000, RM-AC-006, B7-UPRLL-SDA130, B7-UPRLL-SDA160, B7-UPRLL-C002 | 34d | 19d |  | Steel [50 M3] |
| B7-UPRLL-C003 |  | Final Coat of Paint |  | 30d | 2016-12-01 | 2017-01-05 | B7-UPRLL-3rdP003, RM-SA-006, Con000, B7-UPRLL-SDA130, B7-UPRLL-SDA160, B7-UPRLL-C012 | 14d | 0d |  | Steel [31 M3] |
| B7-UPRLL-C005 |  | Installation of Steel wall panelling |  | 15d | 2016-12-01 | 2016-12-19 | RM-SA-006, Con000, B7-UPRLL-SDA160, B7-UPRLL-C012 | 15d | 0d |  | Steel [50 M3] |
| B7-UPRLL-C006 |  | Apply of Sibu Finish |  | 15d | 2016-12-01 | 2016-12-19 | RM-SA-006, Con000, RM-AC-006, B7-UPRLL-SDA160, B7-UPRLL-C012 | 15d | 0d |  | Steel [40 M3] |
| B7-UPRLL-C007 |  | Installation of Light Fittings |  | 21d | 2016-12-20 | 2017-01-12 | B7-UPRLL-C004, B7-UPRLL-C005, B7-UPRLL-C006, RM-SA-006, Con000 | 15d | 1d |  | Steel [15 M3] |
| B7-UPRLL-C008 |  | FF&E |  | 7d | 2017-01-07 | 2017-01-14 | B7-UPRLL-C003, RM-SA-006, Con000, RM-AC-006, B7-UPRLL-SDA170 | 14d | 0d |  | Steel [6 M3] |
| B7-UPRLL-S009 |  | Snagging and De-Snagging |  | 14d | 2017-01-15 | 2017-01-30 | B7-UPRLL-C007, B7-UPRLL-C008, RM-SA-006, Con000 | 14d | 0d |  | Steel [10 M3] |
|  | 7 | **Bill 8-UP-FRONT OFFICE** |  |  | 2016-07-31 | 2017-01-30 |  |  |  |  |  |
| B5-UPSD-C61 |  | Clearance process for Measurements , Framing&Enabling Works |  | 5d | 2016-07-31 | 2016-08-04 | B8-UPFO-1stP001 | 14d | 0d |  |  |
| B8-UPFO-1stP001 |  | MEP 1st , 2nd Fix and Wall System | milestone | 0d | 2016-07-31 | 2016-07-31 | RM-SA-007 | 14d | 0d |  |  |
| B5-UPSD-C71 |  | Measurements , Framing & Enabling Works |  | 14d | 2016-08-06 | 2016-08-21 | B5-UPSD-C61 | 14d | 0d |  |  |
| B8-UPFO-C001 |  | Installation of Celling System |  | 21d | 2016-08-22 | 2016-09-18 | B8-UPFO-1stP001, RM-SA-007, Con000, B5-UPSD-C71 | 14d | 0d |  | Steel [10 M3] |
| B8-UPFO-2ndP002 |  | MEP Ceiling Closure Clearance |  | 7d | 2016-09-19 | 2016-09-26 | B8-UPFO-C001, RM-SA-007 | 14d | 0d |  |  |
| B8-UPFO-C002 |  | Ceiling Closure |  | 21d | 2016-09-27 | 2016-10-22 | B8-UPFO-2ndP002, RM-SA-007, Con000, B8-UPFO-PR180 | 14d | 0d |  | Steel [10 M3] |
| B8-UPFO-C003 |  | 1st Coat of Paint |  | 30d | 2016-10-23 | 2016-11-26 | RM-SA-007, Con000, B8-UPFO-C002 | 14d | 0d |  | Steel [14 M3] |
| B8-UPFO-C004 |  | Installation of Doors & Ironmongery |  | 7d | 2016-11-27 | 2016-12-05 | B8-UPFO-C003, RM-SA-007, Con000, B8-UPFO-PR260, RM-AC-007 | 14d | 0d |  | Steel [4 M3] |
| B8-UPFO-C013 |  | Final Coat of Paint |  | 30d | 2016-12-06 | 2017-01-10 | B8-UPFO-C003, B8-UPFO-C004 | 14d | 0d |  | Steel [24.55 M3] |
| B8-UPFO-C014 |  | Installation of Joinery Works |  | 14d | 2016-12-06 | 2016-12-22 | B8-UPFO-C003, B8-UPFO-PR100 FF+7d, RM-AC-007, B8-UPFO-C004 | 30d | 16d |  | Steel [10 M3] |
| B8-UPFO-C005 |  | Installation of Carpet |  | 7d | 2017-01-11 | 2017-01-18 | B8-UPFO-C004, RM-SA-007, Con000, B8-UPFO-PR200, B8-UPFO-C014, B8-UPFO-C013 | 14d | 0d |  | Steel [6 M3] |
| B8-UPFO-C006 |  | FF&E |  | 3d | 2017-01-19 | 2017-01-22 | B8-UPFO-C004, B8-UPFO-C005, RM-SA-007, Con000, RM-AC-008, B8-UPFO-SDA230, B8-UPFO-C013 | 14d | 0d |  | Steel [4 M3] |
| B8-UPFO-S007 |  | Snagging and De-Snagging |  | 7d | 2017-01-23 | 2017-01-30 | B8-UPFO-C005, B8-UPFO-C006, RM-SA-007, Con000, B8-UPFO-C014, B8-UPFO-C013 | 14d | 0d |  | Steel [10 M3] |

| ID | WBS | Activity | Type | Duration | Start | Finish | Predecessors | Total float | Free float | Calendar | Resources |
| --- | --- | --- | --- | --- | --- | --- | --- | --- | --- | --- | --- |
|  | 8 | **Bill 9-UP-CHOCOLATE BOUTIQUE** |  |  | 2016-07-17 | 2017-02-12 |  |  |  |  |  |
| B5-UPSD-C81 |  | Clearance process for Measurements , Framing&Enabling Works |  | 5d | 2016-07-17 | 2016-07-21 | B9-UPCB-1stP001 | 40d | 0d |  |  |
| B9-UPCB-1stP001 |  | MEP 1st , 2nd Fix and Wall System | milestone | 0d | 2016-07-17 | 2016-07-17 | RM-SA-008 | 40d | 0d |  |  |
| B5-UPSD-C91 |  | Measurements , Framing & Enabling Works |  | 14d | 2016-07-23 | 2016-08-07 | B5-UPSD-C81 | 40d | 0d |  |  |
| B9-UPCB-C001 |  | Installation of Celling System |  | 21d | 2016-08-08 | 2016-08-31 | B9-UPCB-1stP001, RM-SA-008, Con000, B5-UPSD-C91 | 40d | 0d |  | Steel [14 M3] |
| B9-UPCB-2ndP002 |  | MEP Ceiling Closure Clearance |  | 7d | 2016-09-01 | 2016-09-08 | RM-SA-008, B9-UPCB-C001 | 40d | 0d |  |  |
| B9-UPCB-C002 |  | Ceiling Closure |  | 21d | 2016-09-10 | 2016-10-08 | B9-UPCB-2ndP002, RM-SA-008, Con000, B9-UPCB-PR180 | 40d | 4.2d |  | Steel [14 M3] |
| B9-UPCB-C003 |  | Installation of Wall Tiling |  | 10d | 2016-10-13 | 2016-10-25 | B9-UPCB-C002, RM-SA-008, Con000, B9-UPCB-PR170 | 43.8d | 0d |  | Steel [10 M3] |
| B9-UPCB-3rdP003 |  | Flooring (by others) |  | 10d | 2016-10-25 | 2016-11-06 | B9-UPCB-C003, RM-SA-008 | 43.8d | 0d |  |  |
| B9-UPCB-C014 |  | Apply of Sibu Finish |  | 14d | 2016-11-06 | 2016-11-22 | B9-UPCB-C003, RM-SA-008, Con000, B9-UPCB-3rdP003 | 64.8d | 61.1d |  | Steel [56 M3] |
| B9-UPCB-C007 |  | Installation of Metal panelling |  | 14d | 2016-11-20 | 2016-12-07 | RM-SA-008, Con000, B9-UPCB-PR140, B9-UPCB-C002 | 3.7d | 0d |  | Steel [35 M3] |
| B9-UPCB-C005 |  | Installation of Metal Skirting |  | 3d | 2016-12-07 | 2016-12-12 | B9-UPCB-C007, RM-SA-008, Con000, B9-UPCB-PR140 FF+5d | 45.7d | 28d |  | Steel [6 M3] |
| B9-UPCB-C013 |  | Aluminium Works |  | 14d | 2016-12-07 | 2016-12-25 | B9-UPCB-C007, RM-SA-008, Con000, B9-UPCB-PR140 FF+5d | 3.7d | 0d |  | Steel [14 M3] |
| B9-UPCB-C004 |  | Paint Works |  | 21d | 2016-12-25 | 2017-01-18 | B9-UPCB-3rdP003, RM-SA-008, Con000, B9-UPCB-PR120, B9-UPCB-C013 | 3.7d | 0d |  | Steel [20 M3] |
| B9-UPCB-C006 |  | Installation of Wooden wall panelling |  | 14d | 2016-12-25 | 2017-01-10 | B9-UPCB-C004 SS, RM-SA-008, Con000, B9-UPCB-PR100 FF+7d, RM-AC-008 | 20.7d | 3d |  | Steel [8 M3] |
| B9-UPCB-C008 |  | Installation of Joinery Works |  | 14d | 2016-12-28 | 2017-01-14 | B9-UPCB-C004 SS+3d, RM-SA-008, Con000, B9-UPCB-PR100, RM-AC-008 | 17.7d | 0d |  | Steel [20 M3] |
| B9-UPCB-C009 |  | Installation of Mirror |  | 2d | 2017-01-14 | 2017-01-16 | B9-UPCB-C007, B9-UPCB-C006, B9-UPCB-C008, B9-UPCB-C005, RM-SA-008, Con000, B9-UPCB-PR130 | 17.7d | 2d |  | Steel [4 M3] |
| B9-UPCB-C011 |  | Installation of Doors & Ironmongery |  | 2d | 2017-01-14 | 2017-01-16 | RM-SA-008, Con000, RM-AC-008, B9-UPCB-C008 | 19.7d | 16d |  | Steel [4 M3] |
| B9-UPCB-C010 |  | Installation of Light Fittings |  | 14d | 2017-01-18 | 2017-02-04 | RM-SA-008, Con000, B9-UPCB-C004 | 3.7d | 0d |  | Steel [20 M3] |
| B9-UPCB-C012 |  | FF&E |  | 2d | 2017-01-18 | 2017-01-21 | B9-UPCB-C004, RM-SA-008, Con000, B9-UPCB-C013, B9-UPCB-C008, B9-UPCB-C007, B9-UPCB-C006, B9-UPCB-C009 | 15.7d | 12d |  | Steel [4 M3] |
| B9-UPCB-S13 |  | Snagging and De-Snagging |  | 7d | 2017-02-04 | 2017-02-12 | B9-UPCB-C012, B9-UPCB-C014, RM-SA-008, Con000, B9-UPCB-C011, B9-UPCB-C013, B9-UPCB-C010 | 3.7d | 0d |  | Steel [10 M3] |
|  | 9 | **Bill 10-UP-RETAIL** |  |  | 2016-07-31 | 2017-02-02 |  |  |  |  |  |
| B10-UPRT-1stP001 |  | MEP 1st , 2nd Fix and Wall System | milestone | 0d | 2016-07-31 | 2016-07-31 | RM-SA-009 | 14d | 0d |  |  |
| B10-UPRT-3rdP013 |  | Celling System |  | 35d | 2016-07-31 | 2016-09-04 | B10-UPRT-1stP001 | 16d | 0d | 7x24 |  |
| B10-UPRT-3rdP003 |  | Flooring (by others) |  | 21d | 2016-09-04 | 2016-10-01 | RM-SA-009, B10-UPRT-1stP001, B10-UPRT-3rdP013 | 11d | 0d |  |  |
| B5-UPSD-C101 |  | Clearance process for Measurements , Framing&Enabling Works |  | 5d | 2016-10-03 | 2016-10-08 | B10-UPRT-3rdP003 | 11d | 0d |  |  |
| B5-UPSD-C111 |  | Measurements , Framing & Enabling Works |  | 14d | 2016-10-09 | 2016-10-24 | B5-UPSD-C101 | 11d | 0d |  |  |
| B10-UPRT-C002 |  | Installation of Wall Tiling |  | 28d | 2016-10-25 | 2016-11-26 | RM-SA-009, Con000, B10-UPRT-PR170 FF+5d, B10-UPRT-1stP001, B10-UPRT-3rdP003, B5-UPSD-C111 | 11d | 0d |  | Steel [20 M3] |
| B10-UPRT-C001 |  | Paint Works |  | 30d | 2016-10-31 | 2016-12-05 | B10-UPRT-1stP001, B10-UPRT-3rdP003, RM-SA-009, Con000, B10-UPRT-PR120 FF+3d, B5-UPSD-C111, B10-UPRT-C002 FF+7d | 11d | 0d |  | Steel [34 M3] |
| B10-UPRT-C005 |  | Installation of Glazing Works |  | 21d | 2016-11-27 | 2016-12-22 | B10-UPRT-C002, RM-SA-009, Con000, B10-UPRT-PR130, RM-AC-009 | 33d | 22d |  | Steel [20 M3] |
| B10-UPRT-C004 |  | Aluminium Works |  | 21d | 2016-12-06 | 2016-12-31 | RM-SA-009, Con000, B10-UPRT-C001 | 11d | 0d |  | Steel [20 M3] |
| B10-UPRT-C003 |  | Installation of Light Fittings |  | 15d | 2017-01-01 | 2017-01-17 | B10-UPRT-C004, B10-UPRT-C002, RM-SA-009, Con000 | 11d | 0d |  | Steel [20 M3] |
| B10-UPRT-C006 |  | FF&E |  | 7d | 2017-01-18 | 2017-01-25 | B10-UPRT-C001, RM-SA-009, Con000, B10-UPRT-C002, B10-UPRT-C003, B10-UPRT-C004, B10-UPRT-C005, B10-UPRT-SDA170 | 11d | 0d |  | Steel [8 M3] |
| B10-UPRT-S007 |  | Snagging and De-Snagging |  | 7d | 2017-01-26 | 2017-02-02 | B10-UPRT-C001, B10-UPRT-C003, B10-UPRT-C004, B10-UPRT-C005, B10-UPRT-C006, RM-SA-009, Con000 | 11d | 0d |  | Steel [20 M3] |

| ID | WBS | Activity | Type | Duration | Start | Finish | Predecessors | Total float | Free float | Resources |
| --- | --- | --- | --- | --- | --- | --- | --- | --- | --- | --- |
|  | 10 | **Bill 11-UP-REST ROOMS** |  |  | 2016-07-24 | 2017-02-04 |  |  |  |  |
| B11-UPRR-1stP001 |  | MEP 1st , 2nd Fix and Wall System | milestone | 0d | 2016-07-24 | 2016-07-24 | RM-SA-010 | 10d | 0d |  |
| B5-UPSD-C121 |  | Clearance process for Measurements , Framing&Enabling Works |  | 5d | 2016-07-24 | 2016-07-28 | B11-UPRR-1stP001 | 10d | 0d |  |
| B5-UPSD-C131 |  | Measurements , Framing & Enabling Works |  | 14d | 2016-07-30 | 2016-08-14 | B5-UPSD-C121, B5-UPSD-C121 FF, B5-UPSD-C121 SS | 10d | 0d |  |
| B11-UPRR-C001 |  | Installation of Celling System |  | 30d | 2016-08-15 | 2016-09-21 | B11-UPRR-1stP001, RM-SA-010, Con000, B5-UPSD-C131 | 10d | 0d | Steel [11 M3] |
| B11-UPRR-2ndP002 |  | MEP Ceiling Closure Clearance |  | 7d | 2016-09-22 | 2016-09-29 | B11-UPRR-C001, RM-SA-010 | 10d | 0d |  |
| B11-UPRR-C002 |  | Ceiling Closure |  | 30d | 2016-10-01 | 2016-11-05 | B11-UPRR-2ndP002, RM-SA-010, Con000, B11-UPRR-PR180 | 10d | 0d | Steel [11 M3] |
| B11-UPRR3rdP003 |  | Flooring (by others) |  | 14d | 2016-11-06 | 2016-11-21 | B11-UPRR-C002, RM-SA-010 | 10d | 0d |  |
| B11-UPRR-C003 |  | Paint Works |  | 30d | 2016-11-22 | 2016-12-28 | B11-UPRR3rdP003, RM-SA-010, Con000 | 10d | 0d | Steel [9 M3] |
| B11-UPRR-C010 |  | Installation of Joinery Works |  | 14d | 2016-11-22 | 2016-12-08 | B11-UPRR-C003 SS, RM-SA-010, Con000, B11-UPRR-PR100 FF+7d, RM-AC-010 | 10d | 0d | Steel [14 M3] |
| B11-UPRR-C007 |  | Installation of Wall Covering |  | 7d | 2016-12-10 | 2016-12-18 | B11-UPRR-C010, RM-SA-010, Con000, B11-UPRR-PR160, RM-AC-010 | 10d | 0d | Steel [6 M3] |
| B11-UPRR-C004 |  | Installation of Metal Skirting |  | 7d | 2016-12-19 | 2016-12-26 | B11-UPRR-C007, RM-SA-010, Con000, B11-UPRR-PR140 | 10d | 0d | Steel [6 M3] |
| B11-UPRR-C008 |  | Installation of Glazing Works |  | 14d | 2016-12-27 | 2017-01-11 | B11-UPRR-C004, B11-UPRR-C010, RM-SA-010, Con000, B11-UPRR-PR130 | 10d | 0d | Steel [6 M3] |
| B11-UPRR-C005 |  | Installation of Doors & Ironmongery |  | 7d | 2017-01-12 | 2017-01-19 | B11-UPRR-C008, RM-SA-010, Con000, B11-UPRR-PR260, RM-AC-010 | 16d | 6d | Steel [6 M3] |
| B11-UPRR-C006 |  | Installation of Light Fittings |  | 14d | 2017-01-12 | 2017-01-28 | B11-UPRR-C008, RM-SA-010, Con000 | 10d | 0d | Steel [10 M3] |
| B11-UPRR-C009 |  | Installation of Sanitary Ware |  | 7d | 2017-01-12 | 2017-01-19 | B11-UPRR-C008, RM-SA-010, Con000, B11-UPRR-PR270 | 16d | 6d | Steel [6 M3] |
| B11-UPRR-S011 |  | Snagging and De-Snagging |  | 7d | 2017-01-28 | 2017-02-04 | B11-UPRR-C009, RM-SA-010, Con000, B11-UPRR-C006 FS-1d, B11-UPRR-C005 | 10d | 0d | Steel [10 M3] |
|  | 11 | **Bill 12-UP-PRAYER ROOMS** |  |  | 2016-07-05 | 2017-02-02 |  |  |  |  |
| B12-UPPR-1stP001 |  | MEP 1st , 2nd Fix and Wall System | milestone | 0d | 2016-07-05 | 2016-07-05 | RM-SA-011 | 11d | 0d |  |
| B5-UPSD-C141 |  | Clearance process for Measurements , Framing&Enabling Works |  | 5d | 2016-07-05 | 2016-07-12 | B12-UPPR-1stP001 | 11d | 0d |  |
| B5-UPSD-C151 |  | Measurements , Framing & Enabling Works |  | 14d | 2016-07-13 | 2016-07-28 | B5-UPSD-C141, B5-UPSD-C141 FF, B5-UPSD-C141 SS | 11d | 0d |  |
| B12-UPPR-C001 |  | Installation of Celling System |  | 28d | 2016-07-30 | 2016-08-30 | B12-UPPR-1stP001, RM-SA-011, Con000, B5-UPSD-C151 | 11d | 0d |  |
| B12-UPPR-2ndP002 |  | MEP Ceiling Closure Clearance |  | 7d | 2016-08-31 | 2016-09-07 | B12-UPPR-C001, RM-SA-011 | 11d | 0d |  |
| B12-UPPR-C002 |  | Ceiling Closure |  | 21d | 2016-09-08 | 2016-10-06 | B12-UPPR-2ndP002, RM-SA-011, Con000, B12-UPPR-PR180 FF+14d | 11d | 0d |  |
| B12-UPPR-3rdP003 |  | Flooring (by others) |  | 7d | 2016-10-08 | 2016-10-15 | B12-UPPR-C002, RM-SA-011 | 11d | 0d |  |
| B12-UPPR-C003 |  | Paint Works |  | 30d | 2016-10-16 | 2016-11-19 | B12-UPPR-3rdP003, RM-SA-011, Con000 | 11d | 0d |  |
| B12-UPPR-C004 |  | Installation of Doors & Ironmongery |  | 7d | 2016-11-20 | 2016-11-27 | RM-SA-011, Con000, B12-UPPR-PR260, RM-AC-011, B12-UPPR-C003 | 11d | 0d |  |
| B12-UPPR-C007 |  | Installation of Wall Covering |  | 7d | 2016-11-20 | 2016-11-27 | B12-UPPR-C003, RM-SA-011, Con000, B12-UPPR-PR160, RM-AC-011 | 25d | 14d |  |
| B12-UPPR-C005 |  | Installation of Light Fittings |  | 14d | 2016-11-28 | 2016-12-15 | B12-UPPR-C003, RM-SA-011, Con000, B12-UPPR-C004 | 11d | 0d |  |
| B12-UPPR-C006 |  | Installation of Timber Flooring |  | 14d | 2016-12-17 | 2017-01-01 | B12-UPPR-C003, B12-UPPR-C007, RM-SA-011, Con000, RM-AC-011, B12-UPPR-C005 | 11d | 0d |  |
| B12-UPPR-C009 |  | Installation of Joinery Works |  | 14d | 2017-01-02 | 2017-01-17 | B12-UPPR-C003 SS, RM-SA-011, Con000, B12-UPPR-PR100 FF+5d, RM-AC-011, B12-UPPR-C004, B12-UPPR-C006 | 11d | 0d |  |
| B12-UPPR-C008 |  | Installation of Carpet |  | 7d | 2017-01-18 | 2017-01-25 | B12-UPPR-C007, B12-UPPR-C006, B12-UPPR-C009, RM-SA-011, Con000, B12-UPPR-PR200, B12-UPPR-C005 | 11d | 0d |  |
| B12-UPPR-S010 |  | Snagging and De-Snagging |  | 7d | 2017-01-26 | 2017-02-02 | B12-UPPR-C008, B12-UPPR-C003, RM-SA-011, Con000, B12-UPPR-C005, B12-UPPR-C004 | 11d | 0d |  |

| ID | WBS | Activity | Type | Duration | Start | Finish | Predecessors | Total float | Free float | Resources |
| --- | --- | --- | --- | --- | --- | --- | --- | --- | --- | --- |
|  | 12 | **Bill 13-UP-RESIDENCES LOBBY** |  |  | 2016-08-07 | 2017-02-14 |  |  |  |  |
| B13-UPRL-1stP001 |  | MEP 1st , 2nd Fix and Wall System | milestone | 0d | 2016-08-07 | 2016-08-07 | RM-SA-012 | 1d | 0d |  |
| B5-UPSD-C161 |  | Clearance process for Measurements , Framing&Enabling Works |  | 5d | 2016-08-07 | 2016-08-11 | B13-UPRL-1stP001 | 1d | 0d |  |
| B5-UPSD-C171 |  | Measurements , Framing & Enabling Works |  | 14d | 2016-08-13 | 2016-08-28 | B5-UPSD-C161, B5-UPSD-C161 FF, B5-UPSD-C161 SS | 1d | 0d |  |
| B13-UPRL-C001 |  | Installation of Celling System |  | 21d | 2016-08-29 | 2016-09-25 | B13-UPRL-1stP001, RM-SA-012, Con000, B13-UPRL-1stP001 FF, B5-UPSD-C171 | 1d | 0d | Steel [64 M3] |
| B13-UPRL-2ndP002 |  | MEP Ceiling Closure Clearance |  | 7d | 2016-09-26 | 2016-10-04 | RM-SA-012, B13-UPRL-C001 | 1d | 0d |  |
| B13-UPRL-C002 |  | Ceiling Closure |  | 21d | 2016-10-05 | 2016-10-29 | B13-UPRL-2ndP002, RM-SA-012, Con000, B13-UPRL-PR180 | 1d | 0d | Steel [64 M3] |
| B13-UPRL-3rdP003 |  | Flooring (by others) |  | 14d | 2016-10-30 | 2016-11-14 | B13-UPRL-C002, RM-SA-012 | 1d | 0d |  |
| B13-UPRL-C003 |  | Paint Works |  | 30d | 2016-11-15 | 2016-12-21 | B13-UPRL-3rdP003, RM-SA-012, Con000 | 1d | 0d | Steel [53 M3] |
| B13-UPRL-C004 |  | Installation of Wooden wall panelling |  | 14d | 2016-12-22 | 2017-01-07 | B13-UPRL-C003, RM-SA-012, Con000, B13-UPRL-PR100, RM-AC-012 | 1d | 0d | Steel [78 M3] |
| B13-UPRL-C007 |  | Installation of Metal panelling |  | 5d | 2017-01-08 | 2017-01-12 | B13-UPRL-C004, RM-SA-012, Con000, B13-UPRL-PR140 | 1d | 0d | Steel [28 M3] |
| B13-UPRL-C009 |  | Installation of Joinery Works |  | 15d | 2017-01-08 | 2017-01-24 | B13-UPRL-C003, RM-SA-012, Con000, B13-UPRL-PR100, RM-AC-012, B13-UPRL-C004 | 12d | 11d | Steel [14 M3] |
| B13-UPRL-C008 |  | Aluminium Works |  | 5d | 2017-01-09 | 2017-01-14 | B13-UPRL-C007 SS+1d, RM-SA-012, Con000 | 1d | 0d | Steel [10 M3] |
| B13-UPRL-C005 |  | Installation of Mirror |  | 5d | 2017-01-15 | 2017-01-19 | B13-UPRL-C004, B13-UPRL-C007, B13-UPRL-C008, RM-SA-012, Con000, RM-AC-012 | 1d | 0d | Steel [4 M3] |
| B13-UPRL-C006 |  | Installation of Light Fittings |  | 15d | 2017-01-21 | 2017-02-06 | B13-UPRL-C005, RM-SA-012, Con000 | 1d | 0d | Steel [49 M3] |
| B13-UPRL-S010 |  | Snagging and De-Snagging |  | 7d | 2017-02-07 | 2017-02-14 | B13-UPRL-C006, B13-UPRL-C009, B13-UPRL-C003, RM-SA-012, Con000 | 1d | 0d | Steel [14 M3] |
|  | 15 | **Bill 20-UP-COFFEE BAR** |  |  | 2016-07-10 | 2016-12-10 |  |  |  |  |
| B20-UPCB-1stP001 |  | MEP 1st , 2nd Fix and Wall System | milestone | 0d | 2016-07-10 | 2016-07-10 | RM-SA-015 | 71d | 0d |  |
| B20-UPCB-3rdP003 |  | Flooring (by others) |  | 21d | 2016-07-10 | 2016-08-02 | B20-UPCB-1stP001, RM-SA-015 | 71d | 0d |  |
| B5-UPSD-C221 |  | Clearance process for Measurements , Framing&Enabling Works |  | 5d | 2016-08-03 | 2016-08-08 | B20-UPCB-1stP001, B20-UPCB-3rdP003, RM-SA-015 | 71d | 0d |  |
| B5-UPSD-C231 |  | Measurements , Framing & Enabling Works |  | 14d | 2016-08-09 | 2016-08-24 | B5-UPSD-C221 | 71d | 14d |  |
| B20-UPCB-C002 |  | Installation of Timber Flooring |  | 28d | 2016-09-14 | 2016-10-17 | B20-UPCB-3rdP003, RM-SA-015, Con000, RM-AC-015, B5-UPSD-C231, B20-UPCB-SDA150 | 57d | 0d | Steel [15 M3] |
| B20-UPCB-C001 |  | Installation of Light Fittings |  | 28d | 2016-10-18 | 2016-11-19 | B20-UPCB-1stP001, RM-SA-015, Con000, B20-UPCB-3rdP003, B20-UPCB-C002 | 67d | 10d | Steel [10 M3] |
| B20-UPCB-C003 |  | Installation of Joinery Works |  | 38d | 2016-10-18 | 2016-12-01 | B20-UPCB-C002, RM-SA-015, Con000, B20-UPCB-PR100 FF+7d, RM-AC-015 | 57d | 0d | Steel [5 M3] |
| B20-UPCB-C004 |  | Snagging and De-Snagging |  | 7d | 2016-12-03 | 2016-12-10 | B20-UPCB-C003, RM-SA-015, Con000, B20-UPCB-C001 | 57d | 0d | Steel [6 M3] |

| ID | WBS | Activity | Type | Duration | Start | Finish | Predecessors | Total float | Free float | Resources |
| --- | --- | --- | --- | --- | --- | --- | --- | --- | --- | --- |
|  | 16 | **Bill 28-LIFT CAR - TOWER A, B & D** |  |  | 2016-08-14 | 2017-02-15 |  |  |  |  |
| B28-TsLC-1stP001 |  | MEP 1st , 2nd Fix and Wall System | milestone | 0d | 2016-08-14 | 2016-08-14 | RM-SA-016 | 6d | 0d |  |
| B5-UPSD-C241 |  | Clearance process for Measurements , Framing&Enabling Works |  | 5d | 2016-08-14 | 2016-08-18 | B28-TsLC-1stP001 | 6d | 0d |  |
| B5-UPSD-C251 |  | Measurements , Framing & Enabling Works |  | 14d | 2016-08-20 | 2016-09-04 | B5-UPSD-C241 | 6d | 0d |  |
| B28-TsLC-C001 |  | Installation of Celling System |  | 21d | 2016-09-05 | 2016-10-03 | B28-TsLC-1stP001, RM-SA-016, Con000, B5-UPSD-C251 | 6d | 0d | Steel [20 M3] |
| B28-TsLC-2ndP002 |  | MEP Ceiling Closure Clearance |  | 7d | 2016-10-04 | 2016-10-11 | B28-TsLC-C001, RM-SA-016 | 6d | 0d |  |
| B28-TsLC-C002 |  | Ceiling Closure |  | 21d | 2016-10-12 | 2016-11-05 | B28-TsLC-2ndP002, RM-SA-016, Con000, B28-TsLC-PR180 | 6d | 0d | Steel [20 M3] |
| B28-TsLC-C009 |  | Installation of Metal Raling |  | 21d | 2016-11-06 | 2016-11-29 | B28-TsLC-C002, RM-SA-016, Con000 | 46d |  | Steel [10 M3] |
| B28-TsLC-3rdP003 |  | Flooring (by others) |  | 14d | 2016-11-12 | 2016-11-27 | B28-TsLC-C002 FS+5d, RM-SA-016 | 6d |  |  |
| B28-TsLC-C006 |  | Installation of Metal panelling |  | 14d | 2016-12-06 | 2016-12-22 | B28-TsLC-C002, RM-SA-016, Con000, B28-TsLC-PR140, B28-TsLC-3rdP003 | 0d |  | Steel [10 M3] |
| B28-TsLC-C005 |  | Installation of Light Fittings |  | 14d | 2016-12-24 | 2017-01-08 | B28-TsLC-C002, RM-SA-016, Con000, B28-TsLC-3rdP003, B28-TsLC-C006 | 0d |  | Steel [10 M3] |
| B28-TsLC-C004 |  | Installation of Wooden wall panelling |  | 14d | 2017-01-09 | 2017-01-24 | B28-TsLC-C002, RM-SA-016, Con000, B28-TsLC-PR100, RM-AC-016, B28-TsLC-C005 | 0d |  | Steel [10 M3] |
| B28-TsLC-C003 |  | Installation of Metal Skirting |  | 5d | 2017-01-25 | 2017-01-30 | B28-TsLC-3rdP003, B28-TsLC-C004, B28-TsLC-C005, B28-TsLC-C006, B28-TsLC-C009, RM-SA-016, Con000, B28-TsLC-PR140 | 0d |  | Steel [6 M3] |
| B28-TsLC-C007 |  | Installation of Glazing Works |  | 7d | 2017-01-31 | 2017-02-07 | RM-SA-016, B28-TsLC-C006, B28-TsLC-C005, B28-TsLC-C004, B28-TsLC-C003, B28-TsLC-C009, Con000, B28-TsLC-PR130 | 0d |  | Steel [10 M3] |
| B28-TsLC-C008 |  | Installation of Wall Covering |  | 5d | 2017-01-31 | 2017-02-05 | B28-TsLC-C004, B28-TsLC-C005, B28-TsLC-C006, B28-TsLC-C009, B28-TsLC-C003, RM-SA-016, Con000, B28-TsLC-PR220, RM-AC-016 | 2d |  | Steel [6 M3] |
| B28-TsLC-S010 |  | Snagging and De-Snagging |  | 7d | 2017-02-08 | 2017-02-15 | B28-TsLC-C008, RM-SA-016, B28-TsLC-C007, Con000 | 0d |  | Steel [10 M3] |
|  | 17 | **Bill 29-SPA** |  |  | 2016-08-07 | 2017-02-06 |  |  |  |  |
| B29-SPALC-1stP001 |  | MEP 1st , 2nd Fix and Wall System | milestone | 0d | 2016-08-07 | 2016-08-07 | RM-SA-017 | 14d | 0d |  |
| B5-UPSD-C261 |  | Clearance process for Measurements , Framing&Enabling Works |  | 5d | 2016-08-07 | 2016-08-11 | B29-SPALC-1stP001 | 14d | 0d |  |
| B5-UPSD-C271 |  | Measurements , Framing & Enabling Works |  | 14d | 2016-08-13 | 2016-08-28 | B5-UPSD-C261 | 14d | 0d |  |
| B29-SPALC-C001 |  | Installation of Celling System |  | 28d | 2016-08-29 | 2016-10-04 | B29-SPALC-1stP001, RM-SA-017, Con000, B5-UPSD-C271 | 14d | 0d | Steel [182 M3] |
| B29-SPALC-2ndP002 |  | MEP Ceiling Closure Clearance |  | 7d | 2016-10-05 | 2016-10-12 | B29-SPALC-C001, RM-SA-017 | 14d | 0d |  |
| B29-SPALC-C002 |  | Ceiling Closure |  | 28d | 2016-10-13 | 2016-11-14 | B29-SPALC-2ndP002, RM-SA-017, Con000, B29-SPALC-PR180 | 14d | 0d | Steel [182 M3] |
| B29-SPALC-3rdP003 |  | Flooring (by others) |  | 10d | 2016-11-15 | 2016-11-26 | B29-SPALC-C002, RM-SA-017 | 14d | 0d |  |
| B29-SPALC-C003 |  | Paint Works |  | 30d | 2016-11-27 | 2017-01-02 | B29-SPALC-3rdP003, RM-SA-017, Con000, B29-SPALC-PR120 | 14d | 0d | Steel [152 M3] |
| B29-SPALC-C004 |  | Installation of Wall Tiling |  | 10d | 2016-11-27 | 2016-12-08 | B29-SPALC-C003 SS, RM-SA-017, Con000, B29-SPALC-PR170, B29-SPALC-PR190 | 28d | 20d | Steel [60 M3] |
| B29-SPALC-C017 |  | Installation of Steel wall panelling |  | 21d | 2016-12-01 | 2016-12-26 | B29-SPALC-C003 SS+3d, RM-SA-017, Con000, B29-SPALC-PR140 | 14d | 6d | Steel [28 M3] |
| B29-SPALC-C011 |  | Installation of Wooden wall panelling |  | 21d | 2016-12-08 | 2017-01-02 | B29-SPALC-C003 SS+3d, RM-SA-017, Con000, RM-AC-017, B29-SPALC-PR210, B29-SPALC-PR100 FF+7d | 8d | 0d | Steel [28 M3] |
| B29-SPALC-C015 |  | Installation of Joinery Works |  | 14d | 2016-12-08 | 2016-12-25 | B29-SPALC-C003 SS+3d, RM-SA-017, Con000, B29-SPALC-PR100, RM-AC-017, B29-SPALC-PR210 | 15d | 7d | Steel [28 M3] |
| B29-SPALC-C007 |  | Installation of Doors & Ironmongery |  | 5d | 2016-12-17 | 2016-12-21 | B29-SPALC-C003 SS+3d, RM-SA-017, Con000, RM-AC-017, B29-SPALC-PR260 | 18d | 10d | Steel [30 M3] |
| B29-SPALC-C005 |  | Installation of Metal Skirting |  | 7d | 2017-01-03 | 2017-01-10 | B29-SPALC-C004, B29-SPALC-C007, B29-SPALC-C011, B29-SPALC-C015, B29-SPALC-C017, RM-SA-017, Con000, B29-SPALC-PR140 | 15d | 7d | Steel [28 M3] |
| B29-SPALC-C006 |  | Installation of Mirror |  | 7d | 2017-01-03 | 2017-01-10 | B29-SPALC-C004, B29-SPALC-C007, B29-SPALC-C011, B29-SPALC-C015, B29-SPALC-C017, RM-SA-017, Con000, B29-SPALC-PR130 | 15d | 7d | Steel [12 M3] |
| B29-SPALC-C008 |  | Installation of Light Fittings |  | 14d | 2017-01-03 | 2017-01-18 | B29-SPALC-C004, B29-SPALC-C007, B29-SPALC-C011, B29-SPALC-C015, B29-SPALC-C017, RM-SA-017, Con000 | 8d | 0d | Steel [50 M3] |
| B29-SPALC-C009 |  | Installation of Timber Flooring |  | 14d | 2017-01-03 | 2017-01-18 | B29-SPALC-C004, B29-SPALC-C007, B29-SPALC-C011, B29-SPALC-C015, B29-SPALC-C017, RM-SA-017, Con000, RM-AC-017 | 8d | 0d | Steel [42 M3] |
| B29-SPALC-C012 |  | Installation of Floor Tiling |  | 14d | 2017-01-03 | 2017-01-18 | B29-SPALC-C004, B29-SPALC-C007, B29-SPALC-C011, B29-SPALC-C015, B29-SPALC-C017, RM-SA-017, Con000, B29-SPALC-PR170, B29-SPALC-PR190 | 8d | 0d | Steel [28 M3] |
| B29-SPALC-C010 |  | Installation of Wall Covering |  | 7d | 2017-01-19 | 2017-01-26 | B29-SPALC-C005, B29-SPALC-C006, B29-SPALC-C008, B29-SPALC-C009, B29-SPALC-C012, B29-SPALC-C003, RM-SA-017, Con000, B29-SPALC-PR160, RM-AC-017, B29-SPALC-PR210 | 10d | 2d | Steel [20 M3] |
| B29-SPALC-C013 |  | Installation of Glazing Works |  | 9d | 2017-01-19 | 2017-01-29 | B29-SPALC-C005, B29-SPALC-C006, B29-SPALC-C008, B29-SPALC-C009, B29-SPALC-C012, RM-SA-017, Con000, B29-SPALC-PR130, RM-AC-017 | 8d | 0d | Steel [28 M3] |
| B29-SPALC-C014 |  | Installation of Sanitary Ware |  | 9d | 2017-01-19 | 2017-01-29 | B29-SPALC-C005, B29-SPALC-C006, B29-SPALC-C008, B29-SPALC-C009, B29-SPALC-C012, RM-SA-017, Con000 | 8d | 0d | Steel [35 M3] |
| B29-SPALC-S018 |  | Snagging and De-Snagging |  | 7d | 2017-01-30 | 2017-02-06 | B29-SPALC-C003, B29-SPALC-C010, B29-SPALC-C013, B29-SPALC-C014, RM-SA-017, Con000 | 8d | 0d | Steel [14 M3] |

| ID | WBS | Activity | Type | Duration | Start | Finish | Predecessors | Total float | Free float | Resources |
| --- | --- | --- | --- | --- | --- | --- | --- | --- | --- | --- |
|  | 18 | **Bill 34-UP-SPEAK EASY BAR** |  |  | 2016-07-05 | 2017-02-07 |  |  |  |  |
| B34-UPSEB-1stP001 |  | MEP 1st , 2nd Fix and Wall System | milestone | 0d | 2016-07-05 | 2016-07-05 | RM-SA-020 | 14d | 0d |  |
| B5-UPSD-C301 |  | Clearance process for Measurements , Framing&Enabling Works |  | 5d | 2016-07-05 | 2016-07-12 | B34-UPSEB-1stP001 | 14d | 0d |  |
| B5-UPSD-C311 |  | Measurements , Framing & Enabling Works |  | 14d | 2016-07-12 | 2016-07-27 | B5-UPSD-C301 FS-1d | 14d | 0d |  |
| B34-UPSEB-C001 |  | Installation of Celling System |  | 21d | 2016-07-28 | 2016-08-21 | B34-UPSEB-1stP001, RM-SA-020, Con000, B5-UPSD-C311 | 14d | 0d | Steel [20 M3] |
| B34-UPSEB-2ndP002 |  | MEP Ceiling Closure Clearance |  | 7d | 2016-08-22 | 2016-08-29 | B34-UPSEB-C001, RM-SA-020 | 14d | 6.4d |  |
| B34-UPSEB-C002 |  | Ceiling Closure |  | 21d | 2016-09-06 | 2016-10-05 | B34-UPSEB-2ndP002, RM-SA-020, Con000, B34-UPSEB-PR180 | 7.6d | 0d | Steel [20 M3] |
| B34-UPSEB-3rdP003 |  | Flooring (by others) |  | 14d | 2016-10-05 | 2016-10-22 | RM-SA-020, B34-UPSEB-C002 | 7.6d | 0d |  |
| B34-UPSEB-C004 |  | Installation of Wall Tiling |  | 14d | 2016-10-22 | 2016-11-07 | RM-SA-020, Con000, B34-UPSEB-PR190, B34-UPSEB-3rdP003 | 7.6d | 0d | Steel [14 M3] |
| B34-UPSEB-C003 |  | Paint Works |  | 21d | 2016-11-07 | 2016-12-03 | B34-UPSEB-3rdP003, RM-SA-020, Con000, B34-UPSEB-PR120, B34-UPSEB-C004 | 7.6d | 0d | Steel [42 M3] |
| B34-UPSEB-C011 |  | Installation of Wooden wall panelling |  | 21d | 2016-11-10 | 2016-12-06 | B34-UPSEB-C003 SS+3d, RM-SA-020, Con000, RM-AC-020, B34-UPSEB-C002 | 18.6d | 11d | Steel [14 M3] |
| B34-UPSEB-C017 |  | Installation of Steel wall panelling |  | 21d | 2016-11-10 | 2016-12-06 | B34-UPSEB-C003 SS+3d, RM-SA-020, Con000, B34-UPSEB-PR140 | 18.6d | 11d | Steel [14 M3] |
| B34-UPSEB-C015 |  | Installation of Joinery Works |  | 14d | 2016-12-03 | 2016-12-20 | B34-UPSEB-C003, RM-SA-020, Con000, B34-UPSEB-PR110 FF+7d, B34-UPSEB-PR130, B34-UPSEB-PR100 FF+7d, RM-AC-020 | 7.6d | 0d | Steel [14 M3] |
| B34-UPSEB-C005 |  | Installation of Metal Skirting |  | 7d | 2016-12-20 | 2016-12-28 | B34-UPSEB-C011, B34-UPSEB-C015, B34-UPSEB-C017, RM-SA-020, Con000, B34-UPSEB-PR140 | 21.6d | 14d | Steel [14 M3] |
| B34-UPSEB-C006 |  | Installation of Mirror |  | 7d | 2016-12-20 | 2016-12-28 | B34-UPSEB-C011, B34-UPSEB-C015, B34-UPSEB-C017, RM-SA-020, Con000, B34-UPSEB-PR130 | 21.6d | 14d | Steel [6 M3] |
| B34-UPSEB-C008 |  | Installation of Light Fittings |  | 14d | 2016-12-20 | 2017-01-05 | B34-UPSEB-C011, B34-UPSEB-C015, B34-UPSEB-C017, RM-SA-020, Con000, B34-UPSEB-C002 | 14.6d | 7d | Steel [10 M3] |
| B34-UPSEB-C009 |  | Installation of Timber Flooring |  | 21d | 2016-12-20 | 2017-01-14 | B34-UPSEB-C011, B34-UPSEB-C015, B34-UPSEB-C017, RM-SA-020, Con000, RM-AC-020, B34-UPSEB-C002 | 7.6d | 0d | Steel [14 M3] |
| B34-UPSEB-C012 |  | Installation of Floor Tiling |  | 7d | 2016-12-20 | 2016-12-28 | B34-UPSEB-C011, B34-UPSEB-C015, B34-UPSEB-C017, RM-SA-020, Con000, B34-UPSEB-PR170, B34-UPSEB-C002 | 21.6d | 14d | Steel [14 M3] |
| B34-UPSEB-C010 |  | Installation of Wall Covering |  | 7d | 2017-01-14 | 2017-01-22 | B34-UPSEB-C005, B34-UPSEB-C006, B34-UPSEB-C008, B34-UPSEB-C009, B34-UPSEB-C012, B34-UPSEB-C003, RM-SA-020, Con000, B34-UPSEB-PR160, RM-AC-020, B34-UPSEB-C002 | 14.6d | 7d | Steel [10 M3] |
| B34-UPSEB-C013 |  | Installation of Glazing Works |  | 7d | 2017-01-14 | 2017-01-22 | B34-UPSEB-C005, B34-UPSEB-C006, B34-UPSEB-C008, B34-UPSEB-C009, B34-UPSEB-C012, RM-SA-020, Con000, RM-AC-020 | 7.6d | 0d | Steel [14 M3] |
| B34-UPSEB-C014 |  | Installation of Sanitary Ware |  | 7d | 2017-01-14 | 2017-01-22 | B34-UPSEB-C005, B34-UPSEB-C006, B34-UPSEB-C008, B34-UPSEB-C009, B34-UPSEB-C012, RM-SA-020, Con000 | 14.6d | 7d | Steel [10 M3] |
| B34-UPSEB-C016 |  | Sanitary Ware |  | 7d | 2017-01-14 | 2017-01-22 | B34-UPSEB-C005, B34-UPSEB-C006, B34-UPSEB-C008, B34-UPSEB-C009, B34-UPSEB-C012, RM-SA-020, Con000 | 14.6d | 7d | Steel [6 M3] |
| B34-UPSEB-C007 |  | Installation of Doors & Ironmongery |  | 7d | 2017-01-22 | 2017-01-30 | RM-SA-020, Con000, B34-UPSEB-PR260, RM-AC-020, B34-UPSEB-C013 | 7.6d | 0d | Steel [6 M3] |
| B34-UPSEB-S018 |  | Snagging and De-Snagging |  | 7d | 2017-01-30 | 2017-02-07 | B34-UPSEB-C003, B34-UPSEB-C010, B34-UPSEB-C013, B34-UPSEB-C014, B34-UPSEB-C016, RM-SA-020, Con000, B34-UPSEB-C007 | 7.6d | 0d | Steel [14 M3] |

| ID | WBS | Activity | Type | Duration | Start | Finish | Predecessors | Total float | Free float | Resources |
| --- | --- | --- | --- | --- | --- | --- | --- | --- | --- | --- |
|  | 20 | **Bill 35-LIFT CAR - TOWER C** |  |  | 2016-08-07 | 2017-02-14 |  |  |  |  |
| B35-TCSR-1stP001 |  | MEP 1st , 2nd Fix and Wall System | milestone | 0d | 2016-08-07 | 2016-08-07 | RM-SA-021 | 23d | 0d |  |
| B5-UPSD-C321 |  | Clearance process for Measurements , Framing&Enabling Works |  | 5d | 2016-08-07 | 2016-08-11 | B35-TCSR-1stP001 | 23d | 0d |  |
| B5-UPSD-C331 |  | Measurements , Framing & Enabling Works |  | 14d | 2016-08-13 | 2016-08-28 | B5-UPSD-C321 | 23d | 0d |  |
| B35-TCSR-C001 |  | Installation of Celling System |  | 28d | 2016-08-29 | 2016-10-04 | B35-TCSR-1stP001, RM-SA-021, Con000, B5-UPSD-C331 | 23d | 0d | Steel [20 M3] |
| B35-TCSR-2ndP002 |  | MEP Ceiling Closure Clearance |  | 7d | 2016-10-05 | 2016-10-12 | B35-TCSR-C001, RM-SA-021 | 23d | 0d |  |
| B35-TCSR-C002 |  | Ceiling Closure |  | 28d | 2016-10-13 | 2016-11-14 | B35-TCSR-2ndP002, RM-SA-021, Con000, B35-TCSR-PR180 | 23d | 0d | Steel [20 M3] |
| B35-TCSR-3rdP003 |  | Flooring (by others) |  | 14d | 2016-11-15 | 2016-12-01 | B35-TCSR-C002, RM-SA-021 | 23d | 0d |  |
| B35-TCSR-C004 |  | Installation of Light Fittings |  | 14d | 2016-12-03 | 2016-12-19 | B35-TCSR-3rdP003, RM-SA-021, Con000 | 43d | 42d | Steel [10 M3] |
| B35-TCSR-C005 |  | Installation of Metal panelling |  | 21d | 2016-12-29 | 2017-01-22 | B35-TCSR-3rdP003, RM-SA-021, Con000, B35-TCSR-PR140, B35-TCLC-SDA160 | 1d | 0d | Steel [10 M3] |
| B35-TCSR-C006 |  | Installation of Metal Raling |  | 14d | 2016-12-29 | 2017-01-14 | B35-TCSR-3rdP003, RM-SA-021, Con000, B35-TCSR-PR140, RM-AC-021 | 21d | 20d | Steel [10 M3] |
| B35-TCSR-C003 |  | Installation of Metal Skirting |  | 14d | 2017-01-23 | 2017-02-07 | B35-TCSR-3rdP003 FS+3d, B35-TCSR-C005, RM-SA-021, Con000, B35-TCSR-PR140 | 1d | 0d | Steel [6 M3] |
| B35-TCSR-S007 |  | Snagging and De-Snagging |  | 7d | 2017-02-07 | 2017-02-14 | B35-TCSR-C003 FS-1d, B35-TCSR-C004, B35-TCSR-C005, B35-TCSR-C006, RM-SA-021, Con000 | 1d | 0d | Steel [10 M3] |
|  | 21 | **Bill 39-LG- LIFT LOBBY** |  |  | 2016-08-14 | 2017-02-11 |  |  |  |  |
| B39-LGLL-1stP001 |  | MEP 1st , 2nd Fix and Wall System | milestone | 0d | 2016-08-14 | 2016-08-14 | RM-SA-022 | 10d | 0d |  |
| B5-UPSD-C341 |  | Clearance process for Measurements , Framing&Enabling Works |  | 5d | 2016-08-14 | 2016-08-18 | B39-LGLL-1stP001 | 10d | 0d |  |
| B5-UPSD-C351 |  | Measurements , Framing & Enabling Works |  | 14d | 2016-08-20 | 2016-09-04 | B5-UPSD-C341 | 10d | 0d |  |
| B39-LGLL-C001 |  | Installation of Celling System |  | 21d | 2016-09-05 | 2016-10-03 | B39-LGLL-1stP001, RM-SA-022, Con000, B5-UPSD-C351 | 10d | 0d | Steel [20 M3] |
| B39-LGLL-2ndP002 |  | MEP Ceiling Closure Clearance |  | 7d | 2016-10-04 | 2016-10-11 | B39-LGLL-C001, RM-SA-022 | 10d | 0d |  |
| B39-LGLL-C002 |  | Ceiling Closure |  | 14d | 2016-10-12 | 2016-10-27 | B39-LGLL-2ndP002, RM-SA-022, Con000, B39-LGLL-PR180 | 10d | 0d | Steel [20 M3] |
| B39-LGLL-3rdP003 |  | Floor Tiling |  | 14d | 2016-10-29 | 2016-11-13 | B39-LGLL-C002, RM-SA-022 | 10d | 0d |  |
| B39-LGLL-C003 |  | Paint Works |  | 21d | 2016-11-14 | 2016-12-08 | B39-LGLL-3rdP003, RM-SA-022, Con000 | 10d | 0d | Steel [56 M3] |
| B39-LGLL-C005 |  | Installation of Light Fittings |  | 14d | 2016-12-10 | 2016-12-26 | RM-SA-022, Con000, B39-LGLL-C003 | 10d | 2d | Steel [10 M3] |
| B39-LGLL-C008 |  | Installation of Steel wall panelling |  | 28d | 2016-12-18 | 2017-01-18 | B39-LGLL-C003 SS+3d, RM-SA-022, Con000, B39-LGLL-PR140 | 4d | 0d | Steel [10 M3] |
| B39-LGLL-C007 |  | Installation of Wooden wall panelling |  | 14d | 2016-12-29 | 2017-01-14 | B39-LGLL-C003, RM-SA-022, Con000, B39-LGLL-PR100, RM-AC-022, B39-LGLL-C005 | 8d | 4d | Steel [10 M3] |
| B39-LGLL-C004 |  | Installation of Metal Skirting |  | 3d | 2017-01-19 | 2017-01-22 | B39-LGLL-C007, B39-LGLL-C008, RM-SA-022, Con000, B39-LGLL-PR140 | 4d | 0d | Steel [6 M3] |
| B39-LGLL-C006 |  | Installation of Glazing Works |  | 10d | 2017-01-23 | 2017-02-02 | B39-LGLL-C004, RM-SA-022, Con000, B39-LGLL-PR130, RM-AC-022 | 4d | 0d | Steel [10 M3] |
| B39-LGLL-S009 |  | Snagging and De-Snagging |  | 7d | 2017-02-04 | 2017-02-11 | B39-LGLL-C005, B39-LGLL-C006, B39-LGLL-C003, RM-SA-022, Con000 | 4d | 0d | Steel [10 M3] |

| ID | WBS | Activity | Type | Duration | Start | Finish | Predecessors | Complete | Planned start | Planned finish | Total float | Free float | Constraint | Calendar |
| --- | --- | --- | --- | --- | --- | --- | --- | --- | --- | --- | --- | --- | --- | --- |
|  | 13 | **Variation No: 009** |  |  | 2016-07-04 | 2017-02-15 |  |  |  |  |  |  |  |  |
|  | 6 | **Variation No,009 Milestones** |  |  | 2016-07-04 | 2016-11-27 |  |  |  |  |  |  |  |  |
| A1000 |  | Reciept of Engineering Instruction | milestone | 0d | 2016-07-04 A | 2016-07-04 A | KD01 | 100% | 2016-07-05 | 2016-07-05 |  |  | start on or after 2016-07-05 | ATL522 - Engineering Submission (5x9) |
|  | 1 | **Design Freeze** |  |  | 2016-07-05 | 2016-07-05 |  |  |  |  |  |  |  |  |
| A1010 |  | Design Freeze & Receipt of IFC Drawing BILL 17 - P1 - FAMILY FRIENDLY RESTAURANT | milestone | 0d | 2016-07-05 | 2016-07-05 | A1000 |  |  |  | 27.3d | 0.3d |  | 7x24 |
| A1020 |  | Design Freeze & Receipt of IFC Drawing BILL 17.2 - P1 - PUBLIC TOILETS | milestone | 0d | 2016-07-05 | 2016-07-05 | A1000 |  |  |  | 16.3d | 0.3d |  | 7x24 |
| A1030 |  | Design Freeze & Receipt of IFC Drawing BILL 21 - P1 - KID'S CLUB | milestone | 0d | 2016-07-05 | 2016-07-05 | A1000 |  |  |  | 16.3d | 0.3d |  | 7x24 |
| A1040 |  | Design Freeze & Receipt of IFC Drawing BILL 24 - 8F - GYM - TOWER C | milestone | 0d | 2016-07-05 | 2016-07-05 | A1000 |  |  |  | 7.3d | 0.3d |  | 7x24 |
| A1050 |  | Design Freeze & Receipt of IFC Drawing BILL 25 - 8F - MALE AND FEMALE TOILETS FOR GYM - TOWER C | milestone | 0d | 2016-07-05 | 2016-07-05 | A1000 |  |  |  | 7.3d | 0.3d |  | 7x24 |
| A1060 |  | Design Freeze & Receipt of IFC Drawing BILL 26 - 8F - SALON - TOWER C | milestone | 0d | 2016-07-05 | 2016-07-05 | A1000 |  |  |  | 7.3d | 0.3d |  | 7x24 |
| A1070 |  | Design Freeze & Receipt of IFC Drawing BILL 27.1 - 8F - GYM - TOWER A | milestone | 0d | 2016-07-05 | 2016-07-05 | A1000 |  |  |  | 7.3d | 0.3d |  | 7x24 |
| A1080 |  | Design Freeze & Receipt of IFC Drawing BILL 27.2 - 8F - GYM - TOWER B | milestone | 0d | 2016-07-05 | 2016-07-05 | A1000 |  |  |  | 7.3d | 0.3d |  | 7x24 |
| A1090 |  | Design Freeze & Receipt of IFC Drawing BILL 27.3 - 8F - GYM - TOWER D | milestone | 0d | 2016-07-05 | 2016-07-05 | A1000 |  |  |  | 7.3d | 0.3d |  | 7x24 |
| A1100 |  | Design Freeze & Receipt of IFC Drawing BILL 36 - UG - BARBER SHOP - TOWER C | milestone | 0d | 2016-07-05 | 2016-07-05 | A1000 |  |  |  | 7.3d | 0.3d |  | 7x24 |
| A1880 |  | Design Freeze & Receipt of IFC Drawing Bill 14-P1-PRE-FUNCTION | milestone | 0d | 2016-07-05 | 2016-07-05 | A1000 |  |  |  | 27.3d | 0.3d |  | 7x24 |
| A2260 |  | Design Freeze & Receipt of IFC Drawing Bill 15-P1-REST ROOMS (PRE-FUNTION) | milestone | 0d | 2016-07-05 | 2016-07-05 | A1000 |  |  |  | 27.3d | 0.3d |  | 7x24 |
| A2270 |  | Design Freeze & Receipt of IFC DrawingBill 33-P1-SCREENING ROOM | milestone | 0d | 2016-07-05 | 2016-07-05 | A1000 |  |  |  | 16.3d | 0.3d |  | 7x24 |
| A5310 |  | Design Freeze & Receipt of IFC Drawing BILL 37 - 7F - PUBLIC TOILETS | milestone | 0d | 2016-07-05 | 2016-07-05 | A1000 |  |  |  | 16.3d | 0.3d |  | 7x24 |
| A5540 |  | Design Freeze & Receipt of IFC Drawing BILL 38 - UG - GROCERY - TOWER A | milestone | 0d | 2016-07-05 | 2016-07-05 | A1000 |  |  |  | 7.3d | 0.3d |  | 7x24 |
| A5800 |  | Design Freeze & Receipt of IFC Drawing BILL 32 - Work Play Suite | milestone | 0d | 2016-07-05 | 2016-07-05 | A1000 |  |  |  | 56.3d | 0.3d |  | 7x24 |
|  | 2 | **Site Access** |  |  | 2016-09-18 | 2016-10-16 |  |  |  |  |  |  |  |  |
| A5250 |  | Site Access Bill 14-P1-PRE-FUNCTION | milestone | 0d | 2016-09-18 | 2016-09-18 | A1000 |  |  |  | 2.66d | 0.3d | start on or after 2016-09-18 | 7x24 |
| A5260 |  | Site Access Bill 15-P1-REST ROOMS (PRE-FUNTION) | milestone | 0d | 2016-09-18 | 2016-09-18 | A1000 |  |  |  | 2.66d | 0.3d | start on or after 2016-09-18 | 7x24 |
| A5270 |  | Site Access Bill 33-P1-SCREENING ROOM | milestone | 0d | 2016-09-18 | 2016-09-18 | A1000 |  |  |  | 1.66d | 0.3d | start on or after 2016-09-18 | 7x24 |
| A1110 |  | Site Access BILL 17 - P1 - FAMILY FRIENDLY RESTAURANT | milestone | 0d | 2016-10-02 | 2016-10-02 | A1000 |  |  |  | 2.66d | 1.3d | start on or after 2016-10-02 | 7x24 |
| A1120 |  | Site Access BILL 17.2 - P1 - PUBLIC TOILETS | milestone | 0d | 2016-10-02 | 2016-10-02 | A1000 |  |  |  | 2.66d | 1.3d | start on or after 2016-10-02 | 7x24 |
| A1130 |  | Site Access BILL 21 - P1 - KID'S CLUB | milestone | 0d | 2016-10-02 | 2016-10-02 | A1000 |  |  |  | 3.66d | 1.3d | start on or after 2016-10-02 | 7x24 |
| A1140 |  | Site Access BILL 24 - 8F - GYM - TOWER C | milestone | 0d | 2016-10-02 | 2016-10-02 | A1000 |  |  |  | 2.66d | 1.3d | start on or after 2016-10-02 | 7x24 |
| A1150 |  | Site Access BILL 25 - 8F - MALE AND FEMALE TOILETS FOR GYM - TOWER C | milestone | 0d | 2016-10-02 | 2016-10-02 | A1000 |  |  |  | 4.66d | 1.3d | start on or after 2016-10-02 | 7x24 |
| A1160 |  | Site Access BILL 26 - 8F - SALON - TOWER C | milestone | 0d | 2016-10-02 | 2016-10-02 | A1000 |  |  |  | 2.66d | 1.3d | start on or after 2016-10-02 | 7x24 |
| A1170 |  | Site Access BILL 27.1 - 8F - GYM - TOWER A | milestone | 0d | 2016-10-02 | 2016-10-02 | A1000 |  |  |  | 2.66d | 1.3d | start on or after 2016-10-02 | 7x24 |
| A1180 |  | Site Access BILL 27.2 - 8F - GYM - TOWER B | milestone | 0d | 2016-10-02 | 2016-10-02 | A1000 |  |  |  | 2.66d | 1.3d | start on or after 2016-10-02 | 7x24 |
| A1190 |  | Site Access BILL 27.3 - 8F - GYM - TOWER D | milestone | 0d | 2016-10-02 | 2016-10-02 | A1000 |  |  |  | 2.66d | 1.3d | start on or after 2016-10-02 | 7x24 |
| A5320 |  | Site Access BILL 37 - 7F - PUBLIC TOILETS | milestone | 0d | 2016-10-02 | 2016-10-02 | A1000 |  |  |  | 2.66d | 1.3d | start on or after 2016-10-02 | 7x24 |
| A1200 |  | Site Access BILL 36 - UG - BARBER SHOP - TOWER C | milestone | 0d | 2016-10-09 | 2016-10-09 | A1000 |  |  |  | 0.66d | 0.3d | start on or after 2016-10-09 | 7x24 |
| A5550 |  | Site Access BILL 38 - UG - GROCERY - TOWER A | milestone | 0d | 2016-10-16 | 2016-10-16 | A1000 |  |  |  | -0.34d | 0.3d | start on or after 2016-10-16 | 7x24 |
| A5810 |  | Site Access BILL 32 - Work Play Suite | milestone | 0d | 2016-10-16 | 2016-10-16 | A1000 |  |  |  | -0.34d | 0.3d | start on or after 2016-10-16 | 7x24 |

| ID | WBS | Activity | Type | Duration | Start | Finish | Predecessors | Total float | Free float | Constraint | Calendar | Resources |
| --- | --- | --- | --- | --- | --- | --- | --- | --- | --- | --- | --- | --- |
|  | 3 | **Wild Air Milestones** |  |  | 2016-11-20 | 2016-11-27 |  |  |  |  |  |  |
| A5290 |  | A/C Bill 15-P1-REST ROOMS (PRE-FUNTION) | milestone | 0d | 2016-11-20 | 2016-11-20 | A5260 | 48.3d | 7.3d | start on or after 2016-11-20 | 7x24 |  |
| A1210 |  | A/C BILL 17 - P1 - FAMILY FRIENDLY RESTAURANT | milestone | 0d | 2016-11-27 | 2016-11-27 | A1110 | 34.3d |  | start on or after 2016-11-27 | 7x24 |  |
| A1220 |  | A/C BILL 17.2 - P1 - PUBLIC TOILETS | milestone | 0d | 2016-11-27 | 2016-11-27 | A1120 | 34.3d |  | start on or after 2016-11-27 | 7x24 |  |
| A1230 |  | A/C BILL 21 - P1 - KID'S CLUB | milestone | 0d | 2016-11-27 | 2016-11-27 | A1130 | 20.3d | 18.3d | start on or after 2016-11-27 | 7x24 |  |
| A1240 |  | A/C BILL 24 - 8F - GYM - TOWER C | milestone | 0d | 2016-11-27 | 2016-11-27 | A1140 | 18.3d |  | start on or after 2016-11-27 | 7x24 |  |
| A1250 |  | A/C BILL 25 - 8F - MALE AND FEMALE TOILETS FOR GYM - TOWER C | milestone | 0d | 2016-11-27 | 2016-11-27 | A1150 | 21.3d | 18.3d | start on or after 2016-11-27 | 7x24 |  |
| A1260 |  | A/C BILL 26 - 8F - SALON - TOWER C | milestone | 0d | 2016-11-27 | 2016-11-27 | A1160 | 22.3d |  | start on or after 2016-11-27 | 7x24 |  |
| A1270 |  | A/C BILL 27.1 - 8F - GYM - TOWER A | milestone | 0d | 2016-11-27 | 2016-11-27 | A1170 | 22.3d |  | start on or after 2016-11-27 | 7x24 |  |
| A1280 |  | A/C BILL 27.2 - 8F - GYM - TOWER B | milestone | 0d | 2016-11-27 | 2016-11-27 | A1180 | 22.3d |  | start on or after 2016-11-27 | 7x24 |  |
| A1290 |  | A/C BILL 27.3 - 8F - GYM - TOWER D | milestone | 0d | 2016-11-27 | 2016-11-27 | A1190 | 22.3d |  | start on or after 2016-11-27 | 7x24 |  |
| A1300 |  | A/C BILL 36 - UG - BARBER SHOP - TOWER C | milestone | 0d | 2016-11-27 | 2016-11-27 | A1200 | 23.3d | 21.3d | start on or after 2016-11-27 | 7x24 |  |
| A5280 |  | A/C Bill 14-P1-PRE-FUNCTION | milestone | 0d | 2016-11-27 | 2016-11-27 | A5250 | 24.3d | 13.3d | start on or after 2016-11-27 | 7x24 |  |
| A5300 |  | A/C Bill 33-P1-SCREENING ROOM | milestone | 0d | 2016-11-27 | 2016-11-27 | A5270 | 30.3d | 6.3d | start on or after 2016-11-27 | 7x24 |  |
| A5330 |  | A/C BILL 25 - BILL37 - 7F - PUBLIC TOILETS | milestone | 0d | 2016-11-27 | 2016-11-27 | A5320 | 24.3d |  | start on or after 2016-11-27 | 7x24 |  |
| A5560 |  | A/C BILL 25 - 8F - MALE AND FEMALE TOILETS FOR GYM - TOWER C | milestone | 0d | 2016-11-27 | 2016-11-27 | A5320, A5550 | 21.3d | 18.3d | start on or after 2016-11-27 | 7x24 |  |
| A5570 |  | A/C BILL 38 - UG - GROCERY - TOWER A | milestone | 0d | 2016-11-27 | 2016-11-27 | A5550 | 18.3d |  | start on or after 2016-11-27 | 7x24 |  |
| A5820 |  | A/C BILL 32 Work Play Suite | milestone | 0d | 2016-11-27 | 2016-11-27 | A5810 | 18.3d |  | start on or after 2016-11-27 | 7x24 |  |
|  | 2 | **Engineering Phase** |  |  | 2016-07-05 | 2016-10-25 |  |  |  |  |  |  |
|  | 1 | **Shop Drawing Process** |  |  | 2016-07-05 | 2016-09-28 |  |  |  |  |  |  |
|  | 1 | **BILL 17 - P1 - FAMILY FRIENDLY RESTAURANT** |  |  | 2016-07-05 | 2016-09-05 |  |  |  |  |  |  |
| A1330 |  | Preparation and Submission of Shop Drawing |  | 28d | 2016-07-05 | 2016-08-15 | A1010, A1000 | 17d | 0d |  | ATL522 - Engineering Submission (5x9) | Preparation and Submission Shop Drawing [28 h] |
| A1340 |  | Review and Approval of Shop Drawing |  | 21d | 2016-08-16 | 2016-09-05 | A1330 | 23d | 20d |  | ATL522 - Engineering Approval (7x9) | Eng Clinet Approval [21 h] |
|  | 11 | **Bill 14-P1-PRE-FUNCTION** |  |  | 2016-07-05 | 2016-09-05 |  |  |  |  |  |  |
| A5190 |  | Preparation and Submission of Shop Drawing |  | 28d | 2016-07-05 | 2016-08-15 | A1880, A1000, RM-DF-013 | 17d | 0d |  | ATL522 - Engineering Submission (5x9) | Preparation and Submission Shop Drawing [28 h] |
| A5200 |  | Review and Approval of Shop Drawing |  | 21d | 2016-08-16 | 2016-09-05 | A5190 | 23d | 20d |  | ATL522 - Engineering Approval (7x9) | Eng Clinet Approval [21 h] |

| ID | WBS | Activity | Duration | Start | Finish | Predecessors | Total float | Free float | Calendar | Resources |
| --- | --- | --- | --- | --- | --- | --- | --- | --- | --- | --- |
|  | 12 | **Bill 15-P1-REST ROOMS (PRE-FUNTION)** |  | 2016-07-05 | 2016-09-05 |  |  |  |  |  |
| A5210 |  | Preparation and Submission of Shop Drawing | 28d | 2016-07-05 | 2016-08-15 | A2260, A1000, RM-DF-014 | 17d | 0d | ATL522 - Engineering Submission (5x9) | Preparation and Submission Shop Drawing [28 h] |
| A5220 |  | Review and Approval of Shop Drawing | 21d | 2016-08-16 | 2016-09-05 | A5210 | 23d | 20d | ATL522 - Engineering Approval (7x9) | Eng Clinet Approval [21 h] |
|  | 16 | **Bill 32 Work Play Suite** |  | 2016-07-05 | 2016-09-05 |  |  |  |  |  |
| A5830 |  | Preparation and Submission of Shop Drawing | 28d | 2016-07-05 | 2016-08-15 | A5800 | 38d | 0d | ATL522 - Engineering Submission (5x9) | Preparation and Submission Shop Drawing [28 h] |
| A5840 |  | Review and Approval of Shop Drawing | 21d | 2016-08-16 | 2016-09-05 | A5830 | 54d |  | ATL522 - Engineering Approval (7x9) | Eng Clinet Approval [21 h] |
|  | 13 | **Bill 33-P1-SCREENING ROOM** |  | 2016-07-05 | 2016-09-17 |  |  |  |  |  |
| A5230 |  | Preparation and Submission of Shop Drawing | 35d | 2016-07-05 | 2016-08-24 | A2270, A1000, RM-DF-019 | 10d | 0d | ATL522 - Engineering Submission (5x9) | Preparation and Submission Shop Drawing [28 h] |
| A5240 |  | Review and Approval of Shop Drawing | 21d | 2016-08-25 | 2016-09-17 | A5230 | 14d | 11d | ATL522 - Engineering Approval (7x9) | Eng Clinet Approval [21 h] |
|  | 14 | **BILL 37 - 7F - PUBLIC TOILETS** |  | 2016-07-05 | 2016-09-17 |  |  |  |  |  |
| A5340 |  | Preparation and Submission of Shop Drawing | 35d | 2016-07-05 | 2016-08-24 | A5310, A5540, A1000 | 10d | 0d | ATL522 - Engineering Submission (5x9) | Preparation and Submission Shop Drawing [28 h] |
| A5350 |  | Review and Approval of Shop Drawing | 21d | 2016-08-25 | 2016-09-17 | A5340 | 14d | 11d | ATL522 - Engineering Approval (7x9) | Eng Clinet Approval [21 h] |
|  | 2 | **BILL 17.2 - P1 - PUBLIC TOILETS** |  | 2016-07-05 | 2016-09-17 |  |  |  |  |  |
| A1350 |  | Preparation and Submission of Shop Drawing | 35d | 2016-07-05 | 2016-08-24 | A1020, A1000 | 10d | 0d | ATL522 - Engineering Submission (5x9) | Preparation and Submission Shop Drawing [28 h] |
| A1360 |  | Review and Approval of Shop Drawing | 21d | 2016-08-25 | 2016-09-17 | A1350 | 14d | 11d | ATL522 - Engineering Approval (7x9) | Eng Clinet Approval [21 h] |
|  | 3 | **BILL 21 - P1 - KID'S CLUB** |  | 2016-07-05 | 2016-09-17 |  |  |  |  |  |
| A1370 |  | Preparation and Submission of Shop Drawing | 35d | 2016-07-05 | 2016-08-24 | A1030, A1000 | 10d | 0d | ATL522 - Engineering Submission (5x9) | Preparation and Submission Shop Drawing [28 h] |
| A1380 |  | Review and Approval of Shop Drawing | 21d | 2016-08-25 | 2016-09-17 | A1370 | 14d | 11d | ATL522 - Engineering Approval (7x9) | Eng Clinet Approval [21 h] |
|  | 4 | **BILL 24 - 8F - GYM - TOWER C** |  | 2016-07-05 | 2016-09-28 |  |  |  |  |  |
| A1390 |  | Preparation and Submission of Shop Drawing | 42d | 2016-07-05 | 2016-09-04 | A1040, A1000 | 3d | 0d | ATL522 - Engineering Submission (5x9) | Preparation and Submission Shop Drawing [28 h] |
| A1400 |  | Review and Approval of Shop Drawing | 21d | 2016-09-05 | 2016-09-28 | A1390 | 3d | 0d | ATL522 - Engineering Approval (7x9) | Eng Clinet Approval [21 h] |
|  | 5 | **BILL 25 - 8F - MALE AND FEMALE TOILETS FOR GYM - TOWER C** |  | 2016-07-05 | 2016-09-28 |  |  |  |  |  |
| A1410 |  | Preparation and Submission of Shop Drawing | 42d | 2016-07-05 | 2016-09-04 | A1050, A1000 | 3d | 0d | ATL522 - Engineering Submission (5x9) | Preparation and Submission Shop Drawing [28 h] |
| A1420 |  | Review and Approval of Shop Drawing | 21d | 2016-09-05 | 2016-09-28 | A1410 | 3d | 0d | ATL522 - Engineering Approval (7x9) | Eng Clinet Approval [21 h] |

| ID | WBS | Activity | Duration | Start | Finish | Predecessors | Total float | Free float | Calendar | Resources |
| --- | --- | --- | --- | --- | --- | --- | --- | --- | --- | --- |
|  | 6 | **BILL 26 - 8F - SALON - TOWER C** |  | 2016-07-05 | 2016-09-28 |  |  |  |  |  |
| A1430 |  | Preparation and Submission of Shop Drawing | 42d | 2016-07-05 | 2016-09-04 | A1060, A1000 | 3d | 0d | ATL522 - Engineering Submission (5x9) | Preparation and Submission Shop Drawing [28 h] |
| A1440 |  | Review and Approval of Shop Drawing | 21d | 2016-09-05 | 2016-09-28 | A1430 | 3d | 0d | ATL522 - Engineering Approval (7x9) | Eng Clinet Approval [21 h] |
|  | 7 | **BILL 27.1 - 8F - GYM - TOWER A** |  | 2016-07-05 | 2016-09-28 |  |  |  |  |  |
| A1450 |  | Preparation and Submission of Shop Drawing | 42d | 2016-07-05 | 2016-09-04 | A1070, A1000 | 3d | 0d | ATL522 - Engineering Submission (5x9) | Preparation and Submission Shop Drawing [28 h] |
| A1460 |  | Review and Approval of Shop Drawing | 21d | 2016-09-05 | 2016-09-28 | A1450 | 3d | 0d | ATL522 - Engineering Approval (7x9) | Eng Clinet Approval [21 h] |
|  | 8 | **BILL 27.2 - 8F - GYM - TOWER B** |  | 2016-07-05 | 2016-09-28 |  |  |  |  |  |
| A1470 |  | Preparation and Submission of Shop Drawing | 42d | 2016-07-05 | 2016-09-04 | A1080, A1000 | 3d | 0d | ATL522 - Engineering Submission (5x9) | Preparation and Submission Shop Drawing [28 h] |
| A1480 |  | Review and Approval of Shop Drawing | 21d | 2016-09-05 | 2016-09-28 | A1470 | 3d | 0d | ATL522 - Engineering Approval (7x9) | Eng Clinet Approval [21 h] |
|  | 9 | **BILL 27.3 - 8F - GYM - TOWER D** |  | 2016-07-05 | 2016-09-28 |  |  |  |  |  |
| A1490 |  | Preparation and Submission of Shop Drawing | 42d | 2016-07-05 | 2016-09-04 | A1090, A1000 | 3d | 0d | ATL522 - Engineering Submission (5x9) | Preparation and Submission Shop Drawing [28 h] |
| A1500 |  | Review and Approval of Shop Drawing | 21d | 2016-09-05 | 2016-09-28 | A1490 | 3d | 0d | ATL522 - Engineering Approval (7x9) | Eng Clinet Approval [21 h] |
|  | 10 | **BILL 36 - UG - BARBER SHOP - TOWER C** |  | 2016-07-05 | 2016-09-28 |  |  |  |  |  |
| A1510 |  | Preparation and Submission of Shop Drawing | 42d | 2016-07-05 | 2016-09-04 | A1100, A1000 | 3d | 0d | ATL522 - Engineering Submission (5x9) | Preparation and Submission Shop Drawing [28 h] |
| A1520 |  | Review and Approval of Shop Drawing | 21d | 2016-09-05 | 2016-09-28 | A1510 | 3d | 0d | ATL522 - Engineering Approval (7x9) | Eng Clinet Approval [21 h] |
|  | 15 | **BILL 38 - UG - GROCERY - TOWER A** |  | 2016-07-05 | 2016-09-28 |  |  |  |  |  |
| A5580 |  | Preparation and Submission of Shop Drawing | 42d | 2016-07-05 | 2016-09-04 | A5540, A1000 | 3d | 0d | ATL522 - Engineering Submission (5x9) | Preparation and Submission Shop Drawing [28 h] |
| A5590 |  | Review and Approval of Shop Drawing | 21d | 2016-09-05 | 2016-09-28 | A5580 | 3d | 0d | ATL522 - Engineering Approval (7x9) | Eng Clinet Approval [21 h] |
|  | 2 | **Material Process** |  | 2016-07-05 | 2016-10-25 |  |  |  |  |  |
|  | 1 | **Wall Material** |  | 2016-07-05 | 2016-10-19 |  |  |  |  |  |
|  | 1 | **Preparation and Submission** |  | 2016-07-05 | 2016-09-27 |  |  |  |  |  |
| A1690 |  | Preparation and Submission of Paint Finish to Walls | 7d | 2016-07-05 | 2016-07-17 | A1000 | 6d | 0d | ATL522 - Engineering Submission (5x9) | Preparation and Submission Material [5 h] |
| A1700 |  | Preparation and Submission of Stone Finish to Wall | 7d | 2016-07-05 | 2016-07-17 | A1690 SS, A1000 | 6d | 0d | ATL522 - Engineering Submission (5x9) | Preparation and Submission Material [5 h] |
| A1710 |  | Preparation and Submission of Wall Tiling | 7d | 2016-07-18 | 2016-07-26 | A1700, A1000 | 6d | 0d | ATL522 - Engineering Submission (5x9) | Preparation and Submission Material [5 h] |
| A1720 |  | Preparation and Submission of Metal Finish to Wall | 7d | 2016-07-27 | 2016-08-04 | A1710, A1000 | 6d | 0d | ATL522 - Engineering Submission (5x9) | Preparation and Submission Material [5 h] |
| A1730 |  | Preparation and Submission of Wall Paper | 7d | 2016-08-07 | 2016-08-15 | A1720, A1000 | 6d | 0d | ATL522 - Engineering Submission (5x9) | Preparation and Submission Material [5 h] |
| A1740 |  | Preparation and Submission of Clear Acrylic Panel | 7d | 2016-08-16 | 2016-08-24 | A1730, A1000 | 6d | 0d | ATL522 - Engineering Submission (5x9) | Preparation and Submission Material [5 h] |
| A1750 |  | Preparation and Submission of Wood Wall Panels | 7d | 2016-08-25 | 2016-09-04 | A1740, A1000 | 6d | 0d | ATL522 - Engineering Submission (5x9) | Preparation and Submission Material [5 h] |
| A1760 |  | Preparation and Submission of Glass/Mirrors | 7d | 2016-09-05 | 2016-09-18 | A1750, A1000 | 6d | 0d | ATL522 - Engineering Submission (5x9) | Preparation and Submission Material [5 h] |
| A1770 |  | Preparation and Submission of Brick Panel | 7d | 2016-09-19 | 2016-09-27 | A1760, A1000 | 6d | 0d | ATL522 - Engineering Submission (5x9) | Preparation and Submission Material [5 h] |

| ID | WBS | Activity | Duration | Start | Finish | Predecessors | Total float | Free float | Calendar | Resources |
| --- | --- | --- | --- | --- | --- | --- | --- | --- | --- | --- |
|  | 2 | **Review and Approval** |  | 2016-07-18 | 2016-10-19 |  |  |  |  |  |
| A1780 |  | Review and Approval of Paint Finish to Walls | 21d | 2016-07-18 | 2016-08-07 | A1690 | 89d | 56d | ATL522 - Engineering Approval (7x9) | Eng Clinet Approval [21 h] |
| A1790 |  | Review and Approval of Stone Finish to Wall | 21d | 2016-07-18 | 2016-08-07 | A1700 | 40d | 7d | ATL522 - Engineering Approval (7x9) | Eng Clinet Approval [21 h] |
| A1800 |  | Review and Approval of Wall Tiling | 21d | 2016-07-27 | 2016-08-16 | A1710 | 31d | 15d | ATL522 - Engineering Approval (7x9) | Eng Clinet Approval [21 h] |
| A1810 |  | Review and Approval of Metal Finish to Wall | 21d | 2016-08-05 | 2016-08-25 | A1720 | 22d | 0d | ATL522 - Engineering Approval (7x9) | Eng Clinet Approval [21 h] |
| A1820 |  | Review and Approval of Wall Paper | 21d | 2016-08-16 | 2016-09-05 | A1730 | 84d | 0d | ATL522 - Engineering Approval (7x9) | Eng Clinet Approval [21 h] |
| A1830 |  | Review and Approval of Clear Acrylic Panel | 21d | 2016-08-25 | 2016-09-17 | A1740 | 17d | 0d | ATL522 - Engineering Approval (7x9) | Eng Clinet Approval [21 h] |
| A1840 |  | Review and Approval of Wood Wall Panels | 21d | 2016-09-05 | 2016-09-28 | A1750 | 11d | 0d | ATL522 - Engineering Approval (7x9) | Eng Clinet Approval [21 h] |
| A1850 |  | Review and Approval of Glass/Mirrors | 21d | 2016-09-19 | 2016-10-10 | A1760 | 8d | 0d | ATL522 - Engineering Approval (7x9) | Eng Clinet Approval [21 h] |
| A1860 |  | Review and Approval of Brick Panel | 21d | 2016-09-28 | 2016-10-19 | A1770 | 8d | 0d | ATL522 - Engineering Approval (7x9) | Eng Clinet Approval [21 h] |
|  | 2 | **Floor Material** |  | 2016-07-05 | 2016-10-19 |  |  |  |  |  |
|  | 1 | **Preparation and Submission** |  | 2016-07-05 | 2016-09-27 |  |  |  |  |  |
| A1530 |  | Preparation and Submission Metal Flooring | 7d | 2016-07-05 | 2016-07-17 | A1000 | 12d | 0d | ATL522 - Engineering Submission (5x9) | Preparation and Submission Material [5 h] |
| A1540 |  | Preparation and Submission Wooden Flooring | 7d | 2016-07-18 | 2016-07-26 | A1530 SS, A1000, A1530 | 12d | 0d | ATL522 - Engineering Submission (5x9) | Preparation and Submission Material [5 h] |
| A1550 |  | Preparation and Submission Floor Tiling | 7d | 2016-07-27 | 2016-08-04 | A1540, A1000 | 12d | 0d | ATL522 - Engineering Submission (5x9) | Preparation and Submission Material [5 h] |
| A1560 |  | Preparation and Submission Stone Flooring | 7d | 2016-08-07 | 2016-08-15 | A1550, A1000 | 12d | 0d | ATL522 - Engineering Submission (5x9) | Preparation and Submission Material [5 h] |
| A1570 |  | Preparation and Submission Carpet Flooring | 7d | 2016-08-16 | 2016-08-24 | A1560, A1000 | 25d | 0d | ATL522 - Engineering Submission (5x9) | Preparation and Submission Material [5 h] |
| A1580 |  | Preparation and Submission Vinyl Flooring | 7d | 2016-08-25 | 2016-09-04 | A1570, A1000 | 25d | 0d | ATL522 - Engineering Submission (5x9) | Preparation and Submission Material [5 h] |
| A1590 |  | Preparation and Submission Floor Painting | 7d | 2016-09-05 | 2016-09-18 | A1580, A1000 | 25d | 0d | ATL522 - Engineering Submission (5x9) | Preparation and Submission Material [5 h] |
| A1600 |  | Preparation and Submission Rubber Flooring | 7d | 2016-09-19 | 2016-09-27 | A1590, A1000 | 25d | 0d | ATL522 - Engineering Submission (5x9) | Preparation and Submission Material [5 h] |
|  | 2 | **Review and Approval** |  | 2016-07-18 | 2016-10-19 |  |  |  |  |  |
| A1610 |  | Review and Approval Metal Flooring | 21d | 2016-07-18 | 2016-08-07 | A1530, A1000 | 47d | 0d | ATL522 - Engineering Approval (7x9) | Eng Clinet Approval [21 h] |
| A1620 |  | Review and Approval Wooden Flooring | 21d | 2016-07-27 | 2016-08-16 | A1540, A1000 | 48d | 0d | ATL522 - Engineering Approval (7x9) | Eng Clinet Approval [21 h] |
| A1630 |  | Review and Approval Floor Tiling | 21d | 2016-08-05 | 2016-08-25 | A1550, A1000 | 27d | 6d | ATL522 - Engineering Approval (7x9) | Eng Clinet Approval [21 h] |
| A1640 |  | Review and Approval Stone Flooring | 21d | 2016-08-16 | 2016-09-05 | A1560, A1000 | 16d | 0d | ATL522 - Engineering Approval (7x9) | Eng Clinet Approval [21 h] |
| A1650 |  | Review and Approval Carpet Flooring | 21d | 2016-08-25 | 2016-09-17 | A1570, A1000 | 52d | 0d | ATL522 - Engineering Approval (7x9) | Eng Clinet Approval [21 h] |
| A1660 |  | Review and Approval Vinyl Flooring | 21d | 2016-09-05 | 2016-09-28 | A1580, A1000 | 48d | 0d | ATL522 - Engineering Approval (7x9) | Eng Clinet Approval [21 h] |
| A1670 |  | Review and Approval Floor Painting | 21d | 2016-09-19 | 2016-10-10 | A1590, A1000 | 59d | 0d | ATL522 - Engineering Approval (7x9) | Eng Clinet Approval [21 h] |
| A1680 |  | Review and Approval Rubber Flooring | 21d | 2016-09-28 | 2016-10-19 | A1600, A1000 | 35d | 0d | ATL522 - Engineering Approval (7x9) | Eng Clinet Approval [21 h] |

| ID | WBS | Activity | Duration | Start | Finish | Predecessors | Total float | Free float | Calendar | Resources |
| --- | --- | --- | --- | --- | --- | --- | --- | --- | --- | --- |
|  | 3 | **Celing Material** |  | 2016-07-05 | 2016-08-30 |  |  |  |  |  |
|  | 1 | **Preparation and Submission** |  | 2016-07-05 | 2016-08-09 |  |  |  |  |  |
| A1870 |  | Preparation and Submission of Suspended Ceiling | 10d | 2016-07-05 | 2016-07-20 | A1000 | 0d |  | ATL522 - Engineering Submission (5x9) | Preparation and Submission Material [5 h] |
| A1890 |  | Preparation and Submission of Gypsum Ceiling | 7d | 2016-07-21 | 2016-07-31 | A1870, A1000 | 19d | 0d | ATL522 - Engineering Submission (5x9) | Preparation and Submission Material [5 h] |
| A1900 |  | Preparation and Submission of Painting to Ceiling | 7d | 2016-08-01 | 2016-08-09 | A1890, A1000 | 26d | 0d | ATL522 - Engineering Submission (5x9) | Preparation and Submission Material [5 h] |
|  | 2 | **Review and Approval** |  | 2016-07-21 | 2016-08-30 |  |  |  |  |  |
| A1910 |  | Review and Approval of Suspended Ceiling | 21d | 2016-07-21 | 2016-08-10 | A1870 | 0d |  | ATL522 - Engineering Approval (7x9) | Eng Clinet Approval [21 h] |
| A1920 |  | Review and Approval of Gypsum Ceiling | 21d | 2016-08-01 | 2016-08-21 | A1890 | 25d | 7d | ATL522 - Engineering Approval (7x9) | Eng Clinet Approval [21 h] |
| A1930 |  | Review and Approval of Painting to Ceiling | 21d | 2016-08-10 | 2016-08-30 | A1900 | 38d | 5d | ATL522 - Engineering Approval (7x9) | Eng Clinet Approval [21 h] |
|  | 4 | **Carpentry and Joinery Material** |  | 2016-07-05 | 2016-09-28 |  |  |  |  |  |
|  | 1 | **Preparation and Submission** |  | 2016-07-05 | 2016-09-04 |  |  |  |  |  |
| A1940 |  | Preparation and Submission Internal Doors , Frames , Ironmongery and Hardware | 7d | 2016-07-05 | 2016-07-17 | A1000 | 12d | 0d | ATL522 - Engineering Submission (5x9) | Preparation and Submission Material [5 h] |
| A1950 |  | Preparation and Submission Vanities & Counters | 7d | 2016-07-18 | 2016-07-26 | A1940, A1000 | 12d | 0d | ATL522 - Engineering Submission (5x9) | Preparation and Submission Material [5 h] |
| A1960 |  | Preparation and Submission Shelves | 7d | 2016-07-27 | 2016-08-04 | A1950, A1000 | 12d | 0d | ATL522 - Engineering Submission (5x9) | Preparation and Submission Material [5 h] |
| A1970 |  | Preparation and Submission Seatings | 7d | 2016-08-07 | 2016-08-15 | A1960, A1000 | 12d | 0d | ATL522 - Engineering Submission (5x9) | Preparation and Submission Material [5 h] |
| A1980 |  | Preparation and Submission Wardrobes & Cabinets | 7d | 2016-08-16 | 2016-08-24 | A1970, A1000 | 12d | 0d | ATL522 - Engineering Submission (5x9) | Preparation and Submission Material [5 h] |
| A1990 |  | Preparation and Submission Tables | 7d | 2016-08-25 | 2016-09-04 | A1980, A1000 | 15d | 0d | ATL522 - Engineering Submission (5x9) | Preparation and Submission Material [5 h] |
|  | 2 | **Review and Approval** |  | 2016-07-18 | 2016-09-28 |  |  |  |  |  |
| A2000 |  | Review and Approval Internal Doors , Frames , Ironmongery and Hardware | 21d | 2016-07-18 | 2016-08-07 | A1940 | 81d | 0d | ATL522 - Engineering Approval (7x9) | Eng Clinet Approval [21 h] |
| A2010 |  | Review and Approval Vanities & Counters | 21d | 2016-07-27 | 2016-08-16 | A1950 | 39d | 0d | ATL522 - Engineering Approval (7x9) | Eng Clinet Approval [21 h] |
| A2020 |  | Review and Approval Shelves | 21d | 2016-08-05 | 2016-08-25 | A1960 | 45d | 0d | ATL522 - Engineering Approval (7x9) | Eng Clinet Approval [21 h] |
| A2030 |  | Review and Approval Seatings | 21d | 2016-08-16 | 2016-09-05 | A1970 | 40d | 0d | ATL522 - Engineering Approval (7x9) | Eng Clinet Approval [21 h] |
| A2040 |  | Review and Approval Wardrobes & Cabinets | 21d | 2016-08-25 | 2016-09-17 | A1980 | 18d | 0d | ATL522 - Engineering Approval (7x9) | Eng Clinet Approval [21 h] |
| A2050 |  | Review and Approval Tables | 21d | 2016-09-05 | 2016-09-28 | A1990 | 21d | 0d | ATL522 - Engineering Approval (7x9) | Eng Clinet Approval [21 h] |

| ID | WBS | Activity | Duration | Start | Finish | Predecessors | Total float | Free float | Calendar | Resources |
| --- | --- | --- | --- | --- | --- | --- | --- | --- | --- | --- |
|  | 5 | **Lighting Points and Fittings** |  | 2016-07-05 | 2016-10-25 |  |  |  |  |  |
|  | 1 | **Preparation and Submission** |  | 2016-07-05 | 2016-10-04 |  |  |  |  |  |
| A2060 |  | Preparation and Submission Recessed spotlight | 10d | 2016-07-05 | 2016-07-20 | A1000 | 11d | 0d | ATL522 - Engineering Submission (5x9) | Preparation and Submission Material [5 h] |
| A2070 |  | Preparation and Submission Indirect LED Strip | 10d | 2016-07-21 | 2016-08-03 | A2060, A1000 | 11d | 0d | ATL522 - Engineering Submission (5x9) | Preparation and Submission Material [5 h] |
| A2080 |  | Preparation and Submission Cover Plates | 10d | 2016-08-04 | 2016-08-17 | A2070, A1000 | 11d | 0d | ATL522 - Engineering Submission (5x9) | Preparation and Submission Material [5 h] |
| A2090 |  | Preparation and Submission Recessed Down Light | 10d | 2016-08-18 | 2016-08-31 | A2080, A1000 | 11d | 0d | ATL522 - Engineering Submission (5x9) | Preparation and Submission Material [5 h] |
| A2100 |  | Preparation and Submission Track Light | 10d | 2016-09-01 | 2016-09-19 | A2090, A1000 | 11d | 0d | ATL522 - Engineering Submission (5x9) | Preparation and Submission Material [5 h] |
| A2110 |  | Preparation and Submission LED Pin Light | 10d | 2016-09-20 | 2016-10-04 | A2100, A1000 | 11d | 0d | ATL522 - Engineering Submission (5x9) | Preparation and Submission Material [5 h] |
|  | 2 | **Review and Approval** |  | 2016-07-21 | 2016-10-25 |  |  |  |  |  |
| A2120 |  | Review and Approval Recessed spotlight | 21d | 2016-07-21 | 2016-08-10 | A2060 | 87d | 0d | ATL522 - Engineering Approval (7x9) | Eng Clinet Approval [21 h] |
| A2130 |  | Review and Approval Indirect LED Strip | 21d | 2016-08-04 | 2016-08-24 | A2070 | 73d | 0d | ATL522 - Engineering Approval (7x9) | Eng Clinet Approval [21 h] |
| A2140 |  | Review and Approval Cover Plates | 21d | 2016-08-18 | 2016-09-07 | A2080 | 59d | 0d | ATL522 - Engineering Approval (7x9) | Eng Clinet Approval [21 h] |
| A2150 |  | Review and Approval Recessed Down Light | 21d | 2016-09-01 | 2016-09-24 | A2090 | 45d | 0d | ATL522 - Engineering Approval (7x9) | Eng Clinet Approval [21 h] |
| A2160 |  | Review and Approval Track Light | 21d | 2016-09-20 | 2016-10-11 | A2100 | 29d | 0d | ATL522 - Engineering Approval (7x9) | Eng Clinet Approval [21 h] |
| A2170 |  | Review and Approval LED Pin Light | 21d | 2016-10-05 | 2016-10-25 | A2110 | 15d | 0d | ATL522 - Engineering Approval (7x9) | Eng Clinet Approval [21 h] |
|  | 6 | **Aluminium and Glazing Works** |  | 2016-07-05 | 2016-10-19 |  |  |  |  |  |
|  | 1 | **Preparation and Submission** |  | 2016-07-05 | 2016-09-27 |  |  |  |  |  |
| A2180 |  | Preparation and Submission Internal Glazed Partitions/ Dividing Screens | 14d | 2016-07-05 | 2016-07-26 | A1000 | 13d | 0d | ATL522 - Engineering Submission (5x9) | Preparation and Submission Material [5 h] |
| A2190 |  | Preparation and Submission Internal Glazed Doors | 14d | 2016-07-27 | 2016-08-15 | A2180, A1000 | 13d | 0d | ATL522 - Engineering Submission (5x9) | Preparation and Submission Material [5 h] |
| A2200 |  | Preparation and Submission Windows | 14d | 2016-08-16 | 2016-09-04 | A2190, A1000 | 13d | 0d | ATL522 - Engineering Submission (5x9) | Preparation and Submission Material [5 h] |
| A2210 |  | Preparation and Submission Balustrades and Railing | 14d | 2016-09-05 | 2016-09-27 | A2200, A1000 | 13d | 0d | ATL522 - Engineering Submission (5x9) | Preparation and Submission Material [5 h] |
|  | 2 | **Review and Approval** |  | 2016-07-27 | 2016-10-19 |  |  |  |  |  |
| A2220 |  | Review and Approval Internal Glazed Partitions/ Dividing Screens | 21d | 2016-07-27 | 2016-08-16 | A2180 | 83d | 0d | ATL522 - Engineering Approval (7x9) | Eng Clinet Approval [21 h] |
| A2230 |  | Review and Approval Internal Glazed Doors | 21d | 2016-08-16 | 2016-09-05 | A2190 | 63d | 0d | ATL522 - Engineering Approval (7x9) | Eng Clinet Approval [21 h] |
| A2240 |  | Review and Approval Windows | 21d | 2016-09-05 | 2016-09-28 | A2200 | 37d | 0d | ATL522 - Engineering Approval (7x9) | Eng Clinet Approval [21 h] |
| A2250 |  | Review and Approval Balustrades and Railing | 21d | 2016-09-28 | 2016-10-19 | A2210 | 19d | 0d | ATL522 - Engineering Approval (7x9) | Eng Clinet Approval [21 h] |

| ID | WBS | Activity | Duration | Start | Finish | Predecessors | Total float | Free float | Calendar | Resources |
| --- | --- | --- | --- | --- | --- | --- | --- | --- | --- | --- |
|  | 7 | **Sanitary Appliances and Accessories** |  | 2016-07-05 | 2016-09-17 |  |  |  |  |  |
|  | 1 | **Preparation and Submission** |  | 2016-07-05 | 2016-08-24 |  |  |  |  |  |
| A2980 |  | Preparation and Submission of Sanitary Equipment & Fixture | 35d | 2016-07-05 | 2016-08-24 | A1000 | 38d | 0d | ATL522 - Engineering Submission (5x9) | Preparation and Submission Material [21 h] |
|  | 2 | **Review and Approval** |  | 2016-08-25 | 2016-09-17 |  |  |  |  |  |
| A2990 |  | Review and Approval of Sanitary Equipment & Fixture | 21d | 2016-08-25 | 2016-09-17 | A2980 | 56d | 0d | ATL522 - Engineering Approval (7x9) | Eng Clinet Approval [21 h] |
|  | 3 | **Procurement Phase** |  | 2016-08-07 | 2017-01-12 |  |  |  |  |  |
|  | 2 | **Floor Material** |  | 2016-08-07 | 2016-12-30 |  |  |  |  |  |
| A2340 |  | Fabrication and Delivery Metal Flooring | 70d | 2016-08-07 | 2016-10-20 | A1610, A1340 FF+21d, A1360 FF+21d, A1380 FF+21d, A1400 FF+21d, A1420 FF+21d, A1440 FF+21d, A1460 FF+21d, A1480 FF+21d, A1500 FF+21d, A1520 FF+21d, A5200 FF+21d, A5220 FF+21d, A5240 FF+21d, A5350 FF+21d, A5590 FF+21d, A1000 | 47.62d |  | ATL522 - Local Procurment (7x24) | Procurement [70 h] |
| A2350 |  | Fabrication and Delivery Wooden Flooring | 70d | 2016-08-16 | 2016-10-29 | A1620, A1340 FF+21d, A1360 FF+21d, A1380 FF+21d, A1400 FF+21d, A1420 FF+21d, A1440 FF+21d, A1460 FF+21d, A1480 FF+21d, A1500 FF+21d, A1520 FF+21d, A5200 FF+21d, A5220 FF+21d, A5240 FF+21d, A5350 FF+21d, A5590 FF+21d, A1000 | 48.62d |  | ATL522 - Local Procurment (7x24) | Procurement [70 h] |
| A2360 |  | Fabrication and Delivery Floor Tiling | 70d | 2016-09-01 | 2016-11-14 | A1630, A1340 FF+21d, A1360 FF+21d, A1380 FF+21d, A1400 FF+21d, A1420 FF+21d, A1440 FF+21d, A1460 FF+21d, A1480 FF+21d, A1500 FF+21d, A1520 FF+21d, A5200 FF+21d, A5220 FF+21d, A5240 FF+21d, A5350 FF+21d, A5590 FF+21d, A1000 | 21.31d |  | ATL522 - EU Procurment (7x24) | Procurement [70 h] |
| A2370 |  | Fabrication and Delivery Stone Flooring | 70d | 2016-09-05 | 2016-11-18 | A1640, A1340 FF+21d, A1360 FF+21d, A1380 FF+21d, A1400 FF+21d, A1420 FF+21d, A1440 FF+21d, A1460 FF+21d, A1480 FF+21d, A1500 FF+21d, A1520 FF+21d, A5200 FF+21d, A5220 FF+21d, A5240 FF+21d, A5350 FF+21d, A5590 FF+21d, A1000 | 16.62d |  | ATL522 - Local Procurment (7x24) | Procurement [70 h] |
| A2380 |  | Fabrication and Delivery Carpet Flooring | 84d | 2016-09-17 | 2016-12-13 | A1650, A1340 FF+21d, A1360 FF+21d, A1380 FF+21d, A1400 FF+21d, A1420 FF+21d, A1440 FF+21d, A1460 FF+21d, A1480 FF+21d, A1500 FF+21d, A1520 FF+21d, A5200 FF+21d, A5220 FF+21d, A5240 FF+21d, A5350 FF+21d, A5590 FF+21d, A1000 | 52.62d |  | ATL522 - Local Procurment (7x24) | Procurement [84 h] |
| A2390 |  | Fabrication and Delivery Vinyl Flooring | 77d | 2016-09-28 | 2016-12-17 | A1660, A1340 FF+21d, A1360 FF+21d, A1380 FF+21d, A1400 FF+21d, A1420 FF+21d, A1440 FF+21d, A1460 FF+21d, A1480 FF+21d, A1500 FF+21d, A1520 FF+21d, A5200 FF+21d, A5220 FF+21d, A5240 FF+21d, A5350 FF+21d, A5590 FF+21d, A1000 | 48.62d |  | ATL522 - Local Procurment (7x24) | Procurement [77 h] |
| A2400 |  | Fabrication and Delivery Floor Painting | 42d | 2016-10-10 | 2016-11-21 | A1670, A1340 FF+21d, A1360 FF+21d, A1380 FF+21d, A1400 FF+21d, A1420 FF+21d, A1440 FF+21d, A1460 FF+21d, A1480 FF+21d, A1500 FF+21d, A1520 FF+21d, A5200 FF+21d, A5220 FF+21d, A5240 FF+21d, A5350 FF+21d, A5590 FF+21d, A1000 | 59d | 54d | ATL522 - Local Procurment (7x24) | Procurement [42 h] |
| A2410 |  | Fabrication and Delivery Rubber Flooring | 70d | 2016-10-19 | 2016-12-30 | A1680, A1340 FF+21d, A1360 FF+21d, A1380 FF+21d, A1400 FF+21d, A1420 FF+21d, A1440 FF+21d, A1460 FF+21d, A1480 FF+21d, A1500 FF+21d, A1520 FF+21d, A5200 FF+21d, A5220 FF+21d, A5240 FF+21d, A5350 FF+21d, A5590 FF+21d, A1000 | 35.62d |  | ATL522 - Local Procurment (7x24) | Procurement [70 h] |
|  | 1 | **Wall Material** |  | 2016-08-14 | 2016-12-02 |  |  |  |  |  |
| A2520 |  | Fabrication and Delivery of Stone Finish to Wall | 63d | 2016-08-14 | 2016-10-20 | A1790, A1340 FF+21d, A1360 FF+21d, A1380 FF+21d, A1400 FF+21d, A1420 FF+21d, A1440 FF+21d, A1460 FF+21d, A1480 FF+21d, A1500 FF+21d, A1520 FF+21d, A5200 FF+21d, A5220 FF+21d, A5240 FF+21d, A5350 FF+21d, A5590 FF+21d | 33.62d |  | ATL522 - Local Procurment (7x24) | Procurement [63 h] |
| A2540 |  | Fabrication and Delivery of Metal Finish to Wall | 63d | 2016-08-25 | 2016-10-31 | A1810, A1340 FF+21d, A1360 FF+21d, A1380 FF+21d, A1400 FF+21d, A1420 FF+21d, A1440 FF+21d, A1460 FF+21d, A1480 FF+21d, A1500 FF+21d, A1520 FF+21d, A5200 FF+21d, A5220 FF+21d, A5240 FF+21d, A5350 FF+21d, A5590 FF+21d | 22.62d |  | ATL522 - Local Procurment (7x24) | Procurement [63 h] |
| A2530 |  | Fabrication and Delivery of Wall Tiling | 63d | 2016-09-01 | 2016-11-07 | A1800, A1340 FF+21d, A1360 FF+21d, A1380 FF+21d, A1400 FF+21d, A1420 FF+21d, A1440 FF+21d, A1460 FF+21d, A1480 FF+21d, A1500 FF+21d, A1520 FF+21d, A5200 FF+21d, A5220 FF+21d, A5240 FF+21d, A5350 FF+21d, A5590 FF+21d | 16.31d |  | ATL522 - EU Procurment (7x24) | Procurement [63 h] |
| A2550 |  | Fabrication and Delivery of Wall Paper | 49d | 2016-09-05 | 2016-10-28 | A1820, A1340 FF+21d, A1360 FF+21d, A1380 FF+21d, A1400 FF+21d, A1420 FF+21d, A1440 FF+21d, A1460 FF+21d, A1480 FF+21d, A1500 FF+21d, A1520 FF+21d, A5200 FF+21d, A5220 FF+21d, A5240 FF+21d, A5350 FF+21d, A5590 FF+21d | 84.62d |  | ATL522 - Local Procurment (7x24) | Procurement [49 h] |
| A2560 |  | Fabrication and Delivery of Clear Acrylic Panel | 49d | 2016-09-17 | 2016-11-06 | A1830, A1340 FF+21d, A1360 FF+21d, A1380 FF+21d, A1400 FF+21d, A1420 FF+21d, A1440 FF+21d, A1460 FF+21d, A1480 FF+21d, A1500 FF+21d, A1520 FF+21d, A5200 FF+21d, A5220 FF+21d, A5240 FF+21d, A5350 FF+21d, A5590 FF+21d | 17.62d | 16.62d | ATL522 - Local Procurment (7x24) | Procurement [49 h] |
| A2570 |  | Fabrication and Delivery of Wood Wall Panels | 63d | 2016-09-28 | 2016-12-02 | A1840, A1340 FF+21d, A1360 FF+21d, A1380 FF+21d, A1400 FF+21d, A1420 FF+21d, A1440 FF+21d, A1460 FF+21d, A1480 FF+21d, A1500 FF+21d, A1520 FF+21d, A5200 FF+21d, A5220 FF+21d, A5240 FF+21d, A5350 FF+21d, A5590 FF+21d | 11.62d |  | ATL522 - Local Procurment (7x24) | Procurement [63 h] |
| A2510 |  | Fabrication and Delivery of Paint Finish to Walls | 14d | 2016-10-06 | 2016-10-20 | A1780, A1340 FF+21d, A1360 FF+21d, A1380 FF+21d, A1400 FF+21d, A1420 FF+21d, A1440 FF+21d, A1460 FF+21d, A1480 FF+21d, A1500 FF+21d, A1520 FF+21d, A5200 FF+21d, A5220 FF+21d, A5240 FF+21d, A5350 FF+21d, A5590 FF+21d | 33.62d | 30.62d | ATL522 - Local Procurment (7x24) | Procurement [14 h] |
| A2580 |  | Fabrication and Delivery of Glass/Mirrors | 35d | 2016-10-10 | 2016-11-14 | A1850, A1340 FF+21d, A1360 FF+21d, A1380 FF+21d, A1400 FF+21d, A1420 FF+21d, A1440 FF+21d, A1460 FF+21d, A1480 FF+21d, A1500 FF+21d, A1520 FF+21d, A5200 FF+21d, A5220 FF+21d, A5240 FF+21d, A5350 FF+21d, A5590 FF+21d | 8.62d |  | ATL522 - Local Procurment (7x24) | Procurement [35 h] |
| A2590 |  | Fabrication and Delivery of Brick Panel | 35d | 2016-10-19 | 2016-11-23 | A1860, A1340 FF+21d, A1360 FF+21d, A1380 FF+21d, A1400 FF+21d, A1420 FF+21d, A1440 FF+21d, A1460 FF+21d, A1480 FF+21d, A1500 FF+21d, A1520 FF+21d, A5200 FF+21d, A5220 FF+21d, A5240 FF+21d, A5350 FF+21d, A5590 FF+21d | 8.62d | 5.62d | ATL522 - Local Procurment (7x24) | Procurement [35 h] |

| ID | WBS | Activity | Duration | Start | Finish | Predecessors | Total float | Free float | Calendar | Resources |
| --- | --- | --- | --- | --- | --- | --- | --- | --- | --- | --- |
|  | 3 | **Celing Material** |  | 2016-08-10 | 2016-10-23 |  |  |  |  |  |
| A2630 |  | Fabrication and Delivery of Suspended Ceiling | 70d | 2016-08-10 | 2016-10-23 | A1910, A1340 FF+21d, A1360 FF+21d, A1380 FF+21d, A1400 FF+21d, A1420 FF+21d, A1440 FF+21d, A1460 FF+21d, A1480 FF+21d, A1500 FF+21d, A1520 FF+21d, A5200 FF+21d, A5220 FF+21d, A5240 FF+21d, A5350 FF+21d, A5590 FF+21d | 0.62d |  | ATL522 - Local Procurment (7x24) | Procurement [70 h] |
| A2640 |  | Fabrication and Delivery of Gypsum Ceiling | 49d | 2016-08-28 | 2016-10-20 | A1920, A1340 FF+21d, A1360 FF+21d, A1380 FF+21d, A1400 FF+21d, A1420 FF+21d, A1440 FF+21d, A1460 FF+21d, A1480 FF+21d, A1500 FF+21d, A1520 FF+21d, A5200 FF+21d, A5220 FF+21d, A5240 FF+21d, A5350 FF+21d, A5590 FF+21d | 18.62d |  | ATL522 - Local Procurment (7x24) | Procurement [49 h] |
| A2650 |  | Fabrication and Delivery of Painting to Ceiling | 42d | 2016-09-04 | 2016-10-20 | A1930, A1340 FF+21d, A1360 FF+21d, A1380 FF+21d, A1400 FF+21d, A1420 FF+21d, A1440 FF+21d, A1460 FF+21d, A1480 FF+21d, A1500 FF+21d, A1520 FF+21d, A5200 FF+21d, A5220 FF+21d, A5240 FF+21d, A5350 FF+21d, A5590 FF+21d | 33.62d | 30.62d | ATL522 - Local Procurment (7x24) | Procurement [42 h] |
|  | 4 | **Carpentry and Joinery Material** |  | 2016-08-07 | 2016-12-17 |  |  |  |  |  |
| A2720 |  | Fabrication and Delivery Internal Doors , Frames , Ironmongery and Hardware | 84d | 2016-08-07 | 2016-11-03 | A2000, A1340 FF+21d, A1360 FF+21d, A1380 FF+21d, A1400 FF+21d, A1420 FF+21d, A1440 FF+21d, A1460 FF+21d, A1480 FF+21d, A1500 FF+21d, A1520 FF+21d, A5200 FF+21d, A5220 FF+21d, A5240 FF+21d, A5350 FF+21d, A5590 FF+21d | 81.62d | 80.62d | ATL522 - Local Procurment (7x24) | Procurement [84 h] |
| A2730 |  | Fabrication and Delivery Vanities & Counters | 91d | 2016-08-16 | 2016-11-19 | A2010, A1340 FF+21d, A1360 FF+21d, A1380 FF+21d, A1400 FF+21d, A1420 FF+21d, A1440 FF+21d, A1460 FF+21d, A1480 FF+21d, A1500 FF+21d, A1520 FF+21d, A5200 FF+21d, A5220 FF+21d, A5240 FF+21d, A5350 FF+21d, A5590 FF+21d | 39.62d |  | ATL522 - Local Procurment (7x24) | Procurement [91 h] |
| A2740 |  | Fabrication and Delivery Shelves | 77d | 2016-08-25 | 2016-11-14 | A2020, A1340 FF+21d, A1360 FF+21d, A1380 FF+21d, A1400 FF+21d, A1420 FF+21d, A1440 FF+21d, A1460 FF+21d, A1480 FF+21d, A1500 FF+21d, A1520 FF+21d, A5200 FF+21d, A5220 FF+21d, A5240 FF+21d, A5350 FF+21d, A5590 FF+21d | 45.62d |  | ATL522 - Local Procurment (7x24) | Procurement [77 h] |
| A2750 |  | Fabrication and Delivery Seatings | 77d | 2016-09-05 | 2016-11-25 | A2030, A1340 FF+21d, A1360 FF+21d, A1380 FF+21d, A1400 FF+21d, A1420 FF+21d, A1440 FF+21d, A1460 FF+21d, A1480 FF+21d, A1500 FF+21d, A1520 FF+21d, A5200 FF+21d, A5220 FF+21d, A5240 FF+21d, A5350 FF+21d, A5590 FF+21d | 40.62d |  | ATL522 - Local Procurment (7x24) | Procurement [77 h] |
| A2760 |  | Fabrication and Delivery Wardrobes & Cabinets | 84d | 2016-09-17 | 2016-12-13 | A2040, A1340 FF+21d, A1360 FF+21d, A1380 FF+21d, A1400 FF+21d, A1420 FF+21d, A1440 FF+21d, A1460 FF+21d, A1480 FF+21d, A1500 FF+21d, A1520 FF+21d, A5200 FF+21d, A5220 FF+21d, A5240 FF+21d, A5350 FF+21d, A5590 FF+21d | 18.62d |  | ATL522 - Local Procurment (7x24) | Procurement [84 h] |
| A2770 |  | Fabrication and Delivery Tables | 77d | 2016-09-28 | 2016-12-17 | A2050, A1340 FF+21d, A1360 FF+21d, A1380 FF+21d, A1400 FF+21d, A1420 FF+21d, A1440 FF+21d, A1460 FF+21d, A1480 FF+21d, A1500 FF+21d, A1520 FF+21d, A5200 FF+21d, A5220 FF+21d, A5240 FF+21d, A5350 FF+21d, A5590 FF+21d | 21.62d |  | ATL522 - Local Procurment (7x24) | Procurement [77 h] |
|  | 5 | **Lighting Points and Fittings** |  | 2016-08-10 | 2017-01-12 |  |  |  |  |  |
| A2840 |  | Fabrication and Delivery Recessed spotlight | 77d | 2016-08-10 | 2016-10-30 | A2120, A1340 FF+21d, A1360 FF+21d, A1380 FF+21d, A1400 FF+21d, A1420 FF+21d, A1440 FF+21d, A1460 FF+21d, A1480 FF+21d, A1500 FF+21d, A1520 FF+21d, A5200 FF+21d, A5220 FF+21d, A5240 FF+21d, A5350 FF+21d, A5590 FF+21d | 87.62d | 84.62d | ATL522 - Local Procurment (7x24) | Procurement [77 h] |
| A2850 |  | Fabrication and Delivery Indirect LED Strip | 77d | 2016-08-24 | 2016-11-13 | A2130, A1340 FF+21d, A1360 FF+21d, A1380 FF+21d, A1400 FF+21d, A1420 FF+21d, A1440 FF+21d, A1460 FF+21d, A1480 FF+21d, A1500 FF+21d, A1520 FF+21d, A5200 FF+21d, A5220 FF+21d, A5240 FF+21d, A5350 FF+21d, A5590 FF+21d | 73.62d | 70.62d | ATL522 - Local Procurment (7x24) | Procurement [77 h] |
| A2860 |  | Fabrication and Delivery Cover Plates | 77d | 2016-09-07 | 2016-11-27 | A2140, A1340 FF+21d, A1360 FF+21d, A1380 FF+21d, A1400 FF+21d, A1420 FF+21d, A1440 FF+21d, A1460 FF+21d, A1480 FF+21d, A1500 FF+21d, A1520 FF+21d, A5200 FF+21d, A5220 FF+21d, A5240 FF+21d, A5350 FF+21d, A5590 FF+21d | 59.62d | 56.62d | ATL522 - Local Procurment (7x24) | Procurement [77 h] |
| A2870 |  | Fabrication and Delivery Recessed Down Light | 77d | 2016-09-24 | 2016-12-13 | A2150, A1340 FF+21d, A1360 FF+21d, A1380 FF+21d, A1400 FF+21d, A1420 FF+21d, A1440 FF+21d, A1460 FF+21d, A1480 FF+21d, A1500 FF+21d, A1520 FF+21d, A5200 FF+21d, A5220 FF+21d, A5240 FF+21d, A5350 FF+21d, A5590 FF+21d | 45.62d | 42.62d | ATL522 - Local Procurment (7x24) | Procurement [77 h] |
| A2880 |  | Fabrication and Delivery Track Light | 77d | 2016-10-11 | 2016-12-29 | A2160, A1340 FF+21d, A1360 FF+21d, A1380 FF+21d, A1400 FF+21d, A1420 FF+21d, A1440 FF+21d, A1460 FF+21d, A1480 FF+21d, A1500 FF+21d, A1520 FF+21d, A5200 FF+21d, A5220 FF+21d, A5240 FF+21d, A5350 FF+21d, A5590 FF+21d | 29.62d | 26.62d | ATL522 - Local Procurment (7x24) | Procurement [77 h] |
| A2890 |  | Fabrication and Delivery LED Pin Light | 77d | 2016-10-25 | 2017-01-12 | A2170, A1340 FF+21d, A1360 FF+21d, A1380 FF+21d, A1400 FF+21d, A1420 FF+21d, A1440 FF+21d, A1460 FF+21d, A1480 FF+21d, A1500 FF+21d, A1520 FF+21d, A5200 FF+21d, A5220 FF+21d, A5240 FF+21d, A5350 FF+21d, A5590 FF+21d | 15.62d | 12.62d | ATL522 - Local Procurment (7x24) | Procurement [77 h] |
|  | 6 | **Aluminium and Glazing Works** |  | 2016-08-16 | 2017-01-06 |  |  |  |  |  |
| A2940 |  | Fabrication and Delivery Internal Glazed Partitions/ Dividing Screens | 63d | 2016-08-16 | 2016-10-22 | A2220, A1340 FF+21d, A1360 FF+21d, A1380 FF+21d, A1400 FF+21d, A1420 FF+21d, A1440 FF+21d, A1460 FF+21d, A1480 FF+21d, A1500 FF+21d, A1520 FF+21d, A5200 FF+21d, A5220 FF+21d, A5240 FF+21d, A5350 FF+21d, A5590 FF+21d | 83.62d |  | ATL522 - Local Procurment (7x24) | Procurement [63 h] |
| A2950 |  | Fabrication and Delivery Internal Glazed Doors | 63d | 2016-09-05 | 2016-11-11 | A2230, A1340 FF+21d, A1360 FF+21d, A1380 FF+21d, A1400 FF+21d, A1420 FF+21d, A1440 FF+21d, A1460 FF+21d, A1480 FF+21d, A1500 FF+21d, A1520 FF+21d, A5200 FF+21d, A5220 FF+21d, A5240 FF+21d, A5350 FF+21d, A5590 FF+21d | 63.62d |  | ATL522 - Local Procurment (7x24) | Procurement [63 h] |
| A2960 |  | Fabrication and Delivery Windows | 70d | 2016-09-28 | 2016-12-09 | A2240, A1340 FF+21d, A1360 FF+21d, A1380 FF+21d, A1400 FF+21d, A1420 FF+21d, A1440 FF+21d, A1460 FF+21d, A1480 FF+21d, A1500 FF+21d, A1520 FF+21d, A5200 FF+21d, A5220 FF+21d, A5240 FF+21d, A5350 FF+21d, A5590 FF+21d | 37.62d |  | ATL522 - Local Procurment (7x24) | Procurement [70 h] |
| A2970 |  | Fabrication and Delivery Balustrades and Railing | 77d | 2016-10-19 | 2017-01-06 | A2250, A1340 FF+21d, A1360 FF+21d, A1380 FF+21d, A1400 FF+21d, A1420 FF+21d, A1440 FF+21d, A1460 FF+21d, A1480 FF+21d, A1500 FF+21d, A1520 FF+21d, A5200 FF+21d, A5220 FF+21d, A5240 FF+21d, A5350 FF+21d, A5590 FF+21d | 19.62d |  | ATL522 - Local Procurment (7x24) | Procurement [77 h] |
|  | 7 | **Sanitary Appliances and Accessories** |  | 2016-09-17 | 2016-12-05 |  |  |  |  |  |
| A3000 |  | Fabrication and Delivery of Sanitary Equipment & Fixture | 77d | 2016-09-17 | 2016-12-05 | A2990, A1340 FF+21d, A1360 FF+21d, A1380 FF+21d, A1400 FF+21d, A1420 FF+21d, A1440 FF+21d, A1460 FF+21d, A1480 FF+21d, A1500 FF+21d, A1520 FF+21d, A5200 FF+21d, A5220 FF+21d, A5240 FF+21d, A5350 FF+21d, A5590 FF+21d | 56.62d | 51d | ATL522 - EU Procurment (7x24) | Procurement [77 h] |

| ID | WBS | Activity | Type | Duration | Start | Finish | Predecessors | Total float | Free float | Calendar | Resources |
| --- | --- | --- | --- | --- | --- | --- | --- | --- | --- | --- | --- |
|  | 4 | **Construction** |  |  | 2016-09-18 | 2017-02-15 |  |  |  |  |  |
|  | 1 | **BILL 17 - P1 - FAMILY FRIENDLY RESTAURANT** |  |  | 2016-10-03 | 2017-02-15 |  |  |  |  |  |
| A4930 |  | Prerequisite for Civil Works (MEP 1st , 2nd Fix and Block Works) | milestone | 0d | 2016-10-03 | 2016-10-03 | A1110 | 2d | 0d |  |  |
| A4940 |  | Area Clearance Process |  | 2d | 2016-10-03 | 2016-10-04 | A4930, A1110 | 2d | 0d |  | Steel [1.64 M3] |
| A4950 |  | Measurement , Framing and Enabling Works |  | 14d | 2016-10-05 | 2016-10-20 | A4940, A1110 | 2d |  |  | Steel [63 M3] |
| A4960 |  | Installation of Ceiling System |  | 10d | 2016-10-24 | 2016-11-03 | A4950, A2630, A1110 | 0d |  |  | Steel [80 M3] |
| A4970 |  | MEP Celing Closure Clearance |  | 3d | 2016-11-05 | 2016-11-07 | A4960, A1110 | 0d |  |  | Steel [6 M3] |
| A4980 |  | Ceiling Closure |  | 10d | 2016-11-08 | 2016-11-19 | A4970, A2640, A1110 | 0d |  |  | Steel [80 M3] |
| A4990 |  | Screed |  | 5d | 2016-11-20 | 2016-11-24 | A4980, A1110 | 0d |  |  |  |
| A5010 |  | Paint Works |  | 60d | 2016-11-20 | 2017-01-30 | A4980, A2510, A2650, A1110 | 7d |  |  | Steel [60 M3] |
| A5000 |  | Wall Cladding |  | 10d | 2016-11-26 | 2016-12-07 | A4990, A2520, A2540, A2580, A1110 | 0d |  |  | Steel [50 M3] |
| A5020 |  | Floor Metal Trim |  | 7d | 2016-12-08 | 2016-12-17 | A5000, A2340, A1110 | 0d |  |  | Steel [20 M3] |
| A5030 |  | Wooden Wall Panelling |  | 10d | 2016-12-18 | 2016-12-28 | A5020, A2570, A1110 | 0d |  |  | Steel [50 M3] |
| A5040 |  | Wooden Flooring |  | 7d | 2016-12-29 | 2017-01-05 | A5030, A2350, A1110 | 0d |  |  | Steel [35 M3] |
| A5050 |  | Joinery and Carpentry Works |  | 14d | 2017-01-07 | 2017-01-22 | A5040, A2730, A2740, A2750, A1110 | 0d |  |  | Steel [70 M3] |
| A5080 |  | Wall Covering |  | 3d | 2017-01-23 | 2017-01-25 | A2550, A5050, A2940, A2950, A1110 | 0d |  |  | Steel [25 M3] |
| A5070 |  | Doors , Frames , Ironmongery and Hardware |  | 4d | 2017-01-26 | 2017-01-30 | A5080, A2720, A1110 | 0d |  |  | Steel [15 M3] |
| A5090 |  | Lighting Points and Fittings |  | 7d | 2017-01-31 | 2017-02-07 | A5070, A2840, A2850, A1110 | 0d |  |  | Steel [14 M3] |
| A5110 |  | Snagging and De-Snagging |  | 7d | 2017-02-08 | 2017-02-15 | A5010, A5090, A2380, A2340, A1110 | 0d |  |  | Steel [28 M3] |
|  | 2 | **BILL 17.2 - P1 - PUBLIC TOILETS** |  |  | 2016-10-03 | 2017-02-15 |  |  |  |  |  |
| A3220 |  | Prerequisite for Civil Works (MEP 1st , 2nd Fix and Block Works) | milestone | 0d | 2016-10-03 | 2016-10-03 | A1120 | 2d | 0d |  |  |
| A3230 |  | Area Clearance Process |  | 2d | 2016-10-03 | 2016-10-04 | A3220, A1120 | 2d | 0d |  | Steel [1.64 M3] |
| A3240 |  | Measurement , Framing and Enabling Works |  | 14d | 2016-10-05 | 2016-10-20 | A3230, A1120 | 2d |  |  | Steel [63 M3] |
| A3250 |  | Installation of Ceiling System |  | 10d | 2016-10-24 | 2016-11-03 | A3240, A2630, A1120 | 0d |  |  | Steel [80 M3] |
| A3260 |  | MEP Celing Closure Clearance |  | 3d | 2016-11-05 | 2016-11-07 | A3250, A1120 | 0d |  |  | Steel [6 M3] |
| A3270 |  | Ceiling Closure |  | 10d | 2016-11-08 | 2016-11-19 | A3260, A2640, A1120 | 0d |  |  | Steel [80 M3] |
| A3280 |  | Screed |  | 5d | 2016-11-20 | 2016-11-24 | A3270, A1120 | 0d |  |  |  |
| A3300 |  | Paint Works |  | 60d | 2016-11-20 | 2017-01-30 | A3270, A2510, A2650, A1120 | 7d |  |  | Steel [60 M3] |
| A3290 |  | Wall Cladding |  | 14d | 2016-11-26 | 2016-12-13 | A3280, A2520, A1120, A2530 | 0d |  |  | Steel [70 M3] |
| A3310 |  | Floor Tiling |  | 14d | 2016-12-14 | 2016-12-29 | A3290, A1120, A2360, A2370 | 0d |  |  | Steel [70 M3] |
| A3340 |  | Joinery and Carpentry Works |  | 14d | 2016-12-31 | 2017-01-15 | A2730, A1120, A3310, A1210, A1220 | 0d |  |  | Steel [70 M3] |
| A3350 |  | Aluminium and Glazing Works |  | 7d | 2017-01-16 | 2017-01-23 | A3340, A2940, A2950, A1120 | 0d |  |  | Steel [30 M3] |
| A3370 |  | Wall Covering |  | 3d | 2017-01-24 | 2017-01-26 | A3350, A2550, A1120, A1220 | 0d |  |  | Steel [25 M3] |
| A3390 |  | Sanitary Equipment & Fixture |  | 7d | 2017-01-26 | 2017-02-02 | A3370, A3000 | 5.64d |  | 7x24 | Steel [14 M3] |
| A3360 |  | Doors , Frames , Ironmongery and Hardware |  | 3d | 2017-01-28 | 2017-01-30 | A3370, A2720, A1120, A1210, A1220 | 0d |  |  | Steel [15 M3] |
| A3380 |  | Lighting Points and Fittings |  | 7d | 2017-01-31 | 2017-02-07 | A3360, A2860, A1120 | 0d |  |  | Steel [14 M3] |
| A3400 |  | Snagging and De-Snagging |  | 7d | 2017-02-08 | 2017-02-15 | A3300, A1120, A3380, A2380, A2340, A3390 | 0d |  |  | Steel [28 M3] |

| ID | WBS | Activity | Type | Duration | Start | Finish | Predecessors | Total float | Free float | Calendar | Resources |
| --- | --- | --- | --- | --- | --- | --- | --- | --- | --- | --- | --- |
|  | 3 | **BILL 21 - P1 - KID'S CLUB** |  |  | 2016-10-03 | 2017-02-14 |  |  |  |  |  |
| A3410 |  | Prerequisite for Civil Works (MEP 1st , 2nd Fix and Block Works) | milestone | 0d | 2016-10-03 | 2016-10-03 | A1130 | 3d | 0d |  |  |
| A3420 |  | Area Clearance Process |  | 2d | 2016-10-03 | 2016-10-04 | A3410, A1130 | 3d | 0d |  | Steel [1.64 M3] |
| A3430 |  | Measurement , Framing and Enabling Works |  | 14d | 2016-10-05 | 2016-10-20 | A3420, A1130 | 3d | 2d |  | Steel [63 M3] |
| A3440 |  | Installation of Ceiling System |  | 10d | 2016-10-24 | 2016-11-03 | A3430, A2630, A1130 | 1d | 0d |  | Steel [80 M3] |
| A3450 |  | MEP Celing Closure Clearance |  | 3d | 2016-11-05 | 2016-11-07 | A3440, A1130 | 1d | 0d |  | Steel [6 M3] |
| A3460 |  | Ceiling Closure |  | 10d | 2016-11-08 | 2016-11-19 | A3450, A2640, A1130 | 1d | 0d |  | Steel [80 M3] |
| A3470 |  | Screed |  | 3d | 2016-11-20 | 2016-11-22 | A3460, A1130 | 1d | 0d |  |  |
| A3490 |  | Paint Works |  | 60d | 2016-11-20 | 2017-01-30 | A3460, A2510, A2650, A1130 | 4d | 3d |  | Steel [60 M3] |
| A3480 |  | Wall Cladding |  | 10d | 2016-11-23 | 2016-12-05 | A3470, A2520, A2580, A1130, A2530, A2560 | 1d | 0d |  | Steel [50 M3] |
| A3500 |  | Floor Tiling |  | 7d | 2016-12-06 | 2016-12-14 | A3480, A1130, A2360, A2370 | 1d | 0d |  | Steel [50 M3] |
| A3510 |  | Wooden Wall Panelling |  | 10d | 2016-12-15 | 2016-12-26 | A3500, A2570, A1130, A1230 | 1d | 0d |  | Steel [50 M3] |
| A3520 |  | Wooden Flooring |  | 7d | 2016-12-27 | 2017-01-03 | A3510, A1130, A2350, A1230 | 1d | 0d |  | Steel [35 M3] |
| A3530 |  | Joinery and Carpentry Works |  | 14d | 2017-01-04 | 2017-01-19 | A3520, A2730, A2740, A2760, A1130, A1230 | 1d | 0d |  | Steel [70 M3] |
| A3540 |  | Aluminium and Glazing Works |  | 7d | 2017-01-21 | 2017-01-28 | A3530, A2940, A2950, A1130 | 1d | 0d |  | Steel [21 M3] |
| A3550 |  | Doors , Frames , Ironmongery and Hardware |  | 3d | 2017-01-29 | 2017-01-31 | A3560 SS, A2720, A1130, A1230 | 1d | 0d |  | Steel [9 M3] |
| A3560 |  | Wall Covering |  | 4d | 2017-01-29 | 2017-02-01 | A3540, A2550, A1130 | 1d | 0d |  | Steel [25 M3] |
| A3570 |  | Lighting Points and Fittings |  | 5d | 2017-01-29 | 2017-02-02 | A3550 SS, A2860, A1130, A2840, A2850, A2870, A2880, A2890 | 1d | 0d |  | Steel [14 M3] |
| A5120 |  | Sanitary Equipment & Fixture |  | 5d | 2017-02-01 | 2017-02-06 | A3000, A3560 | 1.64d | 0.64d | 7x24 | Steel [14 M3] |
| A3580 |  | Carpet / Vinyle / Rubber |  | 3d | 2017-02-04 | 2017-02-06 | A3570, A3490, A2380, A2340, A1130, A2390, A2410 | 1d | 0d |  | Steel [12 M3] |
| A3590 |  | Snagging and De-Snagging |  | 7d | 2017-02-07 | 2017-02-14 | A3580, A3490, A1130, A5120 | 1d |  |  | Steel [28 M3] |
|  | 4 | **BILL 24 - 8F - GYM - TOWER C** |  |  | 2016-10-03 | 2017-02-15 |  |  |  |  |  |
| A3600 |  | Prerequisite for Civil Works (MEP 1st , 2nd Fix and Block Works) | milestone | 0d | 2016-10-03 | 2016-10-03 | A1140 | 2d | 0d |  |  |
| A3610 |  | Area Clearance Process |  | 2d | 2016-10-03 | 2016-10-04 | A3600, A1140 | 2d | 0d |  | Steel [1.64 M3] |
| A3620 |  | Measurement , Framing and Enabling Works |  | 14d | 2016-10-05 | 2016-10-20 | A3610, A1140 | 2d |  |  | Steel [63 M3] |
| A3630 |  | Installation of Ceiling System |  | 10d | 2016-10-24 | 2016-11-03 | A3620, A2630, A1140 | 0d |  |  | Steel [80 M3] |
| A3640 |  | MEP Celing Closure Clearance |  | 3d | 2016-11-05 | 2016-11-07 | A3630, A1140 | 0d |  |  | Steel [6 M3] |
| A3650 |  | Ceiling Closure |  | 10d | 2016-11-08 | 2016-11-19 | A3640, A2640, A1140 | 0d |  |  | Steel [80 M3] |
| A3660 |  | Screed |  | 3d | 2016-11-20 | 2016-11-22 | A3650, A1140 | 0d |  |  |  |
| A3680 |  | Paint Works and Floor Painting |  | 60d | 2016-11-20 | 2017-01-30 | A3650, A2510, A2650, A1140, A2400 FF+14d | 4d |  |  | Steel [60 M3] |
| A3670 |  | Wall Cladding |  | 10d | 2016-11-23 | 2016-12-05 | A3660, A2520, A2540, A2580, A1140 | 0d |  |  | Steel [50 M3] |
| A3690 |  | Floor Tiling |  | 7d | 2016-12-06 | 2016-12-14 | A3670, A1140, A2360, A2370 | 0d |  |  | Steel [50 M3] |
| A3700 |  | Wooden Wall Panelling |  | 10d | 2016-12-15 | 2016-12-26 | A3690, A2570, A1140, A1240 | 0d |  |  | Steel [50 M3] |
| A3710 |  | Wooden Flooring |  | 7d | 2016-12-27 | 2017-01-03 | A3700, A1140, A2350, A1240 | 0d |  |  | Steel [35 M3] |
| A3720 |  | Joinery and Carpentry Works |  | 14d | 2017-01-04 | 2017-01-19 | A3710, A2730, A2740, A2760, A1140, A1240 | 0d |  |  | Steel [70 M3] |
| A3730 |  | Aluminium and Glazing Works |  | 10d | 2017-01-21 | 2017-01-31 | A3720, A2940, A2950, A1140 | 0d |  |  | Steel [30 M3] |
| A3740 |  | Doors , Frames , Ironmongery and Hardware |  | 3d | 2017-02-01 | 2017-02-04 | A3750 SS, A2720, A1140, A1240 | 0d |  |  | Steel [9 M3] |
| A3750 |  | Wall Covering |  | 3d | 2017-02-01 | 2017-02-04 | A3730, A2550, A1140, A1240 | 0d |  |  | Steel [15 M3] |
| A3760 |  | Lighting Points and Fittings |  | 3d | 2017-02-01 | 2017-02-04 | A3740 SS, A2840, A2850, A2860, A2870, A2880, A2890, A1140 | 0d |  |  | Steel [10 M3] |
| A3770 |  | Carpet / Vinyle / Rubber |  | 3d | 2017-02-05 | 2017-02-07 | A3760, A3680, A2380, A2340, A1140, A2390, A2410 | 0d |  |  | Steel [9 M3] |
| A3780 |  | Snagging and De-Snagging |  | 7d | 2017-02-08 | 2017-02-15 | A3770, A3680, A1140 | 0d |  |  | Steel [28 M3] |

| ID | WBS | Activity | Type | Duration | Start | Finish | Predecessors | Total float | Free float | Resources |
| --- | --- | --- | --- | --- | --- | --- | --- | --- | --- | --- |
|  | 5 | **BILL 25 - 8F - MALE AND FEMALE TOILETS FOR GYM - TOWER C** |  |  | 2016-10-03 | 2017-02-13 |  |  |  |  |
| A3790 |  | Prerequisite for Civil Works (MEP 1st , 2nd Fix and Block Works) | milestone | 0d | 2016-10-03 | 2016-10-03 | A1150 | 4d | 0d |  |
| A3800 |  | Area Clearance Process |  | 2d | 2016-10-03 | 2016-10-04 | A3790, A1150 | 4d | 0d | Steel [1.64 M3] |
| A3810 |  | Measurement , Framing and Enabling Works |  | 14d | 2016-10-05 | 2016-10-20 | A3800, A1150 | 4d | 2d | Steel [63 M3] |
| A3820 |  | Installation of Ceiling System |  | 10d | 2016-10-24 | 2016-11-03 | A3810, A2630, A1150 | 2d | 0d | Steel [80 M3] |
| A3830 |  | MEP Celing Closure Clearance |  | 3d | 2016-11-05 | 2016-11-07 | A3820, A1150 | 2d | 0d | Steel [6 M3] |
| A3840 |  | Ceiling Closure |  | 10d | 2016-11-08 | 2016-11-19 | A3830, A2640, A1150 | 2d | 0d | Steel [80 M3] |
| A3850 |  | Screed |  | 3d | 2016-11-20 | 2016-11-22 | A3840, A1150 | 2d | 0d |  |
| A3870 |  | Paint Works |  | 60d | 2016-11-20 | 2017-01-30 | A3840, A2510, A2650, A1150 | 7d | 5d | Steel [60 M3] |
| A3860 |  | Wall Cladding |  | 10d | 2016-11-23 | 2016-12-05 | A3850, A2540, A1150, A2530 | 2d | 0d | Steel [50 M3] |
| A3880 |  | Floor Tiling |  | 7d | 2016-12-06 | 2016-12-14 | A3860, A1150, A2360, A2370 | 2d | 0d | Steel [50 M3] |
| A3890 |  | Wooden Wall Panelling |  | 10d | 2016-12-15 | 2016-12-26 | A3880, A2570, A1150, A1250, A5560 | 2d | 0d | Steel [50 M3] |
| A3900 |  | Wooden Flooring |  | 7d | 2016-12-27 | 2017-01-03 | A3890, A1150, A1250, A5560 | 2d | 0d | Steel [35 M3] |
| A3910 |  | Joinery and Carpentry Works |  | 14d | 2017-01-04 | 2017-01-19 | A3900, A2730, A2740, A2760, A1150, A1250 | 2d | 0d | Steel [70 M3] |
| A3920 |  | Aluminium and Glazing Works |  | 10d | 2017-01-21 | 2017-01-31 | A3910, A2940, A2950, A1150 | 2d | 0d | Steel [30 M3] |
| A3930 |  | Doors , Frames , Ironmongery and Hardware |  | 5d | 2017-02-01 | 2017-02-06 | A3940 SS, A2720, A1150, A1250, A5560 | 2d | 0d | Steel [21 M3] |
| A3940 |  | Wall Covering |  | 5d | 2017-02-01 | 2017-02-06 | A3920, A2550, A1150, A1250, A5560 | 2d | 0d | Steel [25 M3] |
| A3950 |  | Lighting Points and Fittings |  | 4d | 2017-02-01 | 2017-02-05 | A3930 SS, A2840, A2860, A1150 | 2d | 0d | Steel [14 M3] |
| A3970 |  | Snagging and De-Snagging |  | 7d | 2017-02-06 | 2017-02-13 | A3870, A1150, A3950, A2380, A2340 | 2d |  | Steel [28 M3] |
|  | 6 | **BILL 26 - 8F - SALON - TOWER C** |  |  | 2016-10-03 | 2017-02-15 |  |  |  |  |
| A3980 |  | Prerequisite for Civil Works (MEP 1st , 2nd Fix and Block Works) | milestone | 0d | 2016-10-03 | 2016-10-03 | A1160 | 2d | 0d |  |
| A3990 |  | Area Clearance Process |  | 2d | 2016-10-03 | 2016-10-04 | A3980, A1160 | 2d | 0d | Steel [1.64 M3] |
| A4000 |  | Measurement , Framing and Enabling Works |  | 14d | 2016-10-05 | 2016-10-20 | A3990, A1160 | 2d |  | Steel [63 M3] |
| A4010 |  | Installation of Ceiling System |  | 10d | 2016-10-24 | 2016-11-03 | A4000, A2630, A1160 | 0d |  | Steel [80 M3] |
| A4020 |  | MEP Celing Closure Clearance |  | 3d | 2016-11-05 | 2016-11-07 | A4010, A1160 | 0d |  | Steel [6 M3] |
| A4030 |  | Ceiling Closure |  | 10d | 2016-11-08 | 2016-11-19 | A4020, A2640, A1160 | 0d |  | Steel [80 M3] |
| A4040 |  | Screed |  | 3d | 2016-11-20 | 2016-11-22 | A4030, A1160 | 0d |  |  |
| A4060 |  | Paint Works |  | 60d | 2016-11-20 | 2017-01-30 | A4030, A2510, A2650, A1160 | 7d |  | Steel [60 M3] |
| A4050 |  | Wall Cladding |  | 10d | 2016-11-23 | 2016-12-05 | A4040, A2520, A2540, A2580, A1160, A2530 | 0d |  | Steel [50 M3] |
| A4070 |  | Floor Tiling |  | 10d | 2016-12-06 | 2016-12-18 | A4050, A1160, A2360, A2370 | 0d |  | Steel [50 M3] |
| A4080 |  | Wooden Wall Panelling |  | 10d | 2016-12-19 | 2016-12-29 | A4070, A2570, A1160, A2350, A1260 | 0d |  | Steel [50 M3] |
| A4090 |  | Wooden Flooring |  | 7d | 2016-12-31 | 2017-01-07 | A4080, A1160, A2350, A1260 | 0d |  | Steel [35 M3] |
| A4100 |  | Joinery and Carpentry Works |  | 14d | 2017-01-08 | 2017-01-23 | A4090, A2730, A2740, A2760, A1160, A2770, A1260 | 0d |  | Steel [70 M3] |
| A4110 |  | Aluminium and Glazing Works |  | 7d | 2017-01-24 | 2017-01-31 | A4100, A2940, A2950, A1160 | 0d |  | Steel [30 M3] |
| A4120 |  | Doors , Frames , Ironmongery and Hardware |  | 3d | 2017-02-01 | 2017-02-04 | A4130 SS, A2720, A1160, A1260 | 2d | 0d | Steel [9 M3] |
| A4130 |  | Wall Covering |  | 3d | 2017-02-01 | 2017-02-04 | A4110, A2550, A1160 | 0d |  | Steel [15 M3] |
| A4140 |  | Lighting Points and Fittings |  | 4d | 2017-02-01 | 2017-02-05 | A4120 SS, A2840, A2850, A2860, A2870, A2880, A2890, A1160 | 2d |  | Steel [10 M3] |
| A5130 |  | Sanitary Equipment & Fixture |  | 3d | 2017-02-05 | 2017-02-07 | A3000, A4130 | 0d |  | Steel [10 M3] |
| A4160 |  | Snagging and De-Snagging |  | 7d | 2017-02-08 | 2017-02-15 | A4060, A1160, A4140, A2380, A2340, A5130 | 0d |  | Steel [28 M3] |

| ID | WBS | Activity | Type | Duration | Start | Finish | Predecessors | Total float | Free float | Resources |
| --- | --- | --- | --- | --- | --- | --- | --- | --- | --- | --- |
|  | 7 | **BILL 27.1 - 8F - GYM - TOWER A** |  |  | 2016-10-03 | 2017-02-15 |  |  |  |  |
| A4170 |  | Prerequisite for Civil Works (MEP 1st , 2nd Fix and Block Works) | milestone | 0d | 2016-10-03 | 2016-10-03 | A1170 | 2d | 0d |  |
| A4180 |  | Area Clearance Process |  | 2d | 2016-10-03 | 2016-10-04 | A4170, A1170 | 2d | 0d | Steel [1.64 M3] |
| A4190 |  | Measurement , Framing and Enabling Works |  | 14d | 2016-10-05 | 2016-10-20 | A4180, A1170 | 2d |  | Steel [63 M3] |
| A4200 |  | Installation of Ceiling System |  | 10d | 2016-10-24 | 2016-11-03 | A4190, A2630, A1170 | 0d |  | Steel [80 M3] |
| A4210 |  | MEP Celing Closure Clearance |  | 3d | 2016-11-05 | 2016-11-07 | A4200, A1170 | 0d |  | Steel [6 M3] |
| A4220 |  | Ceiling Closure |  | 10d | 2016-11-08 | 2016-11-19 | A4210, A2640, A1170 | 0d |  | Steel [80 M3] |
| A4230 |  | Screed |  | 3d | 2016-11-20 | 2016-11-22 | A4220, A1170 | 0d |  |  |
| A4250 |  | Paint Works |  | 60d | 2016-11-20 | 2017-01-30 | A4220, A2510, A2650, A1170 | 4d |  | Steel [60 M3] |
| A4240 |  | Wall Cladding |  | 10d | 2016-11-23 | 2016-12-05 | A4230, A2520, A2540, A2580, A1170, A2530 | 0d |  | Steel [50 M3] |
| A4260 |  | Floor Tiling |  | 10d | 2016-12-06 | 2016-12-18 | A4240, A1170, A2360, A2370 | 0d |  | Steel [50 M3] |
| A4270 |  | Wooden Wall Panelling |  | 10d | 2016-12-19 | 2016-12-29 | A4260, A2570, A1170, A1270 | 0d |  | Steel [50 M3] |
| A4280 |  | Wooden Flooring |  | 7d | 2016-12-31 | 2017-01-07 | A4270, A1170, A2350, A1270 | 0d |  | Steel [35 M3] |
| A4290 |  | Joinery and Carpentry Works |  | 14d | 2017-01-08 | 2017-01-23 | A4280, A2730, A2740, A2760, A1170, A1270 | 0d |  | Steel [70 M3] |
| A4300 |  | Aluminium and Glazing Works |  | 7d | 2017-01-24 | 2017-01-31 | A4290, A2940, A1170, A2960 | 0d |  | Steel [30 M3] |
| A4310 |  | Doors , Frames , Ironmongery and Hardware |  | 3d | 2017-02-01 | 2017-02-04 | A4320 SS, A2720, A1170, A1270 | 0d |  | Steel [9 M3] |
| A4320 |  | Wall Covering |  | 3d | 2017-02-01 | 2017-02-04 | A4300, A2550, A1170 | 0d |  | Steel [15 M3] |
| A4330 |  | Lighting Points and Fittings |  | 3d | 2017-02-01 | 2017-02-04 | A4310 SS, A2840, A2850, A2860, A2870, A2880, A2890, A1170 | 0d |  | Steel [10 M3] |
| A4340 |  | Carpet / Vinyle / Rubber |  | 3d | 2017-02-05 | 2017-02-07 | A4330, A4250, A2340, A1170, A2410, A2390, A2380 | 0d |  | Steel [9 M3] |
| A5140 |  | Sanitary Equipment & Fixture |  | 3d | 2017-02-05 | 2017-02-07 | A3000, A4320 | 0d |  | Steel [10 M3] |
| A4350 |  | Snagging and De-Snagging |  | 7d | 2017-02-08 | 2017-02-15 | A4340, A4250, A1170, A5140 | 0d |  | Steel [28 M3] |
|  | 8 | **BILL 27.2 - 8F - GYM - TOWER B** |  |  | 2016-10-03 | 2017-02-15 |  |  |  |  |
| A4360 |  | Prerequisite for Civil Works (MEP 1st , 2nd Fix and Block Works) | milestone | 0d | 2016-10-03 | 2016-10-03 | A1180 | 2d | 0d |  |
| A4370 |  | Area Clearance Process |  | 2d | 2016-10-03 | 2016-10-04 | A4360, A1180 | 2d | 0d | Steel [1.64 M3] |
| A4380 |  | Measurement , Framing and Enabling Works |  | 14d | 2016-10-05 | 2016-10-20 | A4370, A1180 | 2d |  | Steel [63 M3] |
| A4390 |  | Installation of Ceiling System |  | 10d | 2016-10-24 | 2016-11-03 | A4380, A2630, A1180 | 0d |  | Steel [80 M3] |
| A4400 |  | MEP Celing Closure Clearance |  | 3d | 2016-11-05 | 2016-11-07 | A4390, A1180 | 0d |  | Steel [6 M3] |
| A4410 |  | Ceiling Closure |  | 10d | 2016-11-08 | 2016-11-19 | A4400, A2640, A1180 | 0d |  | Steel [80 M3] |
| A4420 |  | Screed |  | 3d | 2016-11-20 | 2016-11-22 | A4410, A1180 | 0d |  |  |
| A4440 |  | Paint Works |  | 60d | 2016-11-20 | 2017-01-30 | A4410, A2510, A2650, A1180 | 4d |  | Steel [60 M3] |
| A4430 |  | Wall Cladding |  | 10d | 2016-11-23 | 2016-12-05 | A4420, A2520, A2540, A2580, A1180, A2530 | 0d |  | Steel [50 M3] |
| A4450 |  | Floor Tiling |  | 10d | 2016-12-06 | 2016-12-18 | A4430, A1180, A2360, A2370 | 0d |  | Steel [50 M3] |
| A4460 |  | Wooden Wall Panelling |  | 10d | 2016-12-19 | 2016-12-29 | A4450, A2570, A1180, A1280 | 0d |  | Steel [50 M3] |
| A4470 |  | Wooden Flooring |  | 7d | 2016-12-31 | 2017-01-07 | A4460, A1180, A2350, A1280 | 0d |  | Steel [35 M3] |
| A4480 |  | Joinery and Carpentry Works |  | 14d | 2017-01-08 | 2017-01-23 | A4470, A2730, A2740, A2760, A1180, A1280 | 0d |  | Steel [70 M3] |
| A4490 |  | Aluminium and Glazing Works |  | 7d | 2017-01-24 | 2017-01-31 | A4480, A2940, A1180, A2960 | 0d |  | Steel [30 M3] |
| A4500 |  | Doors , Frames , Ironmongery and Hardware |  | 3d | 2017-02-01 | 2017-02-04 | A4510 SS, A2720, A1180, A1280 | 0d |  | Steel [9 M3] |
| A4510 |  | Wall Covering |  | 3d | 2017-02-01 | 2017-02-04 | A4490, A2550, A1180 | 0d |  | Steel [15 M3] |
| A4520 |  | Lighting Points and Fittings |  | 3d | 2017-02-01 | 2017-02-04 | A4500 SS, A2840, A2850, A2860, A2870, A2880, A2890, A1180 | 0d |  | Steel [10 M3] |
| A4530 |  | Carpet / Vinyle / Rubber |  | 3d | 2017-02-05 | 2017-02-07 | A4520, A4440, A2380, A1180, A2390, A2410 | 0d |  | Steel [9 M3] |
| A5150 |  | Sanitary Equipment & Fixture |  | 3d | 2017-02-05 | 2017-02-07 | A3000, A4510 | 0d |  | Steel [10 M3] |
| A4540 |  | Snagging and De-Snagging |  | 7d | 2017-02-08 | 2017-02-15 | A4530, A4440, A1180, A5150 | 0d |  | Steel [28 M3] |

| ID | WBS | Activity | Type | Duration | Start | Finish | Predecessors | Total float | Free float | Resources |
| --- | --- | --- | --- | --- | --- | --- | --- | --- | --- | --- |
|  | 10 | **BILL 36 - UG - BARBER SHOP - TOWER C** |  |  | 2016-10-09 | 2017-02-14 |  |  |  |  |
| A4740 |  | Prerequisite for Civil Works (MEP 1st , 2nd Fix and Block Works) | milestone | 0d | 2016-10-09 | 2016-10-09 | A1200 | 1d | 0d |  |
| A4750 |  | Area Clearance Process |  | 2d | 2016-10-09 | 2016-10-10 | A4740, A1200 | 1d | 0d | Steel [1.64 M3] |
| A4760 |  | Measurement , Framing and Enabling Works |  | 14d | 2016-10-11 | 2016-10-26 | A4750, A1200 | 1d | 0d | Steel [63 M3] |
| A4770 |  | Installation of Ceiling System |  | 10d | 2016-10-27 | 2016-11-07 | A4760, A2630, A1200 | 1d | 0d | Steel [80 M3] |
| A4780 |  | MEP Celing Closure Clearance |  | 3d | 2016-11-08 | 2016-11-10 | A4770, A1200 | 1d | 0d | Steel [6 M3] |
| A4790 |  | Ceiling Closure |  | 10d | 2016-11-12 | 2016-11-22 | A4780, A2640, A1200 | 1d | 0d | Steel [80 M3] |
| A4800 |  | Screed |  | 5d | 2016-11-23 | 2016-11-28 | A4790, A1200 | 2d | 0d |  |
| A4820 |  | Paint Works |  | 60d | 2016-11-23 | 2017-02-02 | A4790, A2510, A2650, A1200 | 1d | 0d | Steel [60 M3] |
| A4810 |  | Wall Cladding |  | 7d | 2016-11-29 | 2016-12-07 | A4800, A2520, A2540, A2580, A1200, A2590 | 2d | 0d | Steel [35 M3] |
| A4830 |  | Floor Tiling |  | 7d | 2016-12-08 | 2016-12-17 | A4810, A1200, A2360, A2370 | 2d | 0d | Steel [35 M3] |
| A4840 |  | Wooden Wall Panelling |  | 7d | 2016-12-18 | 2016-12-25 | A4830, A2570, A1200, A1300 | 2d | 0d | Steel [35 M3] |
| A4850 |  | Wooden Flooring |  | 7d | 2016-12-26 | 2017-01-02 | A4840, A1200, A2350, A1300 | 2d | 0d | Steel [35 M3] |
| A4860 |  | Joinery and Carpentry Works |  | 14d | 2017-01-03 | 2017-01-18 | A4850, A2730, A2740, A2760, A1200, A1300 | 2d | 0d | Steel [70 M3] |
| A4870 |  | Aluminium and Glazing Works |  | 5d | 2017-01-19 | 2017-01-24 | A4860, A2940, A2950, A1200 | 2d | 0d | Steel [21 M3] |
| A4880 |  | Doors , Frames , Ironmongery and Hardware |  | 5d | 2017-01-25 | 2017-01-30 | A4890 SS, A2720, A1200, A1300 | 2d | 0d | Steel [12 M3] |
| A4890 |  | Wall Covering |  | 3d | 2017-01-25 | 2017-01-28 | A4870, A2550, A1200, A1300, A5570 | 2d | 0d | Steel [20 M3] |
| A4900 |  | Lighting Points and Fittings |  | 5d | 2017-01-25 | 2017-01-30 | A4880 SS, A2840, A2850, A2860, A2870, A2880, A2890, A1200 | 2d | 0d | Steel [10 M3] |
| A5180 |  | Sanitary Equipment & Fixture |  | 5d | 2017-01-31 | 2017-02-05 | A3000, A4900 | 2d | 1d | Steel [10 M3] |
| A4910 |  | Carpet / Vinyle / Rubber |  | 3d | 2017-02-04 | 2017-02-06 | A4900, A4820, A2380, A2340, A1200, A2340 FF | 1d | 0d | Steel [12 M3] |
| A4920 |  | Snagging and De-Snagging |  | 7d | 2017-02-07 | 2017-02-14 | A4910, A4820, A1200, A5180 | 1d |  | Steel [28 M3] |
|  | 9 | **BILL 27.3 - 8F - GYM - TOWER D** |  |  | 2016-10-03 | 2017-02-15 |  |  |  |  |
| A4550 |  | Prerequisite for Civil Works (MEP 1st , 2nd Fix and Block Works) | milestone | 0d | 2016-10-03 | 2016-10-03 | A1190 | 2d | 0d |  |
| A4560 |  | Area Clearance Process |  | 2d | 2016-10-03 | 2016-10-04 | A4550, A1190 | 2d | 0d | Steel [1.64 M3] |
| A4570 |  | Measurement , Framing and Enabling Works |  | 14d | 2016-10-05 | 2016-10-20 | A4560, A1190 | 2d |  | Steel [63 M3] |
| A4580 |  | Installation of Ceiling System |  | 10d | 2016-10-24 | 2016-11-03 | A4570, A2630, A1190 | 0d |  | Steel [80 M3] |
| A4590 |  | MEP Celing Closure Clearance |  | 3d | 2016-11-05 | 2016-11-07 | A4580, A1190 | 0d |  | Steel [6 M3] |
| A4600 |  | Ceiling Closure |  | 10d | 2016-11-08 | 2016-11-19 | A4590, A2640, A1190 | 0d |  | Steel [80 M3] |
| A4610 |  | Screed |  | 3d | 2016-11-20 | 2016-11-22 | A4600, A1190 | 0d |  |  |
| A4630 |  | Paint Works |  | 60d | 2016-11-20 | 2017-01-30 | A4600, A2510, A2650, A1190 | 4d |  | Steel [60 M3] |
| A4620 |  | Wall Cladding |  | 10d | 2016-11-23 | 2016-12-05 | A4610, A2520, A2540, A2580, A1190, A2530 | 0d |  | Steel [50 M3] |
| A4640 |  | Floor Tiling |  | 10d | 2016-12-06 | 2016-12-18 | A4620, A1190, A2360, A2370 | 0d |  | Steel [50 M3] |
| A4650 |  | Wooden Wall Panelling |  | 10d | 2016-12-19 | 2016-12-29 | A4640, A2570, A1190, A1290 | 0d |  | Steel [50 M3] |
| A4660 |  | Wooden Flooring |  | 7d | 2016-12-31 | 2017-01-07 | A4650, A1190, A2350, A1290 | 0d |  | Steel [35 M3] |
| A4670 |  | Joinery and Carpentry Works |  | 14d | 2017-01-08 | 2017-01-23 | A4660, A2730, A2740, A2760, A1190, A1290 | 0d |  | Steel [70 M3] |
| A4680 |  | Aluminium and Glazing Works |  | 7d | 2017-01-24 | 2017-01-31 | A4670, A2940, A1190, A2960 | 0d |  | Steel [30 M3] |
| A4690 |  | Doors , Frames , Ironmongery and Hardware |  | 3d | 2017-02-01 | 2017-02-04 | A2720, A1190, A4680, A2550, A1290 | 0d |  | Steel [9 M3] |
| A4710 |  | Lighting Points and Fittings |  | 3d | 2017-02-01 | 2017-02-04 | A4690 SS, A2840, A2850, A2860, A2870, A2880, A2890, A1190 | 0d |  | Steel [10 M3] |
| A5160 |  | Carpet / Vinyle / Rubber |  | 3d | 2017-02-05 | 2017-02-07 | A2380, A2390, A2410, A4630, A4710 | 0d |  | Steel [9 M3] |
| A5170 |  | Sanitary Equipment & Fixture |  | 3d | 2017-02-05 | 2017-02-07 | A3000, A4710 | 0d |  | Steel [10 M3] |
| A4730 |  | Snagging and De-Snagging |  | 7d | 2017-02-08 | 2017-02-15 | A4630, A1190, A4710, A2380, A2390, A2410, A5160, A5170 | 0d |  | Steel [20 M3] |

| ID | WBS | Activity | Type | Duration | Start | Finish | Predecessors | Total float | Free float | Resources |
| --- | --- | --- | --- | --- | --- | --- | --- | --- | --- | --- |
|  | 13 | **Bill 14-P1-PRE-FUNCTION** |  |  | 2016-09-18 | 2017-02-12 |  |  |  |  |
| B14-P1PF-1stP001 |  | Prerequisite for Civil Works (MEP 1st , 2nd Fix and Block Works) | milestone | 0d | 2016-09-18 | 2016-09-18 | A5250 | 3d | 0d |  |
| B5-UPSD-C181 |  | Handing Over Process |  | 3d | 2016-09-18 | 2016-09-20 | B14-P1PF-1stP001, A5250 | 3d | 0d | Steel [5.73 M3] |
| B5-UPSD-C191 |  | Area Preparation and Enabling Works |  | 21d | 2016-09-21 | 2016-10-16 | B5-UPSD-C181, A5250 | 3d | 0d | Steel [17.18 M3] |
| B14-P1PF-C001 |  | Installation of Celling System |  | 14d | 2016-10-17 | 2016-11-01 | B14-P1PF-1stP001, B5-UPSD-C191, A5250 | 3d | 0d | Steel [11.45 M3]; Steel [80 M3] |
| B14-P1PF-2ndP002 |  | MEP Ceiling Closure Clearance |  | 7d | 2016-11-02 | 2016-11-09 | B14-P1PF-C001, A5250 | 3d | 0d | Steel [5.73 M3] |
| B14-P1PF-C002 |  | Ceiling Closure |  | 14d | 2016-11-10 | 2016-11-26 | B14-P1PF-2ndP002, A5250 | 3d | 0d | Steel [11.45 M3]; Steel [76 M3] |
| B14-P1PF-3rdP003 |  | Flooring |  | 7d | 2016-11-27 | 2016-12-05 | B14-P1PF-C002, A5250 | 3d | 0d | Steel [5.73 M3] |
| B14-P1PF-C003 |  | Paint Works |  | 30d | 2016-12-06 | 2017-01-10 | B14-P1PF-3rdP003, A5250 | 3d | 0d | Steel [24.55 M3]; Steel [63 M3] |
| B14-P1PF-C007 |  | Installation of Metal panelling |  | 7d | 2016-12-06 | 2016-12-14 | B14-P1PF-C003 SS, A5250 | 5d | 0d | Steel [5.73 M3]; Steel [6 M3] |
| B14-P1PF-C005 |  | Installation of Wooden wall panelling |  | 14d | 2016-12-10 | 2016-12-26 | B14-P1PF-C003 SS+3d, A5250, A5280 | 9d | 4d | Steel [11.45 M3]; Steel [10 M3] |
| B14-P1PF-C004 |  | Installation of Metal Skirting |  | 7d | 2016-12-15 | 2016-12-22 | B14-P1PF-C007, A5250 | 12d | 7d | Steel [5.73 M3]; Steel [6 M3] |
| B14-P1PF-C011 |  | Aluminium Works |  | 14d | 2016-12-15 | 2016-12-31 | B14-P1PF-C007, A5250 | 5d | 0d | Steel [11.45 M3]; Steel [6 M3] |
| B14-P1PF-C008 |  | Installation of Wall Covering |  | 7d | 2017-01-01 | 2017-01-08 | B14-P1PF-C005, B14-P1PF-C007, B14-P1PF-C004, B14-P1PF-C011, A5250, A5280 | 5d | 2d | Steel [5.73 M3]; Steel [6 M3] |
| B14-P1PF-C009 |  | Installation of Glazing Works |  | 7d | 2017-01-11 | 2017-01-18 | B14-P1PF-C008, B14-P1PF-C003, A5250, A5290 | 3d | 0d | Steel [5.73 M3]; Steel [6 M3] |
| B14-P1PF-C006 |  | Installation of Light Fittings |  | 14d | 2017-01-19 | 2017-02-04 | A5250, B14-P1PF-C009 | 3d | 0d | Steel [11.45 M3]; Steel [15 M3] |
| B14-P1PF-C010 |  | Installation of Carpet |  | 7d | 2017-01-19 | 2017-01-26 | B14-P1PF-C009, A5250 | 10d | 7d | Steel [5.73 M3]; Steel [6 M3] |
| B14-P1PF-S012 |  | Snagging and De-Snagging |  | 7d | 2017-02-05 | 2017-02-12 | B14-P1PF-C009, B14-P1PF-C003, B14-P1PF-C006, B14-P1PF-C010, A5250 | 3d |  | Steel [5.73 M3]; Steel [14 M3] |
|  | 14 | **Bill 15-P1-REST ROOMS (PRE-FUNTION)** |  |  | 2016-09-18 | 2017-02-12 |  |  |  |  |
| B15-P1RPF-1stP001 |  | Prerequisite for Civil Works (MEP 1st , 2nd Fix and Block Works) | milestone | 0d | 2016-09-18 | 2016-09-18 | A5260 | 3d | 0d |  |
| B5-UPSD-C201 |  | Handing Over Process |  | 3d | 2016-09-18 | 2016-09-20 | B15-P1RPF-1stP001, A5260 | 3d | 0d | Steel [5.73 M3] |
| B5-UPSD-C211 |  | Area Preparation and Enabling Works |  | 14d | 2016-09-21 | 2016-10-08 | B5-UPSD-C201, A5260 | 3d | 0d | Steel [11.45 M3] |
| B15-P1RPF-C001 |  | Installation of Celling System |  | 21d | 2016-10-09 | 2016-11-01 | B15-P1RPF-1stP001, B5-UPSD-C211, A5260 | 3d | 0d | Steel [17.18 M3]; Steel [14 M3] |
| B15-P1RPF-2ndP002 |  | MEP Ceiling Closure Clearance |  | 7d | 2016-11-02 | 2016-11-09 | B15-P1RPF-C001, A5260 | 3d | 0d | Steel [5.73 M3] |
| B15-P1RPF-C002 |  | Ceiling Closure |  | 14d | 2016-11-10 | 2016-11-26 | B15-P1RPF-2ndP002, A5260 | 3d | 0d | Steel [11.45 M3]; Steel [14 M3] |
| B15-P1RPF-3rdP003 |  | Flooring |  | 14d | 2016-11-27 | 2016-12-14 | B15-P1RPF-C002, A5260 | 3d | 0d | Steel [11.45 M3] |
| B15-P1RPF-C008 |  | Apply of Sibu Finish |  | 7d | 2016-11-27 | 2016-12-05 | A5260, B15-P1RPF-C002, A5290 | 33d | 0d | Steel [5.73 M3]; Steel [6 M3] |
| B15-P1RPF-C006 |  | Installation of Light Fittings |  | 14d | 2016-12-06 | 2016-12-22 | B15-P1RPF-C008, A5260 | 33d | 30d | Steel [11.45 M3]; Steel [6 M3] |
| B15-P1RPF-C003 |  | Paint Works |  | 30d | 2016-12-15 | 2017-01-18 | B15-P1RPF-3rdP003, A5260 | 3d | 0d | Steel [24.55 M3]; Steel [28 M3] |
| B15-P1RPF-C005 |  | Installation of Doors & Ironmongery |  | 7d | 2017-01-11 | 2017-01-18 | B15-P1RPF-C008, B15-P1RPF-C003 FF, A5260, A5290 | 10d | 7d | Steel [5.73 M3]; Steel [6 M3] |
| B15-P1RPF-C009 |  | Installation of Sanitary Ware |  | 7d | 2017-01-19 | 2017-01-26 | B15-P1RPF-C003, A5260 | 3d | 0d | Steel [5.73 M3]; Steel [6 M3] |
| B15-P1RPF-C004 |  | Installation of Mirror |  | 7d | 2017-01-28 | 2017-02-04 | B15-P1RPF-C009, A5260 | 4d | 1d | Steel [5.73 M3]; Steel [6 M3] |
| B15-P1RPF-C007 |  | Installation of Wall Covering |  | 7d | 2017-01-28 | 2017-02-04 | B15-P1RPF-C005, B15-P1RPF-C006, B15-P1RPF-C009, A5260, A5290, A5300 | 3d | 0d | Steel [4.09 M3]; Steel [6 M3] |
| B15-P1RPF-C010 |  | Snagging and De-Snagging |  | 7d | 2017-02-05 | 2017-02-12 | B15-P1RPF-C004 FS-1d, B15-P1RPF-C007, B15-P1RPF-C003, A5260 | 3d |  | Steel [11.45 M3]; Steel [6 M3] |

| ID | WBS | Activity | Type | Duration | Start | Finish | Predecessors | Total float | Free float | Resources |
| --- | --- | --- | --- | --- | --- | --- | --- | --- | --- | --- |
|  | 15 | **Bill 32 Work Play Suite** |  |  | 2016-10-16 | 2017-02-15 |  |  |  |  |
| A5850 |  | Prerequisite for Civil Works (MEP 1st , 2nd Fix and Block Works) | milestone | 0d | 2016-10-16 | 2016-10-16 | A5810 | 0d |  |  |
| A5860 |  | Area Clearance Process |  | 2d | 2016-10-16 | 2016-10-17 | A5850, A5810 | 0d |  | Steel [1.64 M3] |
| A5870 |  | Measurement , Framing and Enabling Works |  | 14d | 2016-10-18 | 2016-11-02 | A5860, A5810 | 0d |  | Steel [63 M3] |
| A5880 |  | Installation of Ceiling System |  | 7d | 2016-11-03 | 2016-11-10 | A5870, A5810, A5840 | 0d |  | Steel [80 M3] |
| A5890 |  | MEP Celing Closure Clearance |  | 3d | 2016-11-12 | 2016-11-14 | A5880, A5810, A5840 | 0d |  | Steel [6 M3] |
| A5900 |  | Ceiling Closure |  | 7d | 2016-11-15 | 2016-11-22 | A5890, A5810, A5840 | 0d |  | Steel [70 M3] |
| A5910 |  | Screed |  | 3d | 2016-11-23 | 2016-11-26 | A5900, A5810, A5840 | 0d |  |  |
| A6010 |  | Paint Works |  | 60d | 2016-11-23 | 2017-02-02 | A5900, A5810, A5840 | 0d |  | Steel [120 M3] |
| A5920 |  | Wall Cladding |  | 7d | 2016-11-27 | 2016-12-05 | A5910, A5810, A5840 | 0d |  | Steel [50 M3] |
| A5930 |  | Floor Tiling |  | 7d | 2016-12-06 | 2016-12-14 | A5920, A5810, A5840 | 0d |  | Steel [60 M3] |
| A5940 |  | Wooden Wall Panelling |  | 7d | 2016-12-15 | 2016-12-22 | A5930, A5810, A5820, A5840 | 0d |  | Steel [50 M3] |
| A5950 |  | Wooden Flooring |  | 7d | 2016-12-24 | 2016-12-31 | A5940, A5810, A5820, A5840 | 0d |  | Steel [35 M3] |
| A5960 |  | Joinery and Carpentry Works |  | 14d | 2017-01-01 | 2017-01-16 | A5950, A5810, A5820, A5840 | 0d |  | Steel [70 M3] |
| A5970 |  | Aluminium and Glazing Works |  | 10d | 2017-01-17 | 2017-01-28 | A5960, A5810, A5840 | 0d |  | Steel [30 M3] |
| A5980 |  | Doors , Frames , Ironmongery and Hardware |  | 3d | 2017-01-29 | 2017-01-31 | A5990 SS, A5810, A5820, A5840 | 0d |  | Steel [9 M3] |
| A5990 |  | Wall Covering |  | 3d | 2017-01-29 | 2017-01-31 | A5970, A5810, A5820, A5840 | 0d |  | Steel [15 M3] |
| A6000 |  | Lighting Points and Fittings |  | 5d | 2017-01-29 | 2017-02-02 | A5980 SS, A5810, A5840 | 0d |  | Steel [10 M3] |
| A6020 |  | Sanitary Equipment & Fixture |  | 5d | 2017-02-01 | 2017-02-06 | A5990, A5810, A5840 | 1d |  | Steel [10 M3] |
| A6030 |  | Carpet / Vinyle / Rubber |  | 4d | 2017-02-04 | 2017-02-07 | A6000, A6010, A5810, A5840 | 0d |  | Steel [9 M3] |
| A6040 |  | Snagging and De-Snagging |  | 7d | 2017-02-08 | 2017-02-15 | A6030, A6010, A6020, A5810, A5840 | 0d |  | Steel [28 M3] |
|  | 19 | **Bill 33-P1-SCREENING ROOM** |  |  | 2016-09-18 | 2017-02-13 |  |  |  |  |
| B33-P1SR-1stP001 |  | Prerequisite for Civil Works (MEP 1st , 2nd Fix and Block Works) | milestone | 0d | 2016-09-18 | 2016-09-18 | A5270 | 2d | 0d |  |
| B5-UPSD-C281 |  | Handing Over Process |  | 3d | 2016-09-18 | 2016-09-20 | B33-P1SR-1stP001, A5270 | 2d | 0d | Steel [5.73 M3] |
| B5-UPSD-C291 |  | Area Preparation and Enabling Works |  | 14d | 2016-09-21 | 2016-10-08 | B5-UPSD-C281, A5270 | 2d | 0d | Steel [11.45 M3] |
| B33-P1SR-C001 |  | Installation of Celling System |  | 21d | 2016-10-09 | 2016-11-01 | B33-P1SR-1stP001, B5-UPSD-C291, A5270 | 2d | 0d | Steel [17.18 M3]; Steel [182 M3] |
| B33-P1SR-2ndP002 |  | MEP Ceiling Closure Clearance |  | 3d | 2016-11-02 | 2016-11-05 | B33-P1SR-C001, A5270 | 2d | 0d | Steel [2.45 M3] |
| B33-P1SR-C002 |  | Ceiling Closure |  | 14d | 2016-11-06 | 2016-11-21 | B33-P1SR-2ndP002, A5270 | 2d | 0d | Steel [200 M3] |
| B33-P1SR-3rdP003 |  | Flooring |  | 5d | 2016-11-22 | 2016-11-27 | B33-P1SR-C002, A5270 | 2d | 0d | Steel [4.09 M3] |
| B33-P1SR-C003 |  | Paint Works |  | 30d | 2016-11-28 | 2017-01-03 | B33-P1SR-3rdP003, A5270 | 2d | 0d | Steel [24.55 M3]; Steel [152 M3] |
| B33-P1SR-C004 |  | Installation of Wall Tiling |  | 7d | 2016-12-03 | 2016-12-10 | B33-P1SR-C003 SS+3d, A5270 | 13d | 0d | Steel [5.73 M3]; Steel [60 M3] |
| B33-P1SR-C011 |  | Installation of Wooden wall panelling |  | 14d | 2016-12-03 | 2016-12-19 | B33-P1SR-C003 SS+3d, A5270, A5300 | 20d | 18d | Steel [11.45 M3]; Steel [28 M3] |
| B33-P1SR-C017 |  | Installation of Steel wall panelling |  | 14d | 2016-12-03 | 2016-12-19 | B33-P1SR-C003 SS+3d, A5270 | 20d | 18d | Steel [11.45 M3]; Steel [28 M3] |
| B33-P1SR-C015 |  | Installation of Joinery Works |  | 14d | 2016-12-12 | 2016-12-27 | B33-P1SR-C003 SS+3d, B33-P1SR-C004, A5270, A5300 | 13d | 11d | Steel [11.45 M3]; Steel [28 M3] |
| B33-P1SR-C007 |  | Installation of Doors & Ironmongery |  | 5d | 2017-01-04 | 2017-01-09 | B33-P1SR-C003, A5270, A5300 | 2d | 0d | Steel [5.73 M3]; Steel [30 M3] |
| B33-P1SR-C005 |  | Installation of Metal Skirting |  | 5d | 2017-01-10 | 2017-01-15 | B33-P1SR-C004, B33-P1SR-C007, B33-P1SR-C011, B33-P1SR-C015, B33-P1SR-C017, A5270 | 11d | 9d | Steel [5.73 M3]; Steel [28 M3] |
| B33-P1SR-C006 |  | Installation of Mirror |  | 5d | 2017-01-10 | 2017-01-15 | B33-P1SR-C004, B33-P1SR-C007, B33-P1SR-C011, B33-P1SR-C015, B33-P1SR-C017, A5270 | 11d | 9d | Steel [5.73 M3]; Steel [12 M3] |
| B33-P1SR-C008 |  | Installation of Light Fittings |  | 7d | 2017-01-10 | 2017-01-17 | B33-P1SR-C004, B33-P1SR-C007, B33-P1SR-C011, B33-P1SR-C015, B33-P1SR-C017, A5270 | 2d | 0d | Steel [5.73 M3]; Steel [50 M3] |
| B33-P1SR-C009 |  | Installation of Timber Flooring |  | 7d | 2017-01-18 | 2017-01-25 | B33-P1SR-C004, B33-P1SR-C007, B33-P1SR-C011, B33-P1SR-C015, B33-P1SR-C017, B33-P1SR-C008, A5270, A5300 | 2d | 0d | Steel [5.73 M3]; Steel [42 M3] |
| B33-P1SR-C012 |  | Installation of Floor Tiling |  | 7d | 2017-01-18 | 2017-01-25 | B33-P1SR-C004, B33-P1SR-C007, B33-P1SR-C011, B33-P1SR-C015, B33-P1SR-C017, B33-P1SR-C008, A5270 | 2d | 0d | Steel [5.73 M3]; Steel [28 M3] |
| B33-P1SR-C010 |  | Installation of Wall Covering |  | 5d | 2017-01-26 | 2017-01-31 | B33-P1SR-C005, B33-P1SR-C006, B33-P1SR-C008, B33-P1SR-C009, B33-P1SR-C012, B33-P1SR-C003, A5270, A5300 | 2d | 0d | Steel [4.09 M3]; Steel [20 M3] |
| B33-P1SR-C013 |  | Installation of Glazing Works |  | 5d | 2017-01-26 | 2017-01-31 | B33-P1SR-C005, B33-P1SR-C006, B33-P1SR-C008, B33-P1SR-C009, B33-P1SR-C012, A5270 | 2d | 0d | Steel [4.09 M3]; Steel [28 M3] |
| B33-P1SR-C014 |  | Installation of Sanitary Ware |  | 5d | 2017-01-26 | 2017-01-31 | B33-P1SR-C005, B33-P1SR-C006, B33-P1SR-C008, B33-P1SR-C009, B33-P1SR-C012, A5270 | 2d | 0d | Steel [4.09 M3]; Steel [35 M3] |
| B33-P1SR-C018 |  | Installation of Carpet |  | 4d | 2017-02-01 | 2017-02-05 | B33-P1SR-C003, B33-P1SR-C004, B33-P1SR-C005, B33-P1SR-C006, B33-P1SR-C007, B33-P1SR-C008, B33-P1SR-C009, B33-P1SR-C010, B33-P1SR-C011, B33-P1SR-C012, B33-P1SR-C013, B33-P1SR-C014, B33-P1SR-C015, B33-P1SR-C017, A5270 | 2d | 0d | Steel [2.45 M3]; Steel [4 M3] |
| B33-P1SR-C019 |  | Installation of Vinyl |  | 4d | 2017-02-01 | 2017-02-05 | B33-P1SR-C003, B33-P1SR-C004, B33-P1SR-C005, B33-P1SR-C006, B33-P1SR-C007, B33-P1SR-C008, B33-P1SR-C009, B33-P1SR-C010, B33-P1SR-C011, B33-P1SR-C012, B33-P1SR-C013, B33-P1SR-C014, B33-P1SR-C015, B33-P1SR-C017, A5270 | 2d | 0d | Steel [2.45 M3]; Steel [2 M3] |
| B33-P1SR-S020 |  | Snagging and De-Snagging |  | 7d | 2017-02-06 | 2017-02-13 | B33-P1SR-C003, B33-P1SR-C010, B33-P1SR-C013, B33-P1SR-C014, B33-P1SR-C018, B33-P1SR-C019, A5270 | 2d |  | Steel [5.73 M3]; Steel [14 M3] |

| ID | WBS | Activity | Type | Duration | Start | Finish | Predecessors | Total float | Free float | Resources |
| --- | --- | --- | --- | --- | --- | --- | --- | --- | --- | --- |
|  | 11 | **BILL 37 - 7F - PUBLIC TOILETS** |  |  | 2016-10-03 | 2017-02-15 |  |  |  |  |
| A5360 |  | Prerequisite for Civil Works (MEP 1st , 2nd Fix and Block Works) | milestone | 0d | 2016-10-03 | 2016-10-03 | A5320 | 2d | 0d |  |
| A5370 |  | Area Clearance Process |  | 2d | 2016-10-03 | 2016-10-04 | A5360, A5320 | 2d | 0d | Steel [1.64 M3] |
| A5380 |  | Measurement , Framing and Enabling Works |  | 14d | 2016-10-05 | 2016-10-20 | A5370, A5320 | 2d |  | Steel [63 M3] |
| A5390 |  | Installation of Ceiling System |  | 10d | 2016-10-24 | 2016-11-03 | A5380, A2630, A5320 | 0d |  | Steel [80 M3] |
| A5400 |  | MEP Celing Closure Clearance |  | 3d | 2016-11-05 | 2016-11-07 | A5390, A5320 | 0d |  | Steel [4.09 M3] |
| A5410 |  | Ceiling Closure |  | 10d | 2016-11-08 | 2016-11-19 | A5400, A2640, A5320 | 0d |  | Steel [80 M3] |
| A5420 |  | Screed |  | 5d | 2016-11-20 | 2016-11-24 | A5410, A5320 | 0d |  |  |
| A5480 |  | Paint Works |  | 60d | 2016-11-20 | 2017-01-30 | A5410, A2510, A2650, A5320 | 7d |  | Steel [60 M3] |
| A5430 |  | Wall Cladding |  | 10d | 2016-11-26 | 2016-12-07 | A5420, A2540, A5320, A2530 | 0d |  | Steel [60 M3] |
| A5440 |  | Floor Tiling |  | 10d | 2016-12-08 | 2016-12-20 | A5430, A5320, A2360, A2370 | 0d |  | Steel [50 M3] |
| A5450 |  | Wooden Wall Panelling |  | 10d | 2016-12-21 | 2017-01-01 | A5440, A2570, A5320, A5330 | 0d |  | Steel [50 M3] |
| A5460 |  | Wooden Flooring |  | 7d | 2017-01-02 | 2017-01-09 | A5450, A5320, A5330 | 0d |  | Steel [35 M3] |
| A5470 |  | Joinery and Carpentry Works |  | 14d | 2017-01-10 | 2017-01-25 | A5460, A2730, A2740, A2760, A5320, A5330 | 0d |  | Steel [70 M3] |
| A5490 |  | Aluminium and Glazing Works |  | 7d | 2017-01-26 | 2017-02-02 | A5470, A2940, A2950, A5320, A2970 | 0d |  | Steel [30 M3] |
| A5500 |  | Doors , Frames , Ironmongery and Hardware |  | 3d | 2017-02-04 | 2017-02-06 | A5510 SS, A2720, A5320, A5330, A5550 | 0d |  | Steel [9 M3] |
| A5510 |  | Wall Covering |  | 3d | 2017-02-04 | 2017-02-06 | A5490, A2550, A5320, A5330 | 0d |  | Steel [15 M3] |
| A5520 |  | Lighting Points and Fittings |  | 4d | 2017-02-04 | 2017-02-07 | A5500 SS, A2840, A2860, A5320 | 0d |  | Steel [14 M3] |
| A5530 |  | Snagging and De-Snagging |  | 7d | 2017-02-08 | 2017-02-15 | A5480, A5320, A5520, A2380, A2340 | 0d |  | Steel [28 M3] |
|  | 12 | **BILL 38 - UG - GROCERY - TOWER A** |  |  | 2016-10-16 | 2017-02-15 |  |  |  |  |
| A5600 |  | Prerequisite for Civil Works (MEP 1st , 2nd Fix and Block Works) | milestone | 0d | 2016-10-16 | 2016-10-16 | A5550 | 0d |  |  |
| A5610 |  | Area Clearance Process |  | 2d | 2016-10-16 | 2016-10-17 | A5600, A5550 | 0d |  | Steel [1.64 M3] |
| A5620 |  | Measurement , Framing and Enabling Works |  | 14d | 2016-10-18 | 2016-11-02 | A5610, A5550 | 0d |  | Steel [63 M3] |
| A5630 |  | Installation of Ceiling System |  | 7d | 2016-11-03 | 2016-11-10 | A5620, A2630, A5550 | 0d |  | Steel [80 M3] |
| A5640 |  | MEP Celing Closure Clearance |  | 3d | 2016-11-12 | 2016-11-14 | A5630, A5550 | 0d |  | Steel [6 M3] |
| A5650 |  | Ceiling Closure |  | 7d | 2016-11-15 | 2016-11-22 | A5640, A2640, A5550 | 0d |  | Steel [70 M3] |
| A5660 |  | Screed |  | 3d | 2016-11-23 | 2016-11-26 | A5650, A5550 | 0d |  |  |
| A5780 |  | Paint Works |  | 60d | 2016-11-23 | 2017-02-02 | A5650, A2510, A2650, A5550 | 0d |  | Steel [120 M3] |
| A5670 |  | Wall Cladding |  | 7d | 2016-11-27 | 2016-12-05 | A5660, A2520, A2540, A2580, A2530, A5550 | 0d |  | Steel [50 M3] |
| A5680 |  | Floor Tiling |  | 7d | 2016-12-06 | 2016-12-14 | A5670, A2360, A2370, A5550 | 0d |  | Steel [60 M3] |
| A5690 |  | Wooden Wall Panelling |  | 7d | 2016-12-15 | 2016-12-22 | A5680, A2570, A5550, A5570 | 0d |  | Steel [50 M3] |
| A5700 |  | Wooden Flooring |  | 7d | 2016-12-24 | 2016-12-31 | A5690, A2350, A5550, A5570 | 0d |  | Steel [35 M3] |
| A5710 |  | Joinery and Carpentry Works |  | 14d | 2017-01-01 | 2017-01-16 | A5700, A2730, A2740, A2760, A5550, A5570 | 0d |  | Steel [70 M3] |
| A5720 |  | Aluminium and Glazing Works |  | 10d | 2017-01-17 | 2017-01-28 | A5710, A2940, A2960, A5550 | 0d |  | Steel [30 M3] |
| A5730 |  | Doors , Frames , Ironmongery and Hardware |  | 3d | 2017-01-29 | 2017-01-31 | A5760 SS, A2720, A5550, A5570 | 0d |  | Steel [9 M3] |
| A5740 |  | Lighting Points and Fittings |  | 5d | 2017-01-29 | 2017-02-02 | A5730 SS, A2840, A2850, A2860, A2870, A2880, A2890, A5550 | 0d |  | Steel [10 M3] |
| A5760 |  | Wall Covering |  | 3d | 2017-01-29 | 2017-01-31 | A5720, A2550, A5550, A5570 | 0d |  | Steel [15 M3] |
| A5790 |  | Sanitary Equipment & Fixture |  | 5d | 2017-02-01 | 2017-02-06 | A3000, A5760, A5550 | 1d |  | Steel [10 M3] |
| A5750 |  | Carpet / Vinyle / Rubber |  | 4d | 2017-02-04 | 2017-02-07 | A5740, A5780, A2340, A2410, A2390, A2380, A5550 | 0d |  | Steel [9 M3] |
| A5770 |  | Snagging and De-Snagging |  | 7d | 2017-02-08 | 2017-02-15 | A5750, A5780, A5790, A5550 | 0d |  | Steel [28 M3] |
