# DAMAC Towers by Paramount BLRev4.3 UP (26-April-18))

Schedule from Primavera P6, 2016-04-04 to 2018-08-01, data date 2018-04-26, A marks actual dates.
Must finish by 2017-02-16

## Calendars

- ATL522 - Construction Works (6x9): Mon-Thu 07:30-16:30; Fri off; Sat-Sun 07:30-16:30. Exceptions (off unless hours are given): 2016-05-05, 2016-07-06 to 2016-07-07, 2016-09-11 to 2016-09-13, 2016-10-02, 2016-11-30, 2016-12-11.
- ATL522 - Engineering Submission (5x9): Mon-Thu 07:30-16:30; Fri-Sat off; Sun 07:30-16:30. Exceptions (off unless hours are given): 2016-05-05, 2016-07-06 to 2016-07-07, 2016-09-11 to 2016-09-13, 2016-10-02, 2016-11-30, 2016-12-11.
- ATL522 - Engineering Approval (7x9): Mon-Sun 07:30-16:30. Exceptions (off unless hours are given): 2016-05-05, 2016-07-06 to 2016-07-07, 2016-09-11 to 2016-09-13, 2016-10-02, 2016-11-30, 2016-12-11.
- ATL522 - Local Procurment (7x24): Mon-Sun 00:00-00:00. Exceptions (off unless hours are given): 2016-05-05, 2016-07-06 to 2016-07-07, 2016-09-11 to 2016-09-13, 2016-10-02, 2016-11-30, 2016-12-11.
- 7x24: Mon-Sun 01:00-12:00, 13:00-00:00.
- ATL522 - EU Procurment (7x24): Mon-Sun 00:00-00:00. Exceptions (off unless hours are given): 2016-05-05, 2016-07-06 to 2016-07-07, 2016-07-31 to 2016-08-31, 2016-09-11 to 2016-09-13, 2016-10-02, 2016-11-30, 2016-12-11.

## Resources

| Resource | Group | Unit |
| --- | --- | --- |
| Concrete Barrier | material | m |
| Bitumin Paint | material | M2 |

## Schedule

| ID | WBS | Activity | Type | Duration | Start | Finish | Predecessors | Complete | Planned start | Planned finish | Total float | Free float | Calendar |
| --- | --- | --- | --- | --- | --- | --- | --- | --- | --- | --- | --- | --- | --- |
|  | 1 | **Project Key Dates** |  |  | 2016-04-04 | 2018-08-01 |  |  |  |  |  |  |  |
| KD01 |  | Project Commencement (Nomination) | milestone | 0d | 2016-04-04 A | 2016-04-04 A |  | 100% | 2016-04-06 | 2016-04-06 |  |  | 7x24 |
| KD15 |  | Project Completion (TOC) | milestone | 0d | 2018-08-01 | 2018-08-01 | TOC17, TOC20, TOC06, TOC08, TOC10, B14-P1PF-S012, B6-UPHLL-S006, B13-UPRL-S010, B20-UPCB-C004, KD05, TOC16, TOC05, A4540, A4730, A5530, A5770, B8-UPFO-S007, B9-UPCB-S13, B34-UPSEB-S018, KD35, TOC19, TOC02, TOC01, A6040, B33-P1SR-S020, B5-UPSD-S009, B7-UPRLL-S009, TOC03, A3400, A3590, B29-SPALC-S018, TOC11, B15-P1RPF-C010, B4-UPVP-S013, B10-UPRT-S007, B35-TCSR-S007, TOC15, TOC09, TOC12, A3970, A4350, B12-UPPR-S10, B2-UPHL-S13, B28-TsLC-S010, B3-UPHR-S012, B12-UPPR-S010, KD25, TOC21, TOC04, TOC07, A3780, B11-UPRR-S011, B39-LGLL-S009 |  |  |  | -531.36d | 0d | ATL522 - Engineering Approval (7x9) |
|  | 2 | **Project Milestones** |  |  | 2016-04-06 | 2018-08-01 |  |  |  |  |  |  |  |
|  | 1 | **Required Milestones** |  |  | 2016-04-06 | 2018-04-26 |  |  |  |  |  |  |  |
|  | 4 | **Advance Payment** |  |  | 2016-04-06 | 2016-08-28 |  |  |  |  |  |  |  |
| KD02 |  | Contract Sing off | milestone | 0d | 2016-04-06 A | 2016-04-06 A | KD01 FS+7d | 100% | 2016-04-13 | 2016-04-13 |  |  | ATL522 - Engineering Submission (5x9) |
| KD03 |  | Receipt of Advance Payment | milestone | 0d | 2016-08-28 A | 2016-08-28 A | KD02 FS+14d | 100% | 2016-07-04 | 2016-07-04 |  |  | ATL522 - Engineering Submission (5x9) |
|  | 1 | **Design Freeze** |  |  | 2016-04-06 | 2016-06-26 |  |  |  |  |  |  |  |
| RM-DF-013 |  | Design Freeze & Receipt of IFC Drawing Bill 14 P1-PRE-FUNCTION |  | 0d | 2016-04-06 A | 2016-04-07 A | KD01 | 100% | 2016-04-06 | 2016-04-06 |  |  | 7x24 |
| RM-DF-014 |  | Design Freeze & Receipt of IFC Drawing Bill 15 P1-REST ROOMS (PRE-FUNTION) |  | 0d | 2016-04-06 A | 2016-04-07 A | KD01 | 100% | 2016-04-06 | 2016-04-06 |  |  | 7x24 |
| RM-DF-015 |  | Design Freeze & Receipt of IFC Drawing Bill 20 UP-COFFEE BAR |  | 0d | 2016-04-06 A | 2016-04-07 A | KD01 | 100% | 2016-04-06 | 2016-04-06 |  |  | 7x24 |
| RM-DF-019 |  | Design Freeze & Receipt of IFC Drawing Bill 33 P1-SCREENING ROOM |  | 0d | 2016-04-06 A | 2016-04-07 A | KD01 | 100% | 2016-04-06 | 2016-04-06 |  |  | 7x24 |
| RM-DF-011 |  | Design Freeze & Receipt of IFC Drawing Bill 12 UP-PRAYER ROOMS | milestone | 0d | 2016-04-25 A | 2016-04-25 A | KD01 SS, KD01 | 100% | 2016-04-06 | 2016-04-06 |  |  | ATL522 - Engineering Submission (5x9) |
| RM-DF-001 |  | Design Freeze & Receipt of IFC Drawing Bill 2 UP-HOTEL LOBBY | milestone | 0d | 2016-05-11 A | 2016-05-11 A | KD01, KD01 SS | 100% | 2016-04-06 | 2016-04-06 |  |  | ATL522 - Engineering Submission (5x9) |
| RM-DF-002 |  | Design Freeze & Receipt of IFC Drawing Bill 3 UP-HOTEL RECEPTION | milestone | 0d | 2016-05-11 A | 2016-05-11 A | KD01, KD01 SS | 100% | 2016-04-06 | 2016-04-06 |  |  | ATL522 - Engineering Submission (5x9) |
| RM-DF-003 |  | Design Freeze & Receipt of IFC Drawing Bill 4 UP-VIP PROTOCOL | milestone | 0d | 2016-05-11 A | 2016-05-11 A | KD01 SS, KD01 | 100% | 2016-04-06 | 2016-04-06 |  |  | ATL522 - Engineering Submission (5x9) |
| RM-DF-004 |  | Design Freeze & Receipt of IFC Drawing Bill 5 UP-SAFE DEPOSIT | milestone | 0d | 2016-05-11 A | 2016-05-11 A | KD01, KD01 SS | 100% | 2016-04-06 | 2016-04-06 |  |  | ATL522 - Engineering Submission (5x9) |
| RM-DF-005 |  | Design Freeze & Receipt of IFC Drawing Bill 6 UP-HOTEL LIFT LOBBY | milestone | 0d | 2016-05-11 A | 2016-05-11 A | KD01, KD01 SS | 100% | 2016-04-06 | 2016-04-06 |  |  | ATL522 - Engineering Submission (5x9) |
| RM-DF-006 |  | Design Freeze & Receipt of IFC Drawing Bill 7 UP-RESIDENCE'S LIFT LOBBY | milestone | 0d | 2016-05-11 A | 2016-05-11 A | KD01, KD01 SS | 100% | 2016-04-06 | 2016-04-06 |  |  | ATL522 - Engineering Submission (5x9) |
| RM-DF-007 |  | Design Freeze & Receipt of IFC Drawing Bill 8 UP-FRONT OFFICE | milestone | 0d | 2016-05-11 A | 2016-05-11 A | KD01 SS, KD01 | 100% | 2016-04-06 | 2016-04-06 |  |  | ATL522 - Engineering Submission (5x9) |
| RM-DF-009 |  | Design Freeze & Receipt of IFC Drawing Bill 10 UP-RETAIL | milestone | 0d | 2016-05-11 A | 2016-05-11 A | KD01 SS, KD01 | 100% | 2016-04-06 | 2016-04-06 |  |  | ATL522 - Engineering Submission (5x9) |
| RM-DF-010 |  | Design Freeze & Receipt of IFC Drawing Bill 11 UP-REST ROOMS | milestone | 0d | 2016-05-11 A | 2016-05-11 A | KD01, KD01 SS | 100% | 2016-04-06 | 2016-04-06 |  |  | ATL522 - Engineering Submission (5x9) |
| RM-DF-012 |  | Design Freeze & Receipt of IFC Drawing Bill 13 UP-RESIDENCES LOBBY | milestone | 0d | 2016-05-11 A | 2016-05-11 A | KD01 SS, KD01 | 100% | 2016-04-06 | 2016-04-06 |  |  | ATL522 - Engineering Submission (5x9) |
| RM-DF-020 |  | Design Freeze & Receipt of IFC Drawing Bill 34 UP-SPEAK EASY BAR | milestone | 0d | 2016-05-11 A | 2016-05-11 A | KD01, KD01 SS | 100% | 2016-04-06 | 2016-04-06 |  |  | ATL522 - Engineering Submission (5x9) |
| RM-DF-017 |  | Design Freeze & Receipt of IFC Drawing Bill 29 SPA | milestone | 0d | 2016-05-23 A | 2016-05-23 A | KD01 SS, KD01 | 100% | 2016-04-06 | 2016-04-06 |  |  | ATL522 - Engineering Submission (5x9) |
| RM-DF-008 |  | Design Freeze & Receipt of IFC Drawing Bill 9 UP-CHOCOLATE BOUTIQUE | milestone | 0d | 2016-06-07 A | 2016-06-07 A | KD01, KD01 SS | 100% | 2016-04-06 | 2016-04-06 |  |  | ATL522 - Engineering Submission (5x9) |
| RM-DF-022 |  | Design Freeze & Receipt of IFC Drawing Bill 39 LG- LIFT LOBBY | milestone | 0d | 2016-06-12 A | 2016-06-12 A | KD01 SS, KD01 | 100% | 2016-04-06 | 2016-04-06 |  |  | ATL522 - Engineering Submission (5x9) |
| RM-DF-016 |  | Design Freeze & Receipt of IFC Drawing Bill 28 LIFT CAR - TOWER A, B & D | milestone | 0d | 2016-06-26 A | 2016-06-26 A | KD01 | 100% | 2016-04-06 | 2016-04-06 |  |  | 7x24 |
| RM-DF-021 |  | Design Freeze & Receipt of IFC Drawing Bill 35 LIFT CAR - TOWER C | milestone | 0d | 2016-06-26 A | 2016-06-26 A | KD01 SS, KD01 | 100% | 2016-04-06 | 2016-04-06 |  |  | ATL522 - Engineering Submission (5x9) |

| ID | WBS | Activity | Type | Duration | Start | Finish | Predecessors | Complete | Planned start | Planned finish | Total float | Free float | Constraint | Calendar |
| --- | --- | --- | --- | --- | --- | --- | --- | --- | --- | --- | --- | --- | --- | --- |
|  | 3 | **Site Access** |  |  | 2016-05-25 | 2018-01-15 |  |  |  |  |  |  |  |  |
| RM-SA-000 |  | Site Acess to Mobilize | milestone | 0d | 2016-05-25 A | 2016-05-25 A | KD01 | 100% | 2016-05-01 | 2016-05-01 |  |  |  | 7x24 |
| RM-SA-003 |  | Site Acess Bill 4 UP-VIP PROTOCOL | milestone | 0d | 2016-07-03 A | 2016-07-03 A | KD01 | 100% |  |  |  |  |  | ATL522 - Engineering Submission (5x9) |
| RM-SA-011 |  | Site Acess Bill 12 UP-PRAYER ROOMS | milestone | 0d | 2016-07-03 A | 2016-07-03 A | KD01 | 100% |  |  |  |  |  | ATL522 - Engineering Submission (5x9) |
| RM-SA-020 |  | Site Acess Bill 34 UP-SPEAK EASY BAR | milestone | 0d | 2016-07-03 A | 2016-07-03 A | KD01 | 100% |  |  |  |  |  | ATL522 - Engineering Submission (5x9) |
| RM-SA-004 |  | Site Acess Bill 5 UP-SAFE DEPOSIT | milestone | 0d | 2016-08-07 A | 2016-08-07 A | KD01 | 100% | 2016-12-15 | 2016-12-15 |  |  | start on 2016-11-13 | ATL522 - Engineering Submission (5x9) |
| RM-SA-002 |  | Site Acess Bill 3 UP-HOTEL RECEPTION | milestone | 0d | 2016-08-28 A | 2016-08-28 A | KD01 | 100% | 2016-08-14 | 2016-08-14 |  |  | start on or after 2016-08-14 | ATL522 - Engineering Submission (5x9) |
| RM-SA-005 |  | Site Acess Bill 6 UP-HOTEL LIFT LOBBY | milestone | 0d | 2016-09-19 A | 2016-09-19 A | KD01 | 100% | 2016-12-15 | 2016-12-15 |  |  | start on or after 2016-11-13 | ATL522 - Engineering Submission (5x9) |
| RM-SA-006 |  | Site Acess Bill 7 UP-RESIDENCE'S LIFT LOBBY | milestone | 0d | 2016-09-27 A | 2016-09-27 A | KD01 | 100% | 2016-12-15 | 2016-12-15 |  |  | start on or after 2016-11-13 | ATL522 - Engineering Submission (5x9) |
| RM-SA-012 |  | Site Acess Bill 13 UP-RESIDENCES LOBBY | milestone | 0d | 2016-10-13 A | 2016-10-13 A | KD01 | 100% | 2016-12-15 | 2016-12-15 |  |  | start on or after 2016-11-13 | ATL522 - Engineering Submission (5x9) |
| RM-SA-007 |  | Site Acess Bill 8 UP-FRONT OFFICE | milestone | 0d | 2016-10-26 A | 2016-10-26 A | KD01 | 100% | 2016-10-03 | 2016-10-03 |  |  | start on or after 2016-10-03 | ATL522 - Engineering Submission (5x9) |
| RM-SA-001 |  | Site Acess Bill 2 UP-HOTEL LOBBY | milestone | 0d | 2016-10-30 A | 2016-10-30 A | KD01 | 100% |  |  |  |  | start on or after 2016-10-30 | ATL522 - Engineering Submission (5x9) |
| RM-SA-010 |  | Site Acess Bill 11 UP-REST ROOMS | milestone | 0d | 2016-11-10 A | 2016-11-10 A | KD01 | 100% | 2016-12-15 | 2016-12-15 |  |  | start on or after 2016-11-13 | ATL522 - Engineering Submission (5x9) |
| RM-SA-009 |  | Site Acess Bill 10 UP-RETAIL | milestone | 0d | 2017-01-11 A | 2017-01-11 A | KD01 | 100% | 2016-12-15 | 2016-12-15 |  |  | start on or after 2016-11-13 | ATL522 - Engineering Submission (5x9) |
| RM-SA-016 |  | Site Acess Bill 28 LIFT CAR - TOWER A, B & D | milestone | 0d | 2017-01-25 A | 2017-01-25 A | KD01 | 100% | 2017-02-12 | 2017-02-12 |  |  | start on or after 2016-11-13 | ATL522 - Engineering Submission (5x9) |
| RM-SA-017 |  | Site Acess Bill 29 SPA | milestone | 0d | 2017-01-25 A | 2017-01-25 A | KD01 | 100% | 2017-02-12 | 2017-02-12 |  |  | start on or after 2016-11-13 | ATL522 - Engineering Submission (5x9) |
| RM-SA-021 |  | Site Acess Bill 35 LIFT CAR - TOWER C | milestone | 0d | 2017-01-25 A | 2017-01-25 A | KD01 | 100% | 2017-03-26 | 2017-03-26 |  |  | start on or after 2016-11-13 | ATL522 - Engineering Submission (5x9) |
| RM-SA-022 |  | Site Acess Bill 39 LG- LIFT LOBBY | milestone | 0d | 2017-03-20 A | 2017-03-20 A | KD01 | 100% | 2017-08-03 | 2017-08-03 |  |  | start on or after 2016-11-13 | ATL522 - Engineering Submission (5x9) |
| RM-SA-008 |  | Site Acess Bill 9 UP-CHOCOLATE BOUTIQUE | milestone | 0d | 2017-08-17 A | 2017-08-17 A | KD01 | 100% |  |  |  |  | start on or after 2016-11-13 | ATL522 - Engineering Submission (5x9) |
| RM-SA-015 |  | Site Acess Bill 20 UP-COFFEE BAR | milestone | 0d | 2018-01-15 A | 2018-01-15 A | KD01 | 100% | 2018-02-15 | 2018-02-15 |  |  | start on or after 2016-11-13 | ATL522 - Engineering Submission (5x9) |
|  | 2 | **Wild Air Milestones** |  |  | 2017-06-20 | 2018-04-26 |  |  |  |  |  |  |  |  |
| RM-AC-006 |  | A/C on Bill 7 UP-RESIDENCE'S LIFT LOBBY | milestone | 0d | 2017-06-20 A | 2017-06-20 A | KD01, RM-SA-006 | 100% | 2017-07-06 | 2017-07-06 |  |  | start on or after 2016-11-13 | 7x24 |
| RM-AC-012 |  | A/C on Bill 13 UP-RESIDENCES LOBBY | milestone | 0d | 2017-06-20 A | 2017-06-20 A | RM-SA-012 FS+21d, KD01 | 100% | 2017-07-27 | 2017-07-27 |  |  | start on 2016-10-02 | 7x24 |
| RM-AC-011 |  | A/C on Bill 12 UP-PRAYER ROOMS | milestone | 0d | 2017-06-25 A | 2017-06-25 A | KD01, RM-SA-011 FS+21d | 100% | 2017-08-03 | 2017-08-03 |  |  | start on or after 2016-11-13 | 7x24 |
| RM-AC-022 |  | A/C on Bill 39 LG- LIFT LOBBY | milestone | 0d | 2017-06-25 A | 2017-06-25 A | KD01, RM-SA-022 FS+21d | 100% | 2017-09-05 | 2017-09-05 |  |  | start on 2016-10-02 | 7x24 |
| RM-AC-010 |  | A/C on Bill 11 UP-REST ROOMS | milestone | 0d | 2017-07-02 A | 2017-07-02 A | RM-SA-010 FS+21d, KD01 | 100% | 2017-08-03 | 2017-08-03 |  |  | start on 2016-10-02 | 7x24 |
| RM-AC-016 |  | A/C on Bill 28 LIFT CAR - TOWER A, B & D | milestone | 0d | 2017-08-01 A | 2017-08-01 A | KD01, RM-SA-016 FS+21d | 100% | 2017-09-21 | 2017-09-21 |  |  | start on 2016-10-02 | 7x24 |
| RM-AC-021 |  | A/C on Bill 35 LIFT CAR - TOWER C | milestone | 0d | 2017-08-01 A | 2017-08-01 A | KD01, RM-SA-021 FS+21d | 100% | 2017-09-21 | 2017-09-21 |  |  | start on 2016-10-02 | 7x24 |
| RM-AC-003 |  | A/C on Bill 4 UP-VIP PROTOCOL | milestone | 0d | 2018-02-28 A | 2018-02-28 A | RM-SA-003, KD01 | 100% | 2018-03-15 | 2018-03-15 |  |  | start on or after 2016-11-13 | 7x24 |
| RM-AC-001 |  | A/C on Bill 2 UP-HOTEL LOBBY | milestone | 0d | 2018-04-26 | 2018-04-26 | KD01, RM-SA-001 |  |  |  | -434d | 97.44d | start on or after 2016-11-13 | 7x24 |
| RM-AC-002 |  | A/C on Bill 3 UP-HOTEL RECEPTION | milestone | 0d | 2018-04-26 | 2018-04-26 | KD01, RM-SA-002 |  |  |  | -434d | 97.44d | start on or after 2016-11-13 | 7x24 |
| RM-AC-004 |  | A/C on Bill 5 UP-SAFE DEPOSIT | milestone | 0d | 2018-04-26 | 2018-04-26 | KD01, RM-SA-004 |  |  |  | -542.7d | 97.44d | start on 2016-10-30 | 7x24 |
| RM-AC-005 |  | A/C on Bill 6 UP-HOTEL LIFT LOBBY | milestone | 0d | 2018-04-26 | 2018-04-26 | KD01, RM-SA-005 FS+21d |  |  |  | -571d | 97.44d | start on 2016-10-02 | 7x24 |
| RM-AC-007 |  | A/C on Bill 8 UP-FRONT OFFICE | milestone | 0d | 2018-04-26 | 2018-04-26 | KD01, RM-SA-007 FS+21d |  |  |  | -571d | 97.44d | start on 2016-10-02 | 7x24 |
| RM-AC-008 |  | A/C on Bill 9 UP-CHOCOLATE BOUTIQUE | milestone | 0d | 2018-04-26 | 2018-04-26 | KD01, RM-SA-008 FS+21d |  |  |  | -571d | 0d | start on 2016-10-02 | 7x24 |
| RM-AC-009 |  | A/C on Bill 10 UP-RETAIL | milestone | 0d | 2018-04-26 | 2018-04-26 | KD01, RM-SA-009 |  |  |  | -434d | 97.44d | start on or after 2016-11-13 | 7x24 |
| RM-AC-015 |  | A/C on Bill 20 UP-COFFEE BAR | milestone | 0d | 2018-04-26 | 2018-04-26 | KD01, RM-SA-015 |  |  |  | -519.64d | 13.5d | start on or after 2016-11-13 | 7x24 |
| RM-AC-017 |  | A/C on Bill 29 SPA | milestone | 0d | 2018-04-26 | 2018-04-26 | KD01, RM-SA-017 FS+21d |  |  |  | -571d | 97.44d | start on 2016-10-02 | 7x24 |
| RM-AC-020 |  | A/C on Bill 34 UP-SPEAK EASY BAR | milestone | 0d | 2018-04-26 | 2018-04-26 | KD01, RM-SA-020 FS+21d |  |  |  | -434d | 97.44d | start on or after 2016-11-13 | 7x24 |

| ID | WBS | Activity | Type | Duration | Start | Finish | Predecessors | Complete | Planned start | Planned finish | Total float | Free float | Calendar |
| --- | --- | --- | --- | --- | --- | --- | --- | --- | --- | --- | --- | --- | --- |
|  | 3 | **Control Milestones** |  |  | 2018-01-01 | 2018-08-01 |  |  |  |  |  |  |  |
|  | 2 | **Phases** |  |  | 2018-01-01 | 2018-08-01 |  |  |  |  |  |  |  |
| KD25 |  | Completion of Engineering Phase | milestone | 0d | 2018-01-01 A | 2018-01-01 A | B2-UPHL-SDS160, B2-UPHL-SDS190, B2-UPHL-SDS135, B34-UPSEB-SDA200, B34-UPSEB-SDA210, B29-SPA-SDS170, B29-SPA-SDA230, B5-UPSD-SDS200, B39-LGLL-SDS135, B4-UPVP-SDA170, B4-UPVP-SDA180, B4-UPVP-SDA200, B7-UPRLL-SDS110, B9-UPCB-SDS190, B9-UPCB-SDS135, B10-UPRT-SDA110, B12-UPPR-SDS190, B12-UPPR-SDA180, B13-UPRL-SDA170, B28-TsLC-SDA190, B11-UPRER-SDA110, B6-UPHLL-SDA130, B3-UPHR-MA150, B12-UPPR-MS110, B12-UPPR-MA190, B28-TsLC-MA190, B2-UPHL-MS200, B7-UPRLL-MA190, B8-UPFO-MA110, B5-UPSD-MA270, B11-UPRR-MS200, B13-UPRL-MS110, B13-UPRL-MS150, B10-UPRT-MA150, B29-SPALC-MS230, B29-SPALC-MA110, B29-SPALC-MA200, B29-SPALC-MA270, B34-UPSEB-MS250, B34-UPSEB-MS270, B34-UPSEB-MS300, B34-UPSEB-MA240, B34-UPSEB-MA290, B34-UPSEB-MA310, B39-LGLL-MA160, B4-UPVP-MS270, B4-UPVP-MA170, B9-UPCB-MA210, B2-UPHL-SDA190, B34-UPSEB-SDA220, B34-UPSEB-SDS200, B29-SPA-SDS190, B29-SPA-SDS200, B29-SPA-SDS210, B5-UPSD-SDA200, B5-UPSD-SDA230, B39-LGLL-SDA110, B39-LGLL-SDA170, B4-UPVP-SDS170, B4-UPVP-SDS180, B7-UPRLL-SDA170, B7-UPRLL-SDA130, B8-UPFO-SDS180, B8-UPFO-SDA170, B8-UPFO-SDA210, B9-UPCB-SDS170, B9-UPCB-SDA180, B9-UPCB-SDA200, B10-UPRT-SDS130, B12-UPPR-SDS160, B12-UPPR-SDS170, B6-UPHLL-MA150, B12-UPPR-MS140, B12-UPPR-MS270, B28-TsLC-MS160, B28-TsLC-MA110, B28-TsLC-MA150, B28-TsLC-MA160, B2-UPHL-MA270, B11-UPRR-MS190, B11-UPRR-MA290, B20-UPCB-MS110, B29-SPALC-MS110, B34-UPSEB-MS220, B34-UPSEB-MS240, B34-UPSEB-MA270, B34-UPSEB-MA300, B4-UPVP-MA190, B9-UPCB-MA200, B35-TCSR-MS150, B2-UPHL-SDA170, B2-UPHL-SDS170, B2-UPHL-SDS180, B34-UPSEB-SDS180, B34-UPSEB-SDS190, B29-SPA-SDS160, B5-UPSD-SDS210, B5-UPSD-SDS180, B5-UPSD-SDS190, B4-UPVP-SDS175, B4-UPVP-SDS190, B35-TCLC-SDS160, B8-UPFO-SDS200, B8-UPFO-SDS135, B8-UPFO-SDA220, B9-UPCB-SDA160, B10-UPRT-SDA130, B13-UPRL-SDS150, B20-UPCB-SDS160, B28-TsLC-SDS170, B11-UPRER-SDA180, B6-UPHLL-SDA170, B6-UPHLL-SDS130, B3-UPHR-MS190, B6-UPHLL-MS150, B12-UPPR-MS190, B2-UPHL-MS220, B2-UPHL-MS230, B2-UPHL-MA160, B2-UPHL-MA210, B8-UPFO-MS190, B5-UPSD-MS110, B5-UPSD-MS190, B11-UPRR-MS290, B13-UPRL-MA110, B10-UPRT-MS140, B10-UPRT-MS150, B29-SPALC-MA290, B29-SPALC-MS150, B29-SPALC-MA150, B29-SPALC-MA230, B29-SPALC-MA250, B34-UPSEB-MA280, B9-UPCB-MS150, B9-UPCB-MS190, B9-UPCB-MA190, B34-UPSEB-SDA180, B34-UPSEB-SDA170, B34-UPSEB-SDS210, B29-SPA-SDA170, B29-SPA-SDA180, B29-SPA-SDA190, B5-UPSD-SDA190, B5-UPSD-SDS155, B39-LGLL-SDA180, B39-LGLL-SDA190, B39-LGLL-SDS160, B4-UPVP-SDA140, B4-UPVP-SDS150, B3-UPHR-SDA150, B9-UPCB-SDS150, B9-UPCB-SDA210, B10-UPRT-SDA160, B10-UPRT-SDA170, B13-UPRL-SDS170, B13-UPRL-SDA160, B28-TsLC-SDS150, B3-UPHR-MS150, B6-UPHLL-MA160, B12-UPPR-MS210, B12-UPPR-MA210, B8-UPFO-MS210, B11-UPRR-MA190, B29-SPALC-MA240, B29-SPALC-MA280, B34-UPSEB-MS150, B34-UPSEB-MS290, B34-UPSEB-MA250, B39-LGLL-MS150, B4-UPVP-MS190, B9-UPCB-MS200, B9-UPCB-MA110, B9-UPCB-MA150, B35-TCSR-MS190, B2-UPHL-SDA210, B2-UPHL-SDA230, B34-UPSEB-SDA190, B29-SPA-SDS180, B5-UPSD-SDA170, B5-UPSD-SDA210, B5-UPSD-SDS170, B39-LGLL-SDS170, B4-UPVP-SDA190, B35-TCLC-SDA110, B35-TCLC-SDS150, B3-UPHR-SDS130, B10-UPRT-SDS135, B12-UPPR-SDA160, B12-UPPR-SDA190, B13-UPRL-SDS110, B13-UPRL-SDA180, B20-UPCB-SDS170, B20-UPCB-SDA160, B20-UPCB-SDA180, B28-TsLC-SDA180, B11-UPRER-SDS190, B11-UPRER-SDA170, B6-UPHLL-SDS110, B3-UPHR-MS160, B3-UPHR-MA190, B28-TsLC-MS110, B28-TsLC-MS190, B2-UPHL-MS150, B2-UPHL-MA150, B2-UPHL-MA230, B5-UPSD-MA190, B11-UPRR-MS170, B11-UPRR-MA280, B13-UPRL-MA150, B10-UPRT-MS180, B34-UPSEB-MA200, B39-LGLL-MS160, B4-UPVP-MS140, B4-UPVP-MA110, B4-UPVP-MA140, B35-TCSR-MA190, B2-UPHL-SDA200, B2-UPHL-SDS210, B29-SPA-SDS135, B29-SPA-SDA200, B29-SPA-SDA210, B39-LGLL-SDS110, B35-TCLC-SDS110, B35-TCLC-SDS170, B3-UPHR-SDA110, B7-UPRLL-SDA110, B8-UPFO-SDS190, B8-UPFO-SDA190, B8-UPFO-SDA200, B8-UPFO-SDA230, B9-UPCB-SDA190, B10-UPRT-SDS150, B12-UPPR-SDS180, B12-UPPR-SDA200, B13-UPRL-SDA110, B20-UPCB-SDS180, B20-UPCB-SDA170, B28-TsLC-SDS135, B28-TsLC-SDA110, B11-UPRER-SDS160, B11-UPRER-SDS170, B6-UPHLL-SDA110, B6-UPHLL-SDA160, B12-UPPR-MA110, B28-TsLC-MS230, B2-UPHL-MS110, B2-UPHL-MS160, B2-UPHL-MA110, B2-UPHL-MA200, B5-UPSD-MS270, B5-UPSD-MA110, B11-UPRR-MS280, B20-UPCB-MA110, B29-SPALC-MS290, B29-SPALC-MA220, B34-UPSEB-MA150, B39-LGLL-MA110, B39-LGLL-MA150, B39-LGLL-MS190, B4-UPVP-MS110, B4-UPVP-MA270, B9-UPCB-MS110, B35-TCSR-MA150, B2-UPHL-SDA220, B2-UPHL-SDS200, B34-UPSEB-SDS160, B34-UPSEB-SDS170, B34-UPSEB-SDS135, B29-SPA-SDA220, B5-UPSD-SDA180, B5-UPSD-SDS160, B39-LGLL-SDS150, B4-UPVP-SDA210, B35-TCLC-SDA160, B35-TCLC-SDA170, B3-UPHR-SDS150, B3-UPHR-SDS110, B3-UPHR-SDA130, B7-UPRLL-SDS150, B8-UPFO-SDS210, B8-UPFO-SDA180, B9-UPCB-SDA170, B10-UPRT-SDS110, B13-UPRL-SDS160, B13-UPRL-SDS135, B20-UPCB-SDA150, B28-TsLC-SDS160, B28-TsLC-SDA160, B11-UPRER-SDS110, B11-UPRER-SDS180, B11-UPRER-SDA160, B6-UPHLL-SDS150, B6-UPHLL-MA190, B12-UPPR-MA270, B28-TsLC-MS150, B28-TsLC-MA230, B2-UPHL-MS270, B8-UPFO-MS110, B8-UPFO-MA190, B8-UPFO-MA210, B11-UPRR-MS110, B11-UPRR-MS150, B10-UPRT-MA180, B29-SPALC-MS240, B29-SPALC-MS250, B34-UPSEB-MS230, B39-LGLL-MA190, B9-UPCB-MS210, RM-DF-009, B2-UPHL-SDA180, B34-UPSEB-SDA230, B5-UPSD-SDA220, B39-LGLL-SDA160, B4-UPVP-SDS140, B35-TCLC-SDA150, B7-UPRLL-SDS130, B7-UPRLL-SDS135, B7-UPRLL-SDA160, B8-UPFO-SDS160, B8-UPFO-SDS170, B9-UPCB-SDS160, B9-UPCB-SDS180, B12-UPPR-SDS200, B12-UPPR-SDS210, B12-UPPR-SDA210, B12-UPPR-SDA170, B13-UPRL-SDA190, B20-UPCB-SDS150, B28-TsLC-SDS110, B28-TsLC-SDA170, B11-UPRER-SDA190, B6-UPHLL-SDS135, B3-UPHR-MA160, B6-UPHLL-MS160, B6-UPHLL-MS190, B12-UPPR-MS170, B12-UPPR-MA140, B12-UPPR-MA170, B2-UPHL-MS210, B2-UPHL-MA220, B7-UPRLL-MS190, B8-UPFO-MS270, B8-UPFO-MA270, B11-UPRR-MA110, B11-UPRR-MA150, B11-UPRR-MA170, B11-UPRR-MA200, B13-UPRL-MS190, B13-UPRL-MA190, B10-UPRT-MA140, B29-SPALC-MS200, B29-SPALC-MS220, B29-SPALC-MS270, B29-SPALC-MS280, B34-UPSEB-MS200, B34-UPSEB-MS280, B34-UPSEB-MS310, B34-UPSEB-MA220, B34-UPSEB-MA230, B39-LGLL-MS110, B4-UPVP-MS170, B9-UPCB-MS160, B9-UPCB-MA160 | 100% | 2018-03-15 | 2018-03-15 |  |  | 7x24 |
| KD05 |  | Completion of Procurement Phase | milestone | 0d | 2018-05-03 | 2018-05-03 | B6-UPHLL-PR130, B11-UPRR-PR140, B34-UPSEB-PR140, B34-UPSEB-PR170, B34-UPSEB-PR180, B39-LGLL-PR140, B8-UPFO-PR100, B9-UPCB-PR100, B6-UPHLL-PR140, B2-UPHL-PR140, B5-UPSD-PR260, B11-UPRR-PR180, B11-UPRR-PR100, B12-UPPR-PR160, B12-UPPR-PR200, B10-UPRT-PR130, B29-SPALC-PR100, B28-TsLC-PR130, B4-UPVP-PR110, B9-UPCB-PR140, B11-UPRR-PR130, B11-UPRR-PR270, B12-UPPR-PR100, B29-SPALC-PR160, B39-LGLL-PR100, B4-UPVP-PR180, B3-UPHR-PR130, B3-UPHR-PR140, B3-UPHR-PR180, B5-UPSD-PR180, B13-UPRL-PR180, B29-SPALC-PR260, B29-SPALC-PR210, B34-UPSEB-PR260, B34-UPSEB-PR110, B28-TsLC-PR100, B9-UPCB-PR180, B6-UPHLL-PR180, B2-UPHL-PR180, B11-UPRR-PR260, B12-UPPR-PR260, B10-UPRT-PR120, B10-UPRT-PR170, B29-SPALC-PR190, B29-SPALC-PR140, B34-UPSEB-PR130, B34-UPSEB-PR190, B34-UPSEB-PR210, B35-TCSR-PR180, B39-LGLL-PR130, B2-UPHL-PR130, B2-UPHL-PR170, B2-UPHL-PR100, B11-UPRR-PR160, B20-UPCB-PR100, B29-SPALC-PR180, B29-SPALC-PR130, B28-TsLC-PR140, B7-UPRLL-PR180, B2-UPHL-PR190, B2-UPHL-PR260, B2-UPHL-PR120, B5-UPSD-PR100, B13-UPRL-PR140, B29-SPALC-PR120, B29-SPALC-PR170, B34-UPSEB-PR120, B39-LGLL-PR180, B28-TsLC-PR180, B4-UPVP-PR160, B4-UPVP-PR260, B8-UPFO-PR180, B8-UPFO-PR260, B9-UPCB-PR170, B12-UPPR-PR180, B13-UPRL-PR100, B34-UPSEB-PR160, B34-UPSEB-PR100, B35-TCSR-PR140, B28-TsLC-PR220, B4-UPVP-PR130, B4-UPVP-PR100, B8-UPFO-PR200, B9-UPCB-PR120, B9-UPCB-PR130 |  |  |  | -442.01d | 89.77d | 7x24 |
| KD35 |  | Completion of Construction Phase | milestone | 0d | 2018-08-01 | 2018-08-01 | TOC05, TOC10, TOC17, TOC08, TOC09, TOC11, TOC16, TOC06, TOC20, TOC04, TOC02, TOC21, TOC01, TOC12, TOC15, TOC19, TOC03, TOC07 |  |  |  | -531.78d | 0d | 7x24 |
|  | 1 | **Areas Substantial Completion** |  |  | 2018-05-03 | 2018-08-01 |  |  |  |  |  |  |  |
| TOC10 |  | Substantial Completion of Bill 11-UP-REST ROOMS | milestone | 0d | 2018-05-03 | 2018-05-03 | B11-UPRR-C008, B11-UPRR-C010, B11-UPRR-2ndP002, B11-UPRR3rdP003, B11-UPRR-C001, B11-UPRR-C006, B5-UPSD-C121, B5-UPSD-C131, B11-UPRR-C007, B11-UPRR-C005, B11-UPRR-C009, B11-UPRR-S011, B11-UPRR-C003, B11-UPRR-1stP001, B11-UPRR-C002, B11-UPRR-C004 |  |  |  | -441.95d | 89.83d | 7x24 |
| TOC07 |  | Substantial Completion of Bill 8-UP-FRONT OFFICE | milestone | 0d | 2018-05-03 | 2018-05-03 | B8-UPFO-C013, B8-UPFO-C006, B8-UPFO-C001, B8-UPFO-C004, B8-UPFO-C014, B5-UPSD-C61, B8-UPFO-C005, B8-UPFO-S007, RM-SA-007, B8-UPFO-C003, B8-UPFO-2ndP002, B5-UPSD-C71, B8-UPFO-1stP001, B8-UPFO-C002 |  |  |  | -441.98d | 89.81d | 7x24 |
| TOC01 |  | Substantial Completion of Bill 2 UP-HOTEL LOBBY | milestone | 0d | 2018-05-03 | 2018-05-03 | B2-UPHL-C009, B2-UPHL-C014, B2-UPHL-C002, B2-UPHL-C006, B2-UPHL-2ndP002, B2-UPHL-C005, B2-UPHL-C010, B2-UPHL-C031, B2-UPHL-C001, B2-UPHL-C004, B2-UPHL-C011, B2-UPHL-C012, B2-UPHL-3rdP003, B2-UPHL-C007, B2-UPHL-C008, B2-UPHL-S13, B2-UPHL-C021, B2-UPHL-1stP001, B2-UPHL-C003 |  |  |  | -442d | 89.78d | 7x24 |
| TOC02 |  | Substantial Completion of Bill 3-UP-HOTEL RECEPTION | milestone | 0d | 2018-05-03 | 2018-05-03 | B3-UPHR-C010, B3-UPHR-1stP001, B3-UPHR-3rdP003, B3-UPHR-S012, B3-UPHR-C011, B3-UPHR-C008, B3-UPHR-C003, B3-UPHR-C021, B3-UPHR-C031, B3-UPHR-C001, B3-UPHR-C004, B3-UPHR-2ndP002, B3-UPHR-C007, B3-UPHR-C002 |  |  |  | -442d | 89.78d | 7x24 |
| TOC04 |  | Substantial Completion of Bill 5-UP-SAFE DEPOSIT | milestone | 0d | 2018-05-03 | 2018-05-03 | B5-UPSD-2ndP002, B5-UPSD-C005, B5-UPSD-S009, B5-UPSD-C001, B5-UPSD-C013, B5-UPSD-C002, B5-UPSD-C007, B5-UPSD-C003, B5-UPSD-C006, B5-UPSD-C021, B5-UPSD-3rdP003, B5-UPSD-C008, B5-UPSD-C011, B5-UPSD-1stP001, B5-UPSD-C004 |  |  |  | -442d | 89.78d | 7x24 |
| TOC11 |  | Substantial Completion of Bill 12-UP-PRAYER ROOMS | milestone | 0d | 2018-05-03 | 2018-05-03 | B12-UPPR-C006, B5-UPSD-C151, B12-UPPR-C001, B12-UPPR-C002, B12-UPPR-C009, B12-UPPR-S010, B12-UPPR-C007, B5-UPSD-C141, B12-UPPR-C004, B12-UPPR-C005, B12-UPPR-3rdP003, B12-UPPR-C008, B12-UPPR-C003, B12-UPPR-1stP001, B12-UPPR-2ndP002 |  |  |  | -442d | 89.78d | 7x24 |
| TOC12 |  | Substantial Completion of Bill 13-UP-RESIDENCES LOBBY | milestone | 0d | 2018-05-03 | 2018-05-03 | B13-UPRL-S010, B5-UPSD-C161, B13-UPRL-2ndP002, B13-UPRL-C004, B13-UPRL-C005, B13-UPRL-C008, B5-UPSD-C171, B13-UPRL-3rdP003, B13-UPRL-C002, B13-UPRL-1stP001, B13-UPRL-C001, B13-UPRL-C003, B13-UPRL-C007, B13-UPRL-C006, B13-UPRL-C009 |  |  |  | -442d | 89.78d | 7x24 |
| TOC16 |  | Substantial Completion of Bill 28-LIFT CAR - TOWER A, B & D | milestone | 0d | 2018-05-03 | 2018-05-03 | B28-TsLC-C002, B28-TsLC-C009, B28-TsLC-S010, B28-TsLC-1stP001, B28-TsLC-3rdP003, B28-TsLC-C001, B28-TsLC-C003, B28-TsLC-C008, B5-UPSD-C241, B28-TsLC-C005, B28-TsLC-C007, B28-TsLC-C004, B28-TsLC-C006, B5-UPSD-C251, B28-TsLC-2ndP002 |  |  |  | -442d | 89.78d | 7x24 |
| TOC17 |  | Substantial Completion of Bill 29-SPA | milestone | 0d | 2018-05-03 | 2018-05-03 | B29-SPALC-C009, B29-SPALC-S018, B29-SPALC-C007, B29-SPALC-2ndP002, B29-SPALC-C004, B29-SPALC-C006, B29-SPALC-C011, B29-SPALC-C012, B29-SPALC-3rdP003, B29-SPALC-C001, B29-SPALC-C002, B29-SPALC-C008, B5-UPSD-C271, B29-SPALC-C005, B29-SPALC-C010, B29-SPALC-C013, B5-UPSD-C261, B29-SPALC-C003, B29-SPALC-C014, B29-SPALC-C017, B29-SPALC-1stP001, B29-SPALC-C015 |  |  |  | -442d | 89.78d | 7x24 |
| TOC19 |  | Substantial Completion of Bill 34-UP-SPEAK EASY BAR | milestone | 0d | 2018-05-03 | 2018-05-03 | B34-UPSEB-1stP001, B34-UPSEB-C005, B34-UPSEB-C015, B34-UPSEB-C016, B34-UPSEB-C003, B34-UPSEB-C014, B5-UPSD-C301, B34-UPSEB-C004, B34-UPSEB-C007, B34-UPSEB-C012, B34-UPSEB-C001, B34-UPSEB-C010, B34-UPSEB-C013, B34-UPSEB-C017, B34-UPSEB-S018, B5-UPSD-C311, B34-UPSEB-C006, B34-UPSEB-C011, B34-UPSEB-2ndP002, B34-UPSEB-3rdP003, B34-UPSEB-C002, B34-UPSEB-C008, B34-UPSEB-C009 |  |  |  | -442d | 89.78d | 7x24 |
| TOC20 |  | Substantial Completion of Bill 35-LIFT CAR - TOWER C | milestone | 0d | 2018-05-03 | 2018-05-03 | B35-TCSR-C003, B35-TCSR-C006, B5-UPSD-C321, B35-TCSR-1stP001, B35-TCSR-S007, B35-TCSR-C001, B35-TCSR-C004, B35-TCSR-C002, B5-UPSD-C331, B35-TCSR-C005, B35-TCSR-2ndP002, B35-TCSR-3rdP003 |  |  |  | -442d | 89.78d | 7x24 |
| TOC21 |  | Substantial Completion of Bill 39-LG- LIFT LOBBY | milestone | 0d | 2018-05-03 | 2018-05-03 | B39-LGLL-2ndP002, B39-LGLL-C001, B39-LGLL-C006, B39-LGLL-C007, B39-LGLL-C004, B5-UPSD-C341, B5-UPSD-C351, B39-LGLL-1stP001, B39-LGLL-3rdP003, B39-LGLL-C002, B39-LGLL-C003, B39-LGLL-C005, B39-LGLL-C008, B39-LGLL-S009 |  |  |  | -442d | 89.78d | 7x24 |
| TOC09 |  | Substantial Completion of Bill 10-UP-RETAIL | milestone | 0d | 2018-05-05 | 2018-05-05 | B5-UPSD-C101, B10-UPRT-3rdP003, B10-UPRT-C001, B10-UPRT-C004, B10-UPRT-S007, B10-UPRT-C005, B10-UPRT-C006, B10-UPRT-C002, B5-UPSD-C111, B10-UPRT-C003, B10-UPRT-1stP001 |  |  |  | -443.66d | 88.12d | 7x24 |
| TOC03 |  | Substantial Completion of Bill 4-UP-VIP PROTOCOL | milestone | 0d | 2018-05-13 | 2018-05-13 | B4-UPVP-C006, B4-UPVP-C008, B4-UPVP-C021, B4-UPVP-C031, B4-UPVP-C004, B4-UPVP-2ndP002, B4-UPVP-S013, B4-UPVP-1stP001, B4-UPVP-C001, B4-UPVP-C002, B4-UPVP-C009, B4-UPVP-C010, B4-UPVP-C013, B4-UPVP-C003, B4-UPVP-C007, B4-UPVP-C011, RM-SA-003, B4-UPVP-C005, B4-UPVP-C012 |  |  |  | -451.66d | 80.12d | 7x24 |
| TOC05 |  | Substantial Completion of Bill 6-UP-HOTEL LIFT LOBBY | milestone | 0d | 2018-05-13 | 2018-05-13 | B6-UPHLL-C002, B6-UPHLL-C004, B6-UPHLL-C001, B6-UPHLL-3rdP003, B6-UPHLL-S006, B5-UPSD-C31, B6-UPHLL-2ndP002, B6-UPHLL-C003, B6-UPHLL-C005, B5-UPSD-C21, B6-UPHLL-1stP001 |  |  |  | -451.68d | 80.1d | 7x24 |
| TOC06 |  | Substantial Completion of Bill 7-UP-RESIDENCE'S LIFT LOBBY | milestone | 0d | 2018-05-13 | 2018-05-13 | B7-UPRLL-1stP001, B7-UPRLL-C004, B7-UPRLL-2ndP002, B7-UPRLL-S009, B7-UPRLL-C002, B7-UPRLL-C007, B7-UPRLL-C006, B7-UPRLL-C003, B5-UPSD-C51, B7-UPRLL-C008, B7-UPRLL-3rdP003, B7-UPRLL-C001, B7-UPRLL-C005, B5-UPSD-C41, B7-UPRLL-C012 |  |  |  | -451.68d | 80.1d | 7x24 |
| TOC08 |  | Substantial Completion of Bill 9-UP-CHOCOLATE BOUTIQUE | milestone | 0d | 2018-07-23 | 2018-07-23 | B9-UPCB-C001, B9-UPCB-C004, B9-UPCB-C011, B9-UPCB-C013, B9-UPCB-3rdP003, B9-UPCB-C008, B9-UPCB-C014, B9-UPCB-C007, B9-UPCB-C010, B9-UPCB-1stP001, B9-UPCB-2ndP002, B9-UPCB-C003, B9-UPCB-C012, B9-UPCB-C005, B5-UPSD-C91, B9-UPCB-C002, B9-UPCB-C009, B9-UPCB-S13, B5-UPSD-C81, B9-UPCB-C006 |  |  |  | -522.95d | 8.83d | 7x24 |
| TOC15 |  | Substantial Completion of Bill 20-UP-COFFEE BAR | milestone | 0d | 2018-08-01 | 2018-08-01 | B20-UPCB-C004, B5-UPSD-C221, B5-UPSD-C231, B20-UPCB-3rdP003, B20-UPCB-1stP001, B20-UPCB-C001, B20-UPCB-C003, B20-UPCB-C002 |  |  |  | -531.78d | 0d | 7x24 |

| ID | WBS | Activity | Type | Duration | Start | Finish | Predecessors | Complete | Planned start | Planned finish | Calendar |
| --- | --- | --- | --- | --- | --- | --- | --- | --- | --- | --- | --- |
|  | 6 | **Additional/Variation Works** |  |  | 2017-02-02 | 2017-02-12 |  |  |  |  |  |
| A6050 |  | Information to dismantle Ceiling grids in Speak easy due to Pleenum Box | milestone | 0d | 2017-02-02 A | 2017-02-02 A | KD01 | 100% | 2017-02-05 | 2017-02-05 |  |
| A6060 |  | Additional scope for Male & Female Prayer Rooms (P-1) | milestone | 0d | 2017-02-12 A | 2017-02-12 A | KD01 | 100% | 2017-02-19 | 2017-02-19 | 7x24 |
|  | 3 | **Engineering Phase** |  |  | 2016-04-04 | 2018-03-01 |  |  |  |  |  |
|  | 1 | **Shop Drawing Process** |  |  | 2016-04-04 | 2017-05-27 |  |  |  |  |  |
|  | 1 | **Shop Drawing Process Bill 2 UP-HOTEL LOBBY** |  |  | 2016-05-11 | 2017-01-24 |  |  |  |  |  |
|  | 1 | **SD Preparation and Submission of Bill 2 UP-HOTEL LOBBY** |  |  | 2016-05-11 | 2016-09-06 |  |  |  |  |  |
| B2-UPHL-SDS210 |  | Preparation and Submission of Details Layout |  | 14d | 2016-05-11 A | 2016-09-04 A | RM-DF-001, B2-UPHL-SDS180 SS | 100% | 2016-04-06 | 2016-04-26 | ATL522 - Engineering Submission (5x9) |
| B2-UPHL-SDS160 |  | Preparation and Submission of RCP Layout |  | 21d | 2016-05-12 A | 2016-09-05 A | RM-DF-001 | 100% | 2016-04-06 | 2016-05-08 | ATL522 - Engineering Submission (5x9) |
| B2-UPHL-SDS170 |  | Preparation and Submission of Floor Layout |  | 14d | 2016-05-12 A | 2016-09-04 A | RM-DF-001 | 100% | 2016-04-06 | 2016-04-26 | ATL522 - Engineering Submission (5x9) |
| B2-UPHL-SDS180 |  | Preparation and Submission of Elevation Layout |  | 14d | 2016-05-12 A | 2016-09-04 A | RM-DF-001 | 100% | 2016-04-06 | 2016-04-26 | ATL522 - Engineering Submission (5x9) |
| B2-UPHL-SDS135 |  | Preparation and Submission of Furniture Layout |  | 14d | 2016-05-15 A | 2016-09-05 A | B2-UPHL-SDS180, RM-DF-001 | 100% | 2016-04-26 | 2016-05-17 | ATL522 - Engineering Submission (5x9) |
| B2-UPHL-SDS190 |  | Preparation and Submission of Joinery Layout |  | 14d | 2016-05-15 A | 2016-09-06 A | RM-DF-001, B2-UPHL-SDS135 | 100% | 2016-05-17 | 2016-06-06 | ATL522 - Engineering Submission (5x9) |
| B2-UPHL-SDS200 |  | Preparation and Submission of Doors Shop Drawing |  | 14d | 2016-06-02 A | 2016-09-06 A | B2-UPHL-SDS190, RM-DF-001 | 100% | 2016-06-06 | 2016-06-26 | ATL522 - Engineering Submission (5x9) |
|  | 2 | **SD Approval of Bill 2 UP-HOTEL LOBBY** |  |  | 2016-07-05 | 2017-01-24 |  |  |  |  |  |
| B2-UPHL-SDA220 |  | Review & Approval of Details Layout |  | 21d | 2016-07-05 A | 2017-01-19 A | B2-UPHL-SDS210 | 100% | 2016-07-10 | 2016-08-03 |  |
| B2-UPHL-SDA170 |  | Review & Approval of RCP Layout |  | 21d | 2016-07-17 A | 2017-01-09 A | B2-UPHL-SDS160 | 100% | 2016-08-02 | 2016-08-23 | ATL522 - Engineering Approval (7x9) |
| B2-UPHL-SDA180 |  | Review & Approval of Floor Layout |  | 21d | 2016-07-17 A | 2017-01-20 A | B2-UPHL-SDS170 | 100% | 2016-07-25 | 2016-08-15 | ATL522 - Engineering Approval (7x9) |
| B2-UPHL-SDA190 |  | Review & Approval of Elevation Layout |  | 21d | 2016-07-17 A | 2016-11-10 A | B2-UPHL-SDS180 | 100% | 2016-07-25 | 2016-08-15 | ATL522 - Engineering Approval (7x9) |
| B2-UPHL-SDA200 |  | Review & Approval of Joinery Layout |  | 21d | 2016-07-17 A | 2016-08-31 A | B2-UPHL-SDS190 | 100% | 2016-08-29 | 2016-09-22 | ATL522 - Engineering Approval (7x9) |
| B2-UPHL-SDA210 |  | Review & Approval of Doors Shop Drawing |  | 21d | 2016-07-17 A | 2017-01-24 A | B2-UPHL-SDS200 | 100% | 2016-09-20 | 2016-10-12 | ATL522 - Engineering Approval (7x9) |
| B2-UPHL-SDA230 |  | Review & Approval of Furniture Layout |  | 21d | 2016-07-17 A | 2017-01-12 A | B2-UPHL-SDS135 | 100% | 2016-08-11 | 2016-09-01 | ATL522 - Engineering Approval (7x9) |
|  | 2 | **Shop Drawing Process Bill 3-UP-HOTEL RECEPTION** |  |  | 2016-05-15 | 2016-07-25 |  |  |  |  |  |
|  | 1 | **SD Preparation and Submission of Bill 3-UP-HOTEL RECEPTION** |  |  | 2016-05-15 | 2016-05-31 |  |  |  |  |  |
| B3-UPHR-SDS110 |  | Preparation and Submission of RCP Layout |  | 21d | 2016-05-15 A | 2016-05-31 A | RM-DF-002 | 100% | 2016-04-06 | 2016-05-08 | ATL522 - Engineering Submission (5x9) |
| B3-UPHR-SDS130 |  | Preparation and Submission of Elevation Layout |  | 21d | 2016-05-15 A | 2016-05-31 A | RM-DF-002, B3-UPHR-SDS110 | 100% | 2016-05-08 | 2016-06-06 | ATL522 - Engineering Submission (5x9) |
| B3-UPHR-SDS150 |  | Preparation and Submission of Details Layout |  | 21d | 2016-05-15 A | 2016-05-31 A | RM-DF-002, B3-UPHR-SDS130 SS | 100% | 2016-05-08 | 2016-06-06 | ATL522 - Engineering Submission (5x9) |

| ID | WBS | Activity | Duration | Start | Finish | Predecessors | Complete | Planned start | Planned finish | Calendar |
| --- | --- | --- | --- | --- | --- | --- | --- | --- | --- | --- |
|  | 2 | **SD Approval of Bill 3-UP-HOTEL RECEPTION** |  | 2016-06-01 | 2016-07-25 |  |  |  |  |  |
| B3-UPHR-SDA110 |  | Review & Approval of RCP Layout | 21d | 2016-06-01 A | 2016-07-25 A | B3-UPHR-SDS110 | 100% | 2016-05-06 | 2016-05-26 | ATL522 - Engineering Approval (7x9) |
| B3-UPHR-SDA130 |  | Review & Approval of Elevation Layout | 21d | 2016-06-01 A | 2016-07-25 A | B3-UPHR-SDS130 | 100% | 2016-06-06 | 2016-06-26 | ATL522 - Engineering Approval (7x9) |
| B3-UPHR-SDA150 |  | Review & Approval of Details Layout | 21d | 2016-06-01 A | 2016-07-25 A | B3-UPHR-SDS150 | 100% | 2016-06-06 | 2016-06-26 | ATL522 - Engineering Approval (7x9) |
|  | 3 | **Shop Drawing Process Bill 4-UP-VIP PROTOCOL** |  | 2016-05-01 | 2017-04-08 |  |  |  |  |  |
|  | 1 | **SD Preparation and Submission of Bill 4-UP-VIP PROTOCOL** |  | 2016-05-01 | 2016-11-07 |  |  |  |  |  |
| B4-UPVP-SDS150 |  | Preparation and Submission of Floor Layout | 21d | 2016-05-01 A | 2016-05-10 A | RM-DF-003 | 100% | 2016-04-06 | 2016-05-08 | ATL522 - Engineering Submission (5x9) |
| B4-UPVP-SDS170 |  | Preparation and Submission of Elevation Layout | 21d | 2016-05-01 A | 2016-05-10 A | RM-DF-003 | 100% | 2016-04-06 | 2016-05-08 | ATL522 - Engineering Submission (5x9) |
| B4-UPVP-SDS180 |  | Preparation and Submission of Joinery Layout | 21d | 2016-05-01 A | 2016-11-07 A | RM-DF-003, B4-UPVP-SDS170 | 100% | 2016-05-08 | 2016-06-06 | ATL522 - Engineering Submission (5x9) |
| B4-UPVP-SDS140 |  | Preparation and Submission of RCP Layout | 21d | 2016-05-15 A | 2016-11-07 A | RM-DF-003 | 100% | 2016-04-06 | 2016-05-08 | ATL522 - Engineering Submission (5x9) |
| B4-UPVP-SDS175 |  | Preparation and Submission of Details Layout | 28d | 2016-06-01 A | 2016-08-25 A | RM-DF-003, B4-UPVP-SDS190 | 100% | 2016-07-05 | 2016-08-16 | ATL522 - Engineering Submission (5x9) |
| B4-UPVP-SDS190 |  | Preparation and Submission of Furniture Layout | 21d | 2016-06-06 A | 2016-07-21 A | RM-DF-003, B4-UPVP-SDS180 | 100% | 2016-06-06 | 2016-07-05 | ATL522 - Engineering Submission (5x9) |
|  | 2 | **SD Approval of Bill 4-UP-VIP PROTOCOL** |  | 2016-05-11 | 2017-04-08 |  |  |  |  |  |
| B4-UPVP-SDA140 |  | Review & Approval of RCP Layout | 21d | 2016-05-11 A | 2016-12-25 A | B4-UPVP-SDS140 | 100% | 2016-05-06 | 2016-05-26 | ATL522 - Engineering Approval (7x9) |
| B4-UPVP-SDA170 |  | Review & Approval of Floor Layout | 21d | 2016-05-11 A | 2016-07-23 A | B4-UPVP-SDS150 | 100% | 2016-05-06 | 2016-05-26 | ATL522 - Engineering Approval (7x9) |
| B4-UPVP-SDA180 |  | Review & Approval of Elevation Layout | 21d | 2016-05-11 A | 2016-07-23 A | B4-UPVP-SDS170 | 100% | 2016-05-06 | 2016-05-26 | ATL522 - Engineering Approval (7x9) |
| B4-UPVP-SDA190 |  | Review & Approval of Joinery Layout | 21d | 2016-05-12 A | 2017-04-08 A | B4-UPVP-SDS180 | 100% | 2016-06-06 | 2016-06-26 | ATL522 - Engineering Approval (7x9) |
| B4-UPVP-SDA200 |  | Review & Approval of Details Layout | 21d | 2016-06-30 A | 2016-10-10 A | B4-UPVP-SDS175 | 100% | 2016-08-05 | 2016-08-25 | ATL522 - Engineering Approval (7x9) |
| B4-UPVP-SDA210 |  | Review & Approval of Furniture Layout | 21d | 2016-07-17 A | 2016-08-11 A | B4-UPVP-SDS190 | 100% | 2016-07-21 | 2016-08-11 | ATL522 - Engineering Approval (7x9) |
|  | 4 | **Shop Drawing Process Bill 5-UP-SAFE DEPOSIT** |  | 2016-05-12 | 2017-03-11 |  |  |  |  |  |
|  | 1 | **SD Preparation and Submission of Bill 5-UP-SAFE DEPOSIT** |  | 2016-05-12 | 2016-08-11 |  |  |  |  |  |
| B5-UPSD-SDS155 |  | Preparation and Submission of Furniture Layout | 21d | 2016-05-12 A | 2016-05-19 A | RM-DF-004, B5-UPSD-SDS180 | 100% | 2016-06-15 | 2016-07-18 | ATL522 - Engineering Submission (5x9) |
| B5-UPSD-SDS160 |  | Preparation and Submission of RCP Layout | 28d | 2016-05-12 A | 2016-07-11 A | RM-DF-004 | 100% | 2016-04-06 | 2016-05-17 | ATL522 - Engineering Submission (5x9) |
| B5-UPSD-SDS170 |  | Preparation and Submission of Floor Layout | 14d | 2016-05-12 A | 2016-05-19 A | B5-UPSD-SDS160, RM-DF-004 | 100% | 2016-05-08 | 2016-05-26 | ATL522 - Engineering Submission (5x9) |
| B5-UPSD-SDS180 |  | Preparation and Submission of Elevation Layout | 14d | 2016-05-12 A | 2016-05-19 A | RM-DF-004, B5-UPSD-SDS170 | 100% | 2016-05-26 | 2016-06-15 | ATL522 - Engineering Submission (5x9) |
| B5-UPSD-SDS190 |  | Preparation and Submission of Joinery Layout | 28d | 2016-05-12 A | 2016-08-11 A | RM-DF-004, B5-UPSD-SDS180 SS | 100% | 2016-05-26 | 2016-07-05 | ATL522 - Engineering Submission (5x9) |
| B5-UPSD-SDS200 |  | Preparation and Submission of Doors Shop Drawing | 21d | 2016-05-12 A | 2016-05-19 A | RM-DF-004, B5-UPSD-SDS190 | 100% | 2016-06-26 | 2016-07-27 | ATL522 - Engineering Submission (5x9) |
| B5-UPSD-SDS210 |  | Preparation and Submission of Details Layout | 28d | 2016-05-12 A | 2016-05-19 A | B5-UPSD-SDS180 SS, RM-DF-004 | 100% | 2016-05-26 | 2016-07-05 | ATL522 - Engineering Submission (5x9) |

| ID | WBS | Activity | Duration | Start | Finish | Predecessors | Complete | Planned start | Planned finish | Calendar |
| --- | --- | --- | --- | --- | --- | --- | --- | --- | --- | --- |
|  | 2 | **SD Approval of Bill 5-UP-SAFE DEPOSIT** |  | 2016-05-22 | 2017-03-11 |  |  |  |  |  |
| B5-UPSD-SDA180 |  | Review & Approval of Floor Layout | 21d | 2016-05-22 A | 2016-07-30 A | B5-UPSD-SDS170 | 100% | 2016-05-26 | 2016-06-15 | ATL522 - Engineering Approval (7x9) |
| B5-UPSD-SDA190 |  | Review & Approval of Elevation Layout | 21d | 2016-05-22 A | 2016-07-30 A | B5-UPSD-SDS180 | 100% | 2016-06-15 | 2016-07-05 | ATL522 - Engineering Approval (7x9) |
| B5-UPSD-SDA210 |  | Review & Approval of Doors Shop Drawing | 21d | 2016-05-22 A | 2016-08-30 A | B5-UPSD-SDS200 | 100% | 2016-07-27 | 2016-08-16 | ATL522 - Engineering Approval (7x9) |
| B5-UPSD-SDA220 |  | Review & Approval of Details Layout | 21d | 2016-05-22 A | 2016-07-30 A | B5-UPSD-SDS210 | 100% | 2016-07-05 | 2016-07-27 | ATL522 - Engineering Approval (7x9) |
| B5-UPSD-SDA230 |  | Review & Approval of Furniture Layout | 21d | 2016-05-22 A | 2017-03-11 A | B5-UPSD-SDS155 SS | 100% | 2016-06-15 | 2016-07-05 | ATL522 - Engineering Approval (7x9) |
| B5-UPSD-SDA170 |  | Review & Approval of RCP Layout | 21d | 2016-06-12 A | 2016-12-29 A | B5-UPSD-SDS160 | 100% | 2016-05-06 | 2016-05-26 | ATL522 - Engineering Approval (7x9) |
| B5-UPSD-SDA200 |  | Review & Approval of Joinery Layout | 21d | 2016-06-24 A | 2016-08-21 A | B5-UPSD-SDS190 | 100% | 2016-06-24 | 2016-07-16 | ATL522 - Engineering Approval (7x9) |
|  | 5 | **Shop Drawing Process Bill 6-UP-HOTEL LIFT LOBBY** |  | 2016-05-15 | 2017-01-20 |  |  |  |  |  |
|  | 1 | **SD Preparation and Submission of Bill 6-UP-HOTEL LIFT LOBBY** |  | 2016-05-15 | 2016-09-15 |  |  |  |  |  |
| B6-UPHLL-SDS110 |  | Preparation and Submission of RCP Layout | 21d | 2016-05-15 A | 2016-09-06 A | RM-DF-005, RM-DF-005 SS | 100% | 2016-04-06 | 2016-05-08 | ATL522 - Engineering Submission (5x9) |
| B6-UPHLL-SDS130 |  | Preparation and Submission of Elevation Layout | 21d | 2016-05-15 A | 2016-09-08 A | B6-UPHLL-SDS110, RM-DF-005 | 100% | 2016-05-08 | 2016-06-06 | ATL522 - Engineering Submission (5x9) |
| B6-UPHLL-SDS135 |  | Preparation and Submission of Furniture Layout | 21d | 2016-05-15 A | 2016-09-15 A | B6-UPHLL-SDS130, RM-DF-005 | 100% | 2016-06-06 | 2016-07-05 | ATL522 - Engineering Submission (5x9) |
| B6-UPHLL-SDS150 |  | Preparation and Submission of Details Layout | 21d | 2016-06-02 A | 2016-09-15 A | RM-DF-005, B6-UPHLL-SDS130 | 100% | 2016-06-06 | 2016-07-05 | ATL522 - Engineering Submission (5x9) |
|  | 2 | **SD Approval of Bill 6-UP-HOTEL LIFT LOBBY** |  | 2016-05-16 | 2017-01-20 |  |  |  |  |  |
| B6-UPHLL-SDA110 |  | Review & Approval of RCP Layout | 21d | 2016-05-16 A | 2017-01-18 A | B6-UPHLL-SDS110 | 100% | 2016-05-06 | 2016-05-26 | ATL522 - Engineering Approval (7x9) |
| B6-UPHLL-SDA130 |  | Review & Approval of Elevation Layout | 21d | 2016-06-06 A | 2016-12-29 A | B6-UPHLL-SDS130 | 100% | 2016-06-06 | 2016-06-26 | ATL522 - Engineering Approval (7x9) |
| B6-UPHLL-SDA160 |  | Review & Approval of Details Layout | 21d | 2016-07-03 A | 2017-01-20 A | B6-UPHLL-SDS150 | 100% | 2016-07-05 | 2016-07-27 | ATL522 - Engineering Approval (7x9) |
| B6-UPHLL-SDA170 |  | Review & Approval of Furniture Layout | 21d | 2016-07-03 A | 2016-10-06 A | B6-UPHLL-SDS135 | 100% | 2016-07-05 | 2016-07-27 | ATL522 - Engineering Approval (7x9) |
|  | 6 | **Shop Drawing Process Bill 7-UP-RESIDENCE'S LIFT LOBBY** |  | 2016-05-15 | 2017-04-27 |  |  |  |  |  |
|  | 1 | **SD Preparation and Submission of Bill 7-UP-RESIDENCE'S LIFT LOBBY** |  | 2016-05-15 | 2016-09-14 |  |  |  |  |  |
| B7-UPRLL-SDS110 |  | Preparation and Submission of RCP Layout | 14d | 2016-05-15 A | 2016-09-05 A | RM-DF-006, RM-DF-006 SS | 100% | 2016-04-06 | 2016-04-26 | ATL522 - Engineering Submission (5x9) |
| B7-UPRLL-SDS130 |  | Preparation and Submission of Elevation Layout | 14d | 2016-05-15 A | 2016-09-06 A | RM-DF-006, RM-DF-006 SS, B7-UPRLL-SDS110 | 100% | 2016-04-26 | 2016-05-17 | ATL522 - Engineering Submission (5x9) |
| B7-UPRLL-SDS135 |  | Preparation and Submission of Furniture Layout | 14d | 2016-05-15 A | 2016-09-08 A | RM-DF-006, RM-DF-006 SS, B7-UPRLL-SDS130 | 100% | 2016-05-17 | 2016-06-06 | ATL522 - Engineering Submission (5x9) |
| B7-UPRLL-SDS150 |  | Preparation and Submission of Details Layout | 14d | 2016-06-06 A | 2016-09-14 A | RM-DF-006, RM-DF-006 SS, B7-UPRLL-SDS135 | 100% | 2016-06-06 | 2016-06-26 | ATL522 - Engineering Submission (5x9) |

| ID | WBS | Activity | Duration | Start | Finish | Predecessors | Complete | Planned start | Planned finish | Calendar |
| --- | --- | --- | --- | --- | --- | --- | --- | --- | --- | --- |
|  | 2 | **SD Approval of Bill 7-UP-RESIDENCE'S LIFT LOBBY** |  | 2016-05-16 | 2017-04-27 |  |  |  |  |  |
| B7-UPRLL-SDA110 |  | Review & Approval of RCP Layout | 21d | 2016-05-16 A | 2017-04-27 A | B7-UPRLL-SDS110 | 100% | 2016-04-26 | 2016-05-17 | ATL522 - Engineering Approval (7x9) |
| B7-UPRLL-SDA130 |  | Review & Approval of Elevation Layout | 21d | 2016-05-17 A | 2016-12-29 A | B7-UPRLL-SDS130 | 100% | 2016-05-17 | 2016-06-06 | ATL522 - Engineering Approval (7x9) |
| B7-UPRLL-SDA170 |  | Review & Approval of Furniture Layout | 21d | 2016-06-06 A | 2016-12-28 A | B7-UPRLL-SDS135 | 100% | 2016-06-06 | 2016-06-26 | ATL522 - Engineering Approval (7x9) |
| B7-UPRLL-SDA160 |  | Review & Approval of Details Layout | 21d | 2016-06-24 A | 2017-01-23 A | B7-UPRLL-SDS150 | 100% | 2016-06-24 | 2016-07-16 | ATL522 - Engineering Approval (7x9) |
|  | 7 | **Shop Drawing Process Bill 8-UP-FRONT OFFICE** |  | 2016-05-12 | 2017-02-21 |  |  |  |  |  |
|  | 1 | **SD Preparation and Submission of Bill 8-UP-FRONT OFFICE** |  | 2016-05-12 | 2016-08-04 |  |  |  |  |  |
| B8-UPFO-SDS135 |  | Preparation and Submission of Furniture Layout | 7d | 2016-05-12 A | 2016-05-19 A | RM-DF-007, B8-UPFO-SDS180 | 100% | 2016-05-17 | 2016-05-26 | ATL522 - Engineering Submission (5x9) |
| B8-UPFO-SDS170 |  | Preparation and Submission of Floor Layout | 7d | 2016-05-12 A | 2016-05-19 A | RM-DF-007, B8-UPFO-SDS160 | 100% | 2016-04-26 | 2016-05-08 | ATL522 - Engineering Submission (5x9) |
| B8-UPFO-SDS180 |  | Preparation and Submission of Elevation Layout | 7d | 2016-05-12 A | 2016-05-19 A | B8-UPFO-SDS170, RM-DF-007 | 100% | 2016-05-08 | 2016-05-17 | ATL522 - Engineering Submission (5x9) |
| B8-UPFO-SDS160 |  | Preparation and Submission of RCP Layout | 14d | 2016-05-15 A | 2016-07-10 A | RM-DF-007, RM-DF-007 SS | 100% | 2016-04-06 | 2016-04-26 | ATL522 - Engineering Submission (5x9) |
| B8-UPFO-SDS190 |  | Preparation and Submission of Joinery Layout | 14d | 2016-05-15 A | 2016-07-11 A | B8-UPFO-SDS135, RM-DF-007 | 100% | 2016-05-26 | 2016-06-15 | ATL522 - Engineering Submission (5x9) |
| B8-UPFO-SDS200 |  | Preparation and Submission of Doors Shop Drawing | 14d | 2016-06-15 A | 2016-07-28 A | RM-DF-007, B8-UPFO-SDS190 | 100% | 2016-06-15 | 2016-07-05 | ATL522 - Engineering Submission (5x9) |
| B8-UPFO-SDS210 |  | Preparation and Submission of Details Layout | 21d | 2016-06-15 A | 2016-08-04 A | RM-DF-007, B8-UPFO-SDS180 | 100% | 2016-05-17 | 2016-06-15 | ATL522 - Engineering Submission (5x9) |
|  | 2 | **SD Approval of Bill 8-UP-FRONT OFFICE** |  | 2016-05-22 | 2017-02-21 |  |  |  |  |  |
| B8-UPFO-SDA180 |  | Review & Approval of Floor Layout | 21d | 2016-05-22 A | 2017-02-21 A | B8-UPFO-SDS170 | 100% | 2016-05-06 | 2016-05-26 | ATL522 - Engineering Approval (7x9) |
| B8-UPFO-SDA190 |  | Review & Approval of Elevation Layout | 21d | 2016-05-22 A | 2017-01-12 A | B8-UPFO-SDS180 | 100% | 2016-05-17 | 2016-06-06 | ATL522 - Engineering Approval (7x9) |
| B8-UPFO-SDA230 |  | Review & Approval of Furniture Layout | 21d | 2016-05-22 A | 2016-10-31 A | B8-UPFO-SDS135 | 100% | 2016-05-26 | 2016-06-15 | ATL522 - Engineering Approval (7x9) |
| B8-UPFO-SDA170 |  | Review & Approval of RCP Layout | 21d | 2016-06-12 A | 2016-12-25 A | B8-UPFO-SDS160 | 100% | 2016-04-26 | 2016-05-17 | ATL522 - Engineering Approval (7x9) |
| B8-UPFO-SDA200 |  | Review & Approval of Joinery Layout | 21d | 2016-06-12 A | 2016-07-30 A | B8-UPFO-SDS190 | 100% | 2016-06-15 | 2016-07-05 | ATL522 - Engineering Approval (7x9) |
| B8-UPFO-SDA210 |  | Review & Approval of Doors Shop Drawing | 21d | 2016-07-03 A | 2016-09-04 A | B8-UPFO-SDS200 | 100% | 2016-07-05 | 2016-07-27 | ATL522 - Engineering Approval (7x9) |
| B8-UPFO-SDA220 |  | Review & Approval of Details Layout | 21d | 2016-07-03 A | 2016-08-23 A | B8-UPFO-SDS210 | 100% | 2016-06-15 | 2016-07-05 | ATL522 - Engineering Approval (7x9) |
|  | 8 | **Shop Drawing Process Bill 9-UP-CHOCOLATE BOUTIQUE** |  | 2016-07-03 | 2016-09-18 |  |  |  |  |  |
|  | 1 | **SD Preparation and Submission of Bill 9-UP-CHOCOLATE BOUTIQUE** |  | 2016-07-03 | 2016-09-14 |  |  |  |  |  |
| B9-UPCB-SDS135 |  | Preparation and Submission of Furniture Layout | 10d | 2016-07-03 A | 2016-09-05 A | RM-DF-008, B9-UPCB-SDS170 | 100% | 2016-07-03 | 2016-07-19 | ATL522 - Engineering Submission (5x9) |
| B9-UPCB-SDS150 |  | Preparation and Submission of RCP Layout | 9d | 2016-07-03 A | 2016-07-19 A | RM-DF-008 | 100% | 2016-04-06 | 2016-04-19 | ATL522 - Engineering Submission (5x9) |
| B9-UPCB-SDS160 |  | Preparation and Submission of Floor Layout | 9d | 2016-07-03 A | 2016-09-04 A | B9-UPCB-SDS150, RM-DF-008 | 100% | 2016-07-03 | 2016-07-18 | ATL522 - Engineering Submission (5x9) |
| B9-UPCB-SDS170 |  | Preparation and Submission of Elevation Layout | 9d | 2016-07-03 A | 2016-08-10 A | RM-DF-008, B9-UPCB-SDS160 | 100% | 2016-07-03 | 2016-07-18 | ATL522 - Engineering Submission (5x9) |
| B9-UPCB-SDS180 |  | Preparation and Submission of Joinery Layout | 21d | 2016-07-03 A | 2016-09-06 A | RM-DF-008, B9-UPCB-SDS170 | 100% | 2016-07-03 | 2016-08-03 | ATL522 - Engineering Submission (5x9) |
| B9-UPCB-SDS190 |  | Preparation and Submission of Details Layout | 21d | 2016-07-03 A | 2016-09-14 A | B9-UPCB-SDS180, RM-DF-008 | 100% | 2016-07-03 | 2016-08-03 | ATL522 - Engineering Submission (5x9) |

| ID | WBS | Activity | Duration | Start | Finish | Predecessors | Complete | Planned start | Planned finish | Calendar |
| --- | --- | --- | --- | --- | --- | --- | --- | --- | --- | --- |
|  | 2 | **SD Approval of Bill 9-UP-CHOCOLATE BOUTIQUE** |  | 2016-07-04 | 2016-09-18 |  |  |  |  |  |
| B9-UPCB-SDA200 |  | Review & Approval of Details Layout | 21d | 2016-07-04 A | 2016-09-18 A | B9-UPCB-SDS190 | 100% | 2016-10-09 | 2016-10-30 | ATL522 - Engineering Approval (7x9) |
| B9-UPCB-SDA160 |  | Review & Approval of RCP Layout | 21d | 2016-07-13 A | 2016-08-09 A | B9-UPCB-SDS150 | 100% | 2016-07-19 | 2016-08-09 | ATL522 - Engineering Approval (7x9) |
| B9-UPCB-SDA170 |  | Review & Approval of Floor Layout | 21d | 2016-07-13 A | 2016-09-09 A | B9-UPCB-SDS160 | 100% | 2016-07-31 | 2016-08-21 | ATL522 - Engineering Approval (7x9) |
| B9-UPCB-SDA180 |  | Review & Approval of Elevation Layout | 21d | 2016-07-13 A | 2016-08-31 A | B9-UPCB-SDS170 | 100% | 2016-08-10 | 2016-08-31 | ATL522 - Engineering Approval (7x9) |
| B9-UPCB-SDA190 |  | Review & Approval of Joinery Layout | 21d | 2016-07-13 A | 2016-09-14 A | B9-UPCB-SDS180 | 100% | 2016-09-06 | 2016-09-30 | ATL522 - Engineering Approval (7x9) |
| B9-UPCB-SDA210 |  | Review & Approval of Furniture Layout | 21d | 2016-07-13 A | 2016-09-10 A | B9-UPCB-SDS135 | 100% | 2016-08-23 | 2016-09-16 | ATL522 - Engineering Approval (7x9) |
|  | 9 | **Shop Drawing Process Bill 10-UP-RETAIL** |  | 2016-05-15 | 2016-08-17 |  |  |  |  |  |
|  | 1 | **SD Preparation and Submission of Bill 10-UP-RETAIL** |  | 2016-05-15 | 2016-07-31 |  |  |  |  |  |
| B10-UPRT-SDS110 |  | Preparation and Submission of RCP Layout | 21d | 2016-05-15 A | 2016-07-17 A | RM-DF-009 SS, RM-DF-009 | 100% | 2016-04-06 | 2016-05-08 | ATL522 - Engineering Submission (5x9) |
| B10-UPRT-SDS130 |  | Preparation and Submission of Elevation Layout | 21d | 2016-05-15 A | 2016-07-27 A | RM-DF-009, B10-UPRT-SDS110 | 100% | 2016-06-06 | 2016-07-05 | ATL522 - Engineering Submission (5x9) |
| B10-UPRT-SDS135 |  | Preparation and Submission of Furniture Layout | 21d | 2016-05-15 A | 2016-07-31 A | B10-UPRT-SDS130, RM-DF-009 | 100% | 2016-07-05 | 2016-08-07 | ATL522 - Engineering Submission (5x9) |
| B10-UPRT-SDS150 |  | Preparation and Submission of Details Layout | 21d | 2016-06-19 A | 2016-07-03 A | RM-DF-009, B10-UPRT-SDS130 SS, B10-UPRT-SDS110, B10-UPRT-SDS110 SS | 100% | 2016-06-06 | 2016-07-05 | ATL522 - Engineering Submission (5x9) |
|  | 2 | **SD Approval of Bill 10-UP-RETAIL** |  | 2016-06-12 | 2016-08-17 |  |  |  |  |  |
| B10-UPRT-SDA130 |  | Review & Approval of Elevation Layout | 21d | 2016-06-12 A | 2016-08-15 A | B10-UPRT-SDS130 | 100% | 2016-07-05 | 2016-07-27 | ATL522 - Engineering Approval (7x9) |
| B10-UPRT-SDA170 |  | Review & Approval of Furniture Layout | 21d | 2016-06-12 A | 2016-08-17 A | B10-UPRT-SDS135 | 100% | 2016-08-05 | 2016-08-25 | ATL522 - Engineering Approval (7x9) |
| B10-UPRT-SDA160 |  | Review & Approval of Details Layout | 21d | 2016-07-03 A | 2016-07-03 A | B10-UPRT-SDS150 | 100% | 2016-07-05 | 2016-07-27 | ATL522 - Engineering Approval (7x9) |
| B10-UPRT-SDA110 |  | Review & Approval of RCP Layout | 21d | 2016-07-18 A | 2016-08-07 A | B10-UPRT-SDS110 | 100% | 2016-07-17 | 2016-08-07 | ATL522 - Engineering Approval (7x9) |
|  | 10 | **Shop Drawing Process Bill 11-UP-REST ROOMS** |  | 2016-05-12 | 2016-12-19 |  |  |  |  |  |
|  | 1 | **SD Preparation and Submission of Bill 11-UP-REST ROOMS** |  | 2016-05-12 | 2016-10-03 |  |  |  |  |  |
| B11-UPRER-SDS110 |  | Preparation and Submission of RCP Layout | 21d | 2016-05-12 A | 2016-10-03 A | RM-DF-010 SS, RM-DF-010 | 100% | 2016-04-06 | 2016-05-08 | ATL522 - Engineering Submission (5x9) |
| B11-UPRER-SDS160 |  | Preparation and Submission of Elevation Layout | 14d | 2016-05-15 A | 2016-09-05 A | B11-UPRER-SDS110, RM-DF-010 | 100% | 2016-05-08 | 2016-05-26 | ATL522 - Engineering Submission (5x9) |
| B11-UPRER-SDS170 |  | Preparation and Submission of Joinery Layout | 21d | 2016-05-15 A | 2016-07-14 A | B11-UPRER-SDS160, RM-DF-010 | 100% | 2016-05-26 | 2016-06-26 | ATL522 - Engineering Submission (5x9) |
| B11-UPRER-SDS180 |  | Preparation and Submission of Doors Shop Drawing | 21d | 2016-05-15 A | 2016-08-03 A | RM-DF-010, B11-UPRER-SDS170 | 100% | 2016-06-26 | 2016-07-27 | ATL522 - Engineering Submission (5x9) |
| B11-UPRER-SDS190 |  | Preparation and Submission of Details Layout | 21d | 2016-05-15 A | 2016-05-25 A | RM-DF-010, B11-UPRER-SDS160 | 100% | 2016-05-26 | 2016-06-26 | ATL522 - Engineering Submission (5x9) |

| ID | WBS | Activity | Duration | Start | Finish | Predecessors | Complete | Planned start | Planned finish | Calendar |
| --- | --- | --- | --- | --- | --- | --- | --- | --- | --- | --- |
|  | 2 | **SD Approval of Bill 11-UP-REST ROOMS** |  | 2016-05-26 | 2016-12-19 |  |  |  |  |  |
| B11-UPRER-SDA110 |  | Review & Approval of RCP Layout | 21d | 2016-05-26 A | 2016-10-10 A | B11-UPRER-SDS110 | 100% | 2016-05-06 | 2016-05-26 | ATL522 - Engineering Approval (7x9) |
| B11-UPRER-SDA160 |  | Review & Approval of Elevation Layout | 21d | 2016-05-26 A | 2016-07-29 A | B11-UPRER-SDS160 | 100% | 2016-05-26 | 2016-06-15 | ATL522 - Engineering Approval (7x9) |
| B11-UPRER-SDA170 |  | Review & Approval of Joinery Layout | 21d | 2016-05-26 A | 2016-07-31 A | B11-UPRER-SDS170 | 100% | 2016-06-24 | 2016-07-16 | ATL522 - Engineering Approval (7x9) |
| B11-UPRER-SDA180 |  | Review & Approval of Doors Shop Drawing | 21d | 2016-05-26 A | 2016-07-31 A | B11-UPRER-SDS180 | 100% | 2016-07-27 | 2016-08-16 | ATL522 - Engineering Approval (7x9) |
| B11-UPRER-SDA190 |  | Review & Approval of Details Layout | 21d | 2016-05-26 A | 2016-12-19 A | B11-UPRER-SDS190 | 100% | 2016-06-24 | 2016-07-16 | ATL522 - Engineering Approval (7x9) |
|  | 11 | **Shop Drawing Process Bill 12-UP-PRAYER ROOMS** |  | 2016-04-26 | 2016-08-19 |  |  |  |  |  |
|  | 1 | **SD Preparation and Submission of Bill 12-UP-PRAYER ROOMS** |  | 2016-04-26 | 2016-07-31 |  |  |  |  |  |
| B12-UPPR-SDS160 |  | Preparation and Submission of RCP Layout | 21d | 2016-04-26 A | 2016-07-21 A | RM-DF-011, RM-DF-011 SS | 100% | 2016-04-06 | 2016-05-08 | ATL522 - Engineering Submission (5x9) |
| B12-UPPR-SDS170 |  | Preparation and Submission of Floor Layout | 21d | 2016-04-26 A | 2016-07-25 A | RM-DF-011, B12-UPPR-SDS160 | 100% | 2016-05-08 | 2016-06-06 | ATL522 - Engineering Submission (5x9) |
| B12-UPPR-SDS180 |  | Preparation and Submission of Elevation Layout | 21d | 2016-04-26 A | 2016-07-27 A | RM-DF-011, B12-UPPR-SDS170 | 100% | 2016-05-26 | 2016-06-26 | ATL522 - Engineering Submission (5x9) |
| B12-UPPR-SDS190 |  | Preparation and Submission of Joinery Layout | 21d | 2016-04-26 A | 2016-07-31 A | B12-UPPR-SDS180, RM-DF-011 | 100% | 2016-06-15 | 2016-07-18 | ATL522 - Engineering Submission (5x9) |
| B12-UPPR-SDS200 |  | Preparation and Submission of Doors Shop Drawing | 21d | 2016-04-26 A | 2016-07-31 A | B12-UPPR-SDS190 SS, RM-DF-011 | 100% | 2016-06-15 | 2016-07-18 | ATL522 - Engineering Submission (5x9) |
| B12-UPPR-SDS210 |  | Preparation and Submission of Details Layout | 21d | 2016-04-26 A | 2016-07-27 A | RM-DF-011, B12-UPPR-SDS180 SS | 100% | 2016-05-26 | 2016-06-26 | ATL522 - Engineering Submission (5x9) |
|  | 2 | **SD Approval of Bill 12-UP-PRAYER ROOMS** |  | 2016-05-18 | 2016-08-19 |  |  |  |  |  |
| B12-UPPR-SDA160 |  | Review & Approval of RCP Layout | 21d | 2016-05-18 A | 2016-08-09 A | B12-UPPR-SDS160 | 100% | 2016-05-06 | 2016-05-26 | ATL522 - Engineering Approval (7x9) |
| B12-UPPR-SDA170 |  | Review & Approval of Floor Layout | 21d | 2016-05-18 A | 2016-08-05 A | B12-UPPR-SDS170 | 100% | 2016-05-26 | 2016-06-15 | ATL522 - Engineering Approval (7x9) |
| B12-UPPR-SDA180 |  | Review & Approval of Elevation Layout | 21d | 2016-05-18 A | 2016-07-29 A | B12-UPPR-SDS180 | 100% | 2016-06-15 | 2016-07-05 | ATL522 - Engineering Approval (7x9) |
| B12-UPPR-SDA190 |  | Review & Approval of Joinery Layout | 21d | 2016-05-18 A | 2016-08-19 A | B12-UPPR-SDS190 | 100% | 2016-07-05 | 2016-07-27 | ATL522 - Engineering Approval (7x9) |
| B12-UPPR-SDA200 |  | Review & Approval of Doors Shop Drawing | 21d | 2016-05-18 A | 2016-08-11 A | B12-UPPR-SDS200 | 100% | 2016-07-05 | 2016-07-27 | ATL522 - Engineering Approval (7x9) |
| B12-UPPR-SDA210 |  | Review & Approval of Details Layout | 21d | 2016-05-18 A | 2016-08-13 A | B12-UPPR-SDS210 | 100% | 2016-06-24 | 2016-07-16 | ATL522 - Engineering Approval (7x9) |
|  | 12 | **Shop Drawing Process Bill 13-UP-RESIDENCES LOBBY** |  | 2016-05-15 | 2017-03-16 |  |  |  |  |  |
|  | 1 | **SD Preparation and Submission of Bill 13-UP-RESIDENCES LOBBY** |  | 2016-05-15 | 2016-09-18 |  |  |  |  |  |
| B13-UPRL-SDS110 |  | Preparation and Submission of RCP Layout | 21d | 2016-05-15 A | 2016-09-08 A | RM-DF-012 SS, RM-DF-012 | 100% | 2016-04-06 | 2016-05-08 | ATL522 - Engineering Submission (5x9) |
| B13-UPRL-SDS135 |  | Preparation and Submission of Furniture Layout | 14d | 2016-05-15 A | 2016-09-18 A | RM-DF-012, B13-UPRL-SDS150 | 100% | 2016-05-26 | 2016-06-15 | ATL522 - Engineering Submission (5x9) |
| B13-UPRL-SDS150 |  | Preparation and Submission of Elevation Layout | 14d | 2016-05-15 A | 2016-09-15 A | RM-DF-012, B13-UPRL-SDS110 | 100% | 2016-05-08 | 2016-05-26 | ATL522 - Engineering Submission (5x9) |
| B13-UPRL-SDS160 |  | Preparation and Submission of Joinery Layout | 14d | 2016-05-29 A | 2016-09-18 A | RM-DF-012, B13-UPRL-SDS135 | 100% | 2016-06-15 | 2016-07-05 | ATL522 - Engineering Submission (5x9) |
| B13-UPRL-SDS170 |  | Preparation and Submission of Details Layout | 14d | 2016-06-01 A | 2016-09-18 A | B13-UPRL-SDS160, RM-DF-012 | 100% | 2016-07-05 | 2016-07-27 | ATL522 - Engineering Submission (5x9) |

| ID | WBS | Activity | Duration | Start | Finish | Predecessors | Complete | Planned start | Planned finish | Calendar |
| --- | --- | --- | --- | --- | --- | --- | --- | --- | --- | --- |
|  | 2 | **SD Approval of Bill 13-UP-RESIDENCES LOBBY** |  | 2016-08-14 | 2017-03-16 |  |  |  |  |  |
| B13-UPRL-SDA110 |  | Review & Approval of RCP Layout | 21d | 2016-08-14 A | 2017-01-24 A | B13-UPRL-SDS110 | 100% | 2016-08-01 | 2016-08-22 | ATL522 - Engineering Approval (7x9) |
| B13-UPRL-SDA160 |  | Review & Approval of Elevation Layout | 21d | 2016-09-04 A | 2016-09-15 A | B13-UPRL-SDS150 | 100% | 2016-08-17 | 2016-09-07 | ATL522 - Engineering Approval (7x9) |
| B13-UPRL-SDA170 |  | Review & Approval of Joinery Layout | 21d | 2016-09-04 A | 2017-03-16 A | B13-UPRL-SDS160 | 100% | 2016-09-25 | 2016-10-17 | ATL522 - Engineering Approval (7x9) |
| B13-UPRL-SDA180 |  | Review & Approval of Details Layout | 21d | 2016-09-04 A | 2016-09-15 A | B13-UPRL-SDS170 | 100% | 2016-10-12 | 2016-11-02 | ATL522 - Engineering Approval (7x9) |
| B13-UPRL-SDA190 |  | Review & Approval of Furniture Layout | 21d | 2016-09-04 A | 2016-09-15 A | B13-UPRL-SDS135 | 100% | 2016-09-04 | 2016-09-28 | ATL522 - Engineering Approval (7x9) |
|  | 15 | **Shop Drawing Process Bill 20-UP-COFFEE BAR** |  | 2016-07-10 | 2017-05-27 |  |  |  |  |  |
|  | 1 | **SD Preparation and Submission of Bill 20-UP-COFFEE BAR** |  | 2016-07-10 | 2017-04-25 |  |  |  |  |  |
| B20-UPCB-SDS150 |  | Preparation and Submission of Floor Layout | 21d | 2016-07-10 A | 2016-09-18 A | RM-DF-015 | 100% | 2016-07-05 | 2016-08-07 | ATL522 - Engineering Submission (5x9) |
| B20-UPCB-SDS170 |  | Preparation and Submission of Joinery Layout | 21d | 2016-07-18 A | 2016-09-18 A | B20-UPCB-SDS160 SS | 100% | 2016-08-07 | 2016-09-05 | ATL522 - Engineering Submission (5x9) |
| B20-UPCB-SDS160 |  | Preparation and Submission of Elevation Layout | 21d | 2017-01-26 A | 2017-01-29 A | B20-UPCB-SDS150 | 100% | 2016-08-07 | 2016-09-05 | ATL522 - Engineering Submission (5x9) |
| B20-UPCB-SDS180 |  | Preparation and Submission of Details Layout | 21d | 2017-04-24 A | 2017-04-25 A | B20-UPCB-SDS160 SS | 100% | 2016-08-07 | 2016-09-05 | ATL522 - Engineering Submission (5x9) |
|  | 2 | **SD Approval of Bill 20-UP-COFFEE BAR** |  | 2016-07-11 | 2017-05-27 |  |  |  |  |  |
| B20-UPCB-SDA150 |  | Review & Approval of Floor Layout | 21d | 2016-07-11 A | 2016-10-11 A | B20-UPCB-SDS150 | 100% | 2016-08-05 | 2016-08-25 | ATL522 - Engineering Approval (7x9) |
| B20-UPCB-SDA170 |  | Review & Approval of Joinery Layout | 21d | 2016-08-01 A | 2016-11-01 A | B20-UPCB-SDS170 | 100% | 2016-09-05 | 2016-09-28 | ATL522 - Engineering Approval (7x9) |
| B20-UPCB-SDA160 |  | Review & Approval of Elevation Layout | 21d | 2017-03-05 A | 2017-03-05 A | B20-UPCB-SDS160 | 100% | 2016-09-05 | 2016-09-28 | ATL522 - Engineering Approval (7x9) |
| B20-UPCB-SDA180 |  | Review & Approval of Details Layout | 21d | 2017-05-27 A | 2017-05-27 A | B20-UPCB-SDS180 | 100% | 2016-09-05 | 2016-09-28 | ATL522 - Engineering Approval (7x9) |
|  | 16 | **Shop Drawing Process Bill 28-LIFT CAR - TOWER A, B & D** |  | 2016-07-10 | 2017-01-15 |  |  |  |  |  |
|  | 1 | **SD Preparation and Submission of Bill 28-LIFT CAR - TOWER A, B & D** |  | 2016-07-10 | 2016-10-03 |  |  |  |  |  |
| B28-TsLC-SDS110 |  | Preparation and Submission of RCP Layout | 21d | 2016-07-10 A | 2016-09-27 A | RM-DF-016 | 100% | 2016-07-05 | 2016-08-07 | ATL522 - Engineering Submission (5x9) |
| B28-TsLC-SDS135 |  | Preparation and Submission of Furniture Layout | 21d | 2016-07-10 A | 2016-09-28 A | B28-TsLC-SDS150 | 100% | 2016-08-25 | 2016-09-28 | ATL522 - Engineering Submission (5x9) |
| B28-TsLC-SDS150 |  | Preparation and Submission of Elevation Layout | 14d | 2016-07-10 A | 2016-09-28 A | B28-TsLC-SDS110 | 100% | 2016-08-07 | 2016-08-25 | ATL522 - Engineering Submission (5x9) |
| B28-TsLC-SDS160 |  | Preparation and Submission of Joinery Layout | 21d | 2016-07-10 A | 2016-09-28 A | B28-TsLC-SDS135 | 100% | 2016-09-28 | 2016-10-30 | ATL522 - Engineering Submission (5x9) |
| B28-TsLC-SDS170 |  | Preparation and Submission of Details Layout | 21d | 2016-07-10 A | 2016-10-03 A | B28-TsLC-SDS150 | 100% | 2016-08-25 | 2016-09-28 | ATL522 - Engineering Submission (5x9) |

| ID | WBS | Activity | Duration | Start | Finish | Predecessors | Complete | Planned start | Planned finish | Calendar |
| --- | --- | --- | --- | --- | --- | --- | --- | --- | --- | --- |
|  | 2 | **SD Approval of Bill 28-LIFT CAR - TOWER A, B & D** |  | 2016-09-11 | 2017-01-15 |  |  |  |  |  |
| B28-TsLC-SDA110 |  | Review & Approval of RCP Layout | 21d | 2016-09-11 A | 2016-12-03 A | B28-TsLC-SDS110 | 100% | 2016-09-27 | 2016-10-19 | ATL522 - Engineering Approval (7x9) |
| B28-TsLC-SDA160 |  | Review & Approval of Elevation Layout | 21d | 2016-09-11 A | 2016-12-04 A | B28-TsLC-SDS150 | 100% | 2016-10-12 | 2016-11-02 | ATL522 - Engineering Approval (7x9) |
| B28-TsLC-SDA170 |  | Review & Approval of Joinery Layout | 21d | 2016-09-11 A | 2017-01-15 A | B28-TsLC-SDS160 | 100% | 2016-11-22 | 2016-12-15 | ATL522 - Engineering Approval (7x9) |
| B28-TsLC-SDA180 |  | Review & Approval of Details Layout | 21d | 2016-09-11 A | 2016-12-04 A | B28-TsLC-SDS170 | 100% | 2016-11-02 | 2016-11-23 | ATL522 - Engineering Approval (7x9) |
| B28-TsLC-SDA190 |  | Review & Approval of Furniture Layout | 21d | 2016-09-11 A | 2016-10-06 A | B28-TsLC-SDS135 | 100% | 2016-11-02 | 2016-11-23 | ATL522 - Engineering Approval (7x9) |
|  | 17 | **Shop Drawing Process Bill 29-SPA** |  | 2016-07-10 | 2017-05-04 |  |  |  |  |  |
|  | 1 | **SD Preparation and Submission of Bill 29-SPA** |  | 2016-07-10 | 2016-09-15 |  |  |  |  |  |
| B29-SPA-SDS135 |  | Preparation and Submission of Furniture Layout | 10d | 2016-07-10 A | 2016-09-15 A | RM-DF-017, B29-SPA-SDS180, B29-SPA-SDS180 FF | 100% | 2016-08-18 | 2016-09-01 | ATL522 - Engineering Submission (5x9) |
| B29-SPA-SDS160 |  | Preparation and Submission of RCP Layout | 10d | 2016-07-10 A | 2016-09-05 A | RM-DF-017 SS, RM-DF-017 | 100% | 2016-07-05 | 2016-07-21 | ATL522 - Engineering Submission (5x9) |
| B29-SPA-SDS170 |  | Preparation and Submission of Floor Layout | 10d | 2016-07-10 A | 2016-09-07 A | RM-DF-017, B29-SPA-SDS160 FF, B29-SPA-SDS160 | 100% | 2016-07-21 | 2016-08-04 | ATL522 - Engineering Submission (5x9) |
| B29-SPA-SDS180 |  | Preparation and Submission of Elevation Layout | 10d | 2016-07-10 A | 2016-09-14 A | RM-DF-017, B29-SPA-SDS170 FF, B29-SPA-SDS170 | 100% | 2016-08-04 | 2016-08-18 | ATL522 - Engineering Submission (5x9) |
| B29-SPA-SDS190 |  | Preparation and Submission of Joinery Layout | 10d | 2016-07-10 A | 2016-09-15 A | B29-SPA-SDS135, RM-DF-017, B29-SPA-SDS135 FF | 100% | 2016-09-01 | 2016-09-20 | ATL522 - Engineering Submission (5x9) |
| B29-SPA-SDS200 |  | Preparation and Submission of Doors Shop Drawing | 21d | 2016-07-10 A | 2016-09-15 A | RM-DF-017, B29-SPA-SDS190 | 100% | 2016-09-20 | 2016-10-20 | ATL522 - Engineering Submission (5x9) |
| B29-SPA-SDS210 |  | Preparation and Submission of Details Layout | 21d | 2016-07-10 A | 2016-09-15 A | RM-DF-017, B29-SPA-SDS180 SS | 100% | 2016-08-04 | 2016-09-04 | ATL522 - Engineering Submission (5x9) |
|  | 2 | **SD Approval of Bill 29-SPA** |  | 2016-08-28 | 2017-05-04 |  |  |  |  |  |
| B29-SPA-SDA200 |  | Review & Approval of Joinery Layout | 21d | 2016-08-28 A | 2016-12-04 A | B29-SPA-SDS190 | 100% | 2016-09-20 | 2016-10-11 | ATL522 - Engineering Approval (7x9) |
| B29-SPA-SDA220 |  | Review & Approval of Details Layout | 21d | 2016-08-28 A | 2016-11-22 A | B29-SPA-SDS210 | 100% | 2016-09-02 | 2016-09-25 | ATL522 - Engineering Approval (7x9) |
| B29-SPA-SDA170 |  | Review & Approval of RCP Layout | 21d | 2016-08-31 A | 2017-05-04 A | B29-SPA-SDS160 | 100% | 2016-07-21 | 2016-08-10 | ATL522 - Engineering Approval (7x9) |
| B29-SPA-SDA180 |  | Review & Approval of Floor Layout | 21d | 2016-08-31 A | 2017-02-22 A | B29-SPA-SDS170 | 100% | 2016-08-04 | 2016-08-24 | ATL522 - Engineering Approval (7x9) |
| B29-SPA-SDA190 |  | Review & Approval of Elevation Layout | 21d | 2016-08-31 A | 2017-02-13 A | B29-SPA-SDS180 | 100% | 2016-08-18 | 2016-09-07 | ATL522 - Engineering Approval (7x9) |
| B29-SPA-SDA210 |  | Review & Approval of Doors Shop Drawing | 21d | 2016-08-31 A | 2016-11-22 A | B29-SPA-SDS200 | 100% | 2016-10-20 | 2016-11-09 | ATL522 - Engineering Approval (7x9) |
| B29-SPA-SDA230 |  | Review & Approval of Furniture Layout | 21d | 2016-08-31 A | 2017-03-05 A | B29-SPA-SDS135 | 100% | 2016-09-01 | 2016-09-24 | ATL522 - Engineering Approval (7x9) |
|  | 22 | **Shop Drawing Process Bill 34-UP-SPEAK EASY BAR** |  | 2016-04-04 | 2016-12-12 |  |  |  |  |  |
|  | 1 | **SD Preparation and Submission of Bill 34-UP-SPEAK EASY BAR** |  | 2016-04-04 | 2016-09-14 |  |  |  |  |  |
| B34-UPSEB-SDS160 |  | Preparation and Submission of RCP Layout | 21d | 2016-04-04 A | 2016-09-06 A | RM-DF-020, RM-DF-020 SS | 100% | 2016-04-06 | 2016-05-08 | ATL522 - Engineering Submission (5x9) |
| B34-UPSEB-SDS180 |  | Preparation and Submission of Elevation Layout | 10d | 2016-04-04 A | 2016-04-28 A | RM-DF-020, B34-UPSEB-SDS170 | 100% | 2016-05-22 | 2016-06-05 | ATL522 - Engineering Submission (5x9) |
| B34-UPSEB-SDS190 |  | Preparation and Submission of Joinery Layout | 21d | 2016-04-04 A | 2016-09-08 A | B34-UPSEB-SDS135, RM-DF-020 | 100% | 2016-07-04 | 2016-08-04 | ATL522 - Engineering Submission (5x9) |
| B34-UPSEB-SDS170 |  | Preparation and Submission of Floor Layout | 10d | 2016-04-18 A | 2016-09-07 A | RM-DF-020, B34-UPSEB-SDS160 | 100% | 2016-05-08 | 2016-05-22 | ATL522 - Engineering Submission (5x9) |
| B34-UPSEB-SDS200 |  | Preparation and Submission of Doors Shop Drawing | 21d | 2016-05-01 A | 2016-09-08 A | RM-DF-020, B34-UPSEB-SDS190 | 100% | 2016-08-04 | 2016-09-04 | ATL522 - Engineering Submission (5x9) |
| B34-UPSEB-SDS210 |  | Preparation and Submission of Details Layout | 14d | 2016-05-01 A | 2016-07-17 A | RM-DF-020 | 100% | 2016-04-06 | 2016-04-26 | ATL522 - Engineering Submission (5x9) |
| B34-UPSEB-SDS135 |  | Preparation and Submission of Furniture Layout | 21d | 2016-06-19 A | 2016-09-14 A | RM-DF-020, B34-UPSEB-SDS180 | 100% | 2016-06-05 | 2016-07-04 | ATL522 - Engineering Submission (5x9) |

| ID | WBS | Activity | Duration | Start | Finish | Predecessors | Complete | Planned start | Planned finish | Calendar |
| --- | --- | --- | --- | --- | --- | --- | --- | --- | --- | --- |
|  | 2 | **SD Approval of Bill 34-UP-SPEAK EASY BAR** |  | 2016-04-28 | 2016-12-12 |  |  |  |  |  |
| B34-UPSEB-SDA190 |  | Review & Approval of Elevation Layout | 21d | 2016-04-28 A | 2016-05-27 A | B34-UPSEB-SDS180 | 100% | 2016-06-03 | 2016-06-23 | ATL522 - Engineering Approval (7x9) |
| B34-UPSEB-SDA170 |  | Review & Approval of RCP Layout | 21d | 2016-05-06 A | 2016-12-12 A | B34-UPSEB-SDS160 | 100% | 2016-05-06 | 2016-05-26 | ATL522 - Engineering Approval (7x9) |
| B34-UPSEB-SDA210 |  | Review & Approval of Doors Shop Drawing | 21d | 2016-05-11 A | 2016-09-22 A | B34-UPSEB-SDS200 | 100% | 2016-09-02 | 2016-09-25 | ATL522 - Engineering Approval (7x9) |
| B34-UPSEB-SDA220 |  | Review & Approval of Details Layout | 21d | 2016-05-11 A | 2016-11-22 A | B34-UPSEB-SDS210 | 100% | 2016-04-26 | 2016-05-17 | ATL522 - Engineering Approval (7x9) |
| B34-UPSEB-SDA180 |  | Review & Approval of Floor Layout | 21d | 2016-05-20 A | 2016-10-11 A | B34-UPSEB-SDS170 | 100% | 2016-05-20 | 2016-06-09 | ATL522 - Engineering Approval (7x9) |
| B34-UPSEB-SDA200 |  | Review & Approval of Joinery Layout | 21d | 2016-07-03 A | 2016-09-24 A | B34-UPSEB-SDS190 | 100% | 2016-08-04 | 2016-08-24 | ATL522 - Engineering Approval (7x9) |
| B34-UPSEB-SDA230 |  | Review & Approval of Furniture Layout | 21d | 2016-07-03 A | 2016-10-11 A | B34-UPSEB-SDS135 | 100% | 2016-07-04 | 2016-07-26 | ATL522 - Engineering Approval (7x9) |
|  | 20 | **Shop Drawing Process Bill 35-LIFT CAR - TOWER C** |  | 2016-07-10 | 2017-01-04 |  |  |  |  |  |
|  | 1 | **SD Preparation and Submission of Bill 35-LIFT CAR - TOWER C** |  | 2016-07-10 | 2016-10-02 |  |  |  |  |  |
| B35-TCLC-SDS110 |  | Preparation and Submission of RCP Layout | 21d | 2016-07-10 A | 2016-09-27 A | RM-DF-021, RM-DF-021 SS | 100% | 2016-07-05 | 2016-08-07 | ATL522 - Engineering Submission (5x9) |
| B35-TCLC-SDS150 |  | Preparation and Submission of Elevation Layout | 14d | 2016-07-10 A | 2016-09-28 A | RM-DF-021, B35-TCLC-SDS110 | 100% | 2016-08-07 | 2016-08-25 | ATL522 - Engineering Submission (5x9) |
| B35-TCLC-SDS160 |  | Preparation and Submission of Joinery Layout | 14d | 2016-07-10 A | 2016-09-29 A | RM-DF-021, B35-TCLC-SDS150 | 100% | 2016-08-25 | 2016-09-19 | ATL522 - Engineering Submission (5x9) |
| B35-TCLC-SDS170 |  | Preparation and Submission of Details Layout | 21d | 2016-07-24 A | 2016-10-02 A | RM-DF-021, B35-TCLC-SDS160 | 100% | 2016-09-19 | 2016-10-19 | ATL522 - Engineering Submission (5x9) |
|  | 2 | **SD Approval of Bill 35-LIFT CAR - TOWER C** |  | 2016-09-11 | 2017-01-04 |  |  |  |  |  |
| B35-TCLC-SDA110 |  | Review & Approval of RCP Layout | 21d | 2016-09-11 A | 2016-10-26 A | B35-TCLC-SDS110 | 100% | 2016-09-29 | 2016-10-21 | ATL522 - Engineering Approval (7x9) |
| B35-TCLC-SDA150 |  | Review & Approval of Elevation Layout | 21d | 2016-09-11 A | 2016-10-26 A | B35-TCLC-SDS150 | 100% | 2016-10-18 | 2016-11-07 | ATL522 - Engineering Approval (7x9) |
| B35-TCLC-SDA160 |  | Review & Approval of Joinery Layout | 21d | 2016-09-11 A | 2017-01-04 A | B35-TCLC-SDS160 | 100% | 2016-11-02 | 2016-11-23 | ATL522 - Engineering Approval (7x9) |
| B35-TCLC-SDA170 |  | Review & Approval of Details Layout | 21d | 2016-09-11 A | 2016-11-06 A | B35-TCLC-SDS170 | 100% | 2016-11-25 | 2016-12-17 | ATL522 - Engineering Approval (7x9) |
|  | 21 | **Shop Drawing Process Bill 39-LG- LIFT LOBBY** |  | 2016-07-04 | 2016-09-20 |  |  |  |  |  |
|  | 1 | **SD Preparation and Submission of Bill 39-LG- LIFT LOBBY** |  | 2016-07-04 | 2016-09-15 |  |  |  |  |  |
| B39-LGLL-SDS150 |  | Preparation and Submission of Elevation Layout | 21d | 2016-07-04 A | 2016-09-01 A | RM-DF-022, B39-LGLL-SDS110 | 100% | 2016-08-07 | 2016-09-05 | ATL522 - Engineering Submission (5x9) |
| B39-LGLL-SDS160 |  | Preparation and Submission of Joinery Layout | 21d | 2016-07-04 A | 2016-09-15 A | B39-LGLL-SDS135, RM-DF-022 | 100% | 2016-10-10 | 2016-11-08 | ATL522 - Engineering Submission (5x9) |
| B39-LGLL-SDS110 |  | Preparation and Submission of RCP Layout | 21d | 2016-07-10 A | 2016-08-15 A | RM-DF-022 SS, RM-DF-022 | 100% | 2016-07-05 | 2016-08-07 | ATL522 - Engineering Submission (5x9) |
| B39-LGLL-SDS135 |  | Preparation and Submission of Furniture Layout | 21d | 2016-07-10 A | 2016-09-01 A | B39-LGLL-SDS150, RM-DF-022 | 100% | 2016-09-05 | 2016-10-10 | ATL522 - Engineering Submission (5x9) |
| B39-LGLL-SDS170 |  | Preparation and Submission of Details Layout | 21d | 2016-07-10 A | 2016-09-15 A | B39-LGLL-SDS160, RM-DF-022 | 100% | 2016-11-08 | 2016-12-08 | ATL522 - Engineering Submission (5x9) |

| ID | WBS | Activity | Duration | Start | Finish | Predecessors | Complete | Planned start | Planned finish | Calendar |
| --- | --- | --- | --- | --- | --- | --- | --- | --- | --- | --- |
|  | 2 | **SD Approval of Bill 39-LG- LIFT LOBBY** |  | 2016-07-05 | 2016-09-20 |  |  |  |  |  |
| B39-LGLL-SDA160 |  | Review & Approval of Elevation Layout | 21d | 2016-07-05 A | 2016-09-20 A | B39-LGLL-SDS150 | 100% | 2016-09-05 | 2016-09-28 | ATL522 - Engineering Approval (7x9) |
| B39-LGLL-SDA170 |  | Review & Approval of Joinery Layout | 21d | 2016-07-05 A | 2016-09-20 A | B39-LGLL-SDS160 | 100% | 2016-11-08 | 2016-11-28 | ATL522 - Engineering Approval (7x9) |
| B39-LGLL-SDA110 |  | Review & Approval of RCP Layout | 21d | 2016-08-31 A | 2016-09-20 A | B39-LGLL-SDS110 | 100% | 2016-08-05 | 2016-08-25 | ATL522 - Engineering Approval (7x9) |
| B39-LGLL-SDA180 |  | Review & Approval of Details Layout | 21d | 2016-08-31 A | 2016-09-20 A | B39-LGLL-SDS170 | 100% | 2016-12-08 | 2016-12-29 | ATL522 - Engineering Approval (7x9) |
| B39-LGLL-SDA190 |  | Review & Approvalof Furniture Layout | 21d | 2016-08-31 A | 2016-09-20 A | B39-LGLL-SDS135 | 100% | 2016-10-10 | 2016-10-30 | ATL522 - Engineering Approval (7x9) |
|  | 2 | **Material Process** |  | 2016-04-04 | 2018-03-01 |  |  |  |  |  |
|  | 1 | **Material Process Bill 2 UP-HOTEL LOBBY** |  | 2016-05-01 | 2017-11-14 |  |  |  |  |  |
| B2-UPHL-MS110 |  | Preparation and Submission of Veneer | 30d | 2016-05-01 A | 2017-02-08 A | RM-DF-001 | 100% | 2016-04-06 | 2016-05-19 | ATL522 - Engineering Submission (5x9) |
| B2-UPHL-MS150 |  | Preparation and Submission of Paint | 30d | 2016-05-01 A | 2017-10-24 A | RM-DF-001 | 100% | 2016-04-06 | 2016-05-19 | ATL522 - Engineering Submission (5x9) |
| B2-UPHL-MS160 |  | Preparation and Submission of Glass | 30d | 2016-05-01 A | 2017-10-09 A | RM-DF-001 | 100% | 2016-04-06 | 2016-05-19 | ATL522 - Engineering Submission (5x9) |
| B2-UPHL-MS200 |  | Preparation and Submission of Metal | 30d | 2016-05-01 A | 2017-10-11 A | RM-DF-001 | 100% | 2016-04-06 | 2016-05-19 | ATL522 - Engineering Submission (5x9) |
| B2-UPHL-MS220 |  | Preparation and Submission of Ceiling System | 30d | 2016-05-01 A | 2016-11-10 A | RM-DF-001 | 100% | 2016-04-06 | 2016-05-19 | ATL522 - Engineering Submission (5x9) |
| B2-UPHL-MS270 |  | Preparation and Submission of Doors , Ironmongery and Hardware | 30d | 2016-05-01 A | 2017-11-02 A | RM-DF-001 | 100% | 2016-04-06 | 2016-05-19 | ATL522 - Engineering Submission (5x9) |
| B2-UPHL-MA110 |  | Review & Approval of Veneer | 21d | 2016-05-16 A | 2017-02-18 A | B2-UPHL-MS110 | 100% | 2016-05-19 | 2016-06-08 | ATL522 - Engineering Approval (7x9) |
| B2-UPHL-MA150 |  | Review & Approval of Paint | 21d | 2016-05-16 A | 2017-10-30 A | B2-UPHL-MS150 | 100% | 2016-05-19 | 2016-06-08 | ATL522 - Engineering Approval (7x9) |
| B2-UPHL-MA160 |  | Review & Approval of Glass | 21d | 2016-05-16 A | 2017-10-30 A | B2-UPHL-MS160 | 100% | 2016-05-19 | 2016-06-08 | ATL522 - Engineering Approval (7x9) |
| B2-UPHL-MA200 |  | Review & Approval of Metal | 21d | 2016-05-16 A | 2017-10-30 A | B2-UPHL-MS200 | 100% | 2016-05-19 | 2016-06-08 | ATL522 - Engineering Approval (7x9) |
| B2-UPHL-MA270 |  | Review & Approval of Doors , Ironmongery and Hardware | 21d | 2016-05-16 A | 2017-11-14 A | B2-UPHL-MS270 | 100% | 2016-05-19 | 2016-06-08 | ATL522 - Engineering Approval (7x9) |
| B2-UPHL-MS210 |  | Preparation and Submission of Tiles | 30d | 2016-06-12 A | 2016-12-04 A | RM-DF-001 | 100% | 2016-04-06 | 2016-05-19 | ATL522 - Engineering Submission (5x9) |
| B2-UPHL-MS230 |  | Preparation and Submission of Stone | 30d | 2016-06-12 A | 2016-12-05 A | RM-DF-001 | 100% | 2016-04-06 | 2016-05-19 | ATL522 - Engineering Submission (5x9) |
| B2-UPHL-MA210 |  | Review & Approval of Tiles | 21d | 2016-07-13 A | 2016-12-18 A | B2-UPHL-MS210 | 100% | 2016-09-28 | 2016-10-19 | ATL522 - Engineering Approval (7x9) |
| B2-UPHL-MA220 |  | Review & Approval of Ceiling System | 21d | 2016-07-24 A | 2016-12-06 A | B2-UPHL-MS220 | 100% | 2016-07-15 | 2016-08-04 | ATL522 - Engineering Approval (7x9) |
| B2-UPHL-MA230 |  | Review & Approval of Stone | 21d | 2016-09-11 A | 2016-12-21 A | B2-UPHL-MS230 | 100% | 2016-09-28 | 2016-10-19 | ATL522 - Engineering Approval (7x9) |

| ID | WBS | Activity | Duration | Start | Finish | Predecessors | Complete | Planned start | Planned finish | Calendar |
| --- | --- | --- | --- | --- | --- | --- | --- | --- | --- | --- |
|  | 2 | **Material Process Bill 3-UP-HOTEL RECEPTION** |  | 2016-05-01 | 2017-10-30 |  |  |  |  |  |
| B3-UPHR-MS150 |  | Preparation and Submission of Glass | 30d | 2016-05-01 A | 2017-10-17 A | RM-DF-002 | 100% | 2016-04-06 | 2016-05-19 | ATL522 - Engineering Submission (5x9) |
| B3-UPHR-MS160 |  | Preparation and Submission of Metal | 30d | 2016-05-01 A | 2017-10-18 A | RM-DF-002 | 100% | 2016-04-06 | 2016-05-19 | ATL522 - Engineering Submission (5x9) |
| B3-UPHR-MS190 |  | Preparation and Submission of Ceiling System | 30d | 2016-05-15 A | 2016-09-14 A | RM-DF-002 | 100% | 2016-04-06 | 2016-05-19 | ATL522 - Engineering Submission (5x9) |
| B3-UPHR-MA150 |  | Review & Approval of Glass | 21d | 2016-06-01 A | 2017-10-30 A | B3-UPHR-MS150 | 100% | 2016-05-19 | 2016-06-08 | ATL522 - Engineering Approval (7x9) |
| B3-UPHR-MA160 |  | Review & Approval of Metal | 21d | 2016-06-01 A | 2017-10-23 A | B3-UPHR-MS160 | 100% | 2016-05-19 | 2016-06-08 | ATL522 - Engineering Approval (7x9) |
| B3-UPHR-MA190 |  | Review & Approval of Ceiling System | 21d | 2016-07-24 A | 2016-09-15 A | B3-UPHR-MS190 | 100% | 2016-07-15 | 2016-08-04 | ATL522 - Engineering Approval (7x9) |
|  | 3 | **Material Process Bill 4-UP-VIP PROTOCOL** |  | 2016-05-01 | 2017-11-14 |  |  |  |  |  |
| B4-UPVP-MS110 |  | Preparation and Submission of Veneer | 30d | 2016-05-01 A | 2017-01-12 A | RM-DF-003 | 100% | 2016-04-06 | 2016-05-19 | ATL522 - Engineering Submission (5x9) |
| B4-UPVP-MS140 |  | Preparation and Submission of Glass | 30d | 2016-05-01 A | 2017-09-19 A | RM-DF-003 | 100% | 2016-04-06 | 2016-05-19 | ATL522 - Engineering Submission (5x9) |
| B4-UPVP-MS170 |  | Preparation and Submission of Wall Covering | 30d | 2016-05-01 A | 2017-08-09 A | RM-DF-003 | 100% | 2016-04-06 | 2016-05-19 | ATL522 - Engineering Submission (5x9) |
| B4-UPVP-MS190 |  | Preparation and Submission of Ceiling System | 30d | 2016-05-01 A | 2016-09-14 A | RM-DF-003 | 100% | 2016-04-06 | 2016-05-19 | ATL522 - Engineering Submission (5x9) |
| B4-UPVP-MS270 |  | Preparation and Submission of Doors , Ironmongery and Hardware | 30d | 2016-05-01 A | 2017-11-02 A | RM-DF-003 | 100% | 2016-04-06 | 2016-05-19 | ATL522 - Engineering Submission (5x9) |
| B4-UPVP-MA110 |  | Review & Approval of Veneer | 21d | 2016-05-16 A | 2017-01-12 A | B4-UPVP-MS110 | 100% | 2016-05-19 | 2016-06-08 | ATL522 - Engineering Approval (7x9) |
| B4-UPVP-MA140 |  | Review & Approval of Glass | 21d | 2016-05-16 A | 2017-09-27 A | B4-UPVP-MS140 | 100% | 2016-05-19 | 2016-06-08 | ATL522 - Engineering Approval (7x9) |
| B4-UPVP-MA170 |  | Review & Approval of Wall Covering | 21d | 2016-05-16 A | 2017-08-23 A | B4-UPVP-MS170 | 100% | 2016-05-19 | 2016-06-08 | ATL522 - Engineering Approval (7x9) |
| B4-UPVP-MA270 |  | Review & Approval of Doors , Ironmongery and Hardware | 21d | 2016-05-16 A | 2017-11-14 A | B4-UPVP-MS270 | 100% | 2016-05-19 | 2016-06-08 | ATL522 - Engineering Approval (7x9) |
| B4-UPVP-MA190 |  | Review & Approval of Ceiling System | 21d | 2016-07-24 A | 2016-09-15 A | B4-UPVP-MS190 | 100% | 2016-07-15 | 2016-08-04 | ATL522 - Engineering Approval (7x9) |
|  | 4 | **Material Process Bill 5-UP-SAFE DEPOSIT** |  | 2016-04-04 | 2017-10-30 |  |  |  |  |  |
| B5-UPSD-MS110 |  | Preparation and Submission of Veneer | 30d | 2016-04-04 A | 2017-01-08 A | RM-DF-004 | 100% | 2016-04-06 | 2016-05-19 | ATL522 - Engineering Submission (5x9) |
| B5-UPSD-MS190 |  | Preparation and Submission of Ceiling System | 30d | 2016-04-04 A | 2016-09-14 A | RM-DF-004 | 100% | 2016-04-06 | 2016-05-19 | ATL522 - Engineering Submission (5x9) |
| B5-UPSD-MS270 |  | Preparation and Submission of Doors , Ironmongery and Hardware | 30d | 2016-04-04 A | 2016-05-16 A | RM-DF-004 | 100% | 2016-04-06 | 2016-05-19 | ATL522 - Engineering Submission (5x9) |
| B5-UPSD-MA110 |  | Review & Approval of Veneer | 21d | 2016-05-16 A | 2017-01-12 A | B5-UPSD-MS110 | 100% | 2016-05-19 | 2016-06-08 | ATL522 - Engineering Approval (7x9) |
| B5-UPSD-MA270 |  | Review & Approval of Doors , Ironmongery and Hardware | 21d | 2016-05-16 A | 2017-10-30 A | B5-UPSD-MS270 | 100% | 2016-05-19 | 2016-06-08 | ATL522 - Engineering Approval (7x9) |
| B5-UPSD-MA190 |  | Review & Approval of Ceiling System | 21d | 2016-07-24 A | 2016-09-15 A | B5-UPSD-MS190 | 100% | 2016-07-15 | 2016-08-04 | ATL522 - Engineering Approval (7x9) |

| ID | WBS | Activity | Duration | Start | Finish | Predecessors | Complete | Planned start | Planned finish | Calendar |
| --- | --- | --- | --- | --- | --- | --- | --- | --- | --- | --- |
|  | 5 | **Material Process Bill 6-UP-HOTEL LIFT LOBBY** |  | 2016-06-05 | 2017-08-23 |  |  |  |  |  |
| B6-UPHLL-MS150 |  | Preparation and Submission of Glass | 30d | 2016-06-05 A | 2017-07-05 A | RM-DF-005 | 100% | 2016-04-06 | 2016-05-19 | ATL522 - Engineering Submission (5x9) |
| B6-UPHLL-MS160 |  | Preparation and Submission of Metal | 30d | 2016-06-05 A | 2017-08-02 A | RM-DF-005 | 100% | 2016-04-06 | 2016-05-19 | ATL522 - Engineering Submission (5x9) |
| B6-UPHLL-MS190 |  | Preparation and Submission of Ceiling System | 30d | 2016-06-05 A | 2016-09-14 A | RM-DF-005 | 100% | 2016-04-06 | 2016-05-19 | ATL522 - Engineering Submission (5x9) |
| B6-UPHLL-MA150 |  | Review & Approval of Glass | 21d | 2016-06-15 A | 2017-07-24 A | B6-UPHLL-MS150 | 100% | 2016-05-19 | 2016-06-08 | ATL522 - Engineering Approval (7x9) |
| B6-UPHLL-MA160 |  | Review & Approval of Metal | 21d | 2016-06-15 A | 2017-08-23 A | B6-UPHLL-MS160 | 100% | 2016-05-19 | 2016-06-08 | ATL522 - Engineering Approval (7x9) |
| B6-UPHLL-MA190 |  | Review & Approval of Ceiling System | 21d | 2016-07-24 A | 2016-09-15 A | B6-UPHLL-MS190 | 100% | 2016-07-15 | 2016-08-04 | ATL522 - Engineering Approval (7x9) |
|  | 6 | **Material Process Bill 7-UP-RESIDENCE'S LIFT LOBBY** |  | 2016-06-05 | 2016-09-15 |  |  |  |  |  |
| B7-UPRLL-MS190 |  | Preparation and Submission of Ceiling System | 30d | 2016-06-05 A | 2016-09-14 A | RM-DF-006 | 100% | 2016-04-06 | 2016-05-19 | ATL522 - Engineering Submission (5x9) |
| B7-UPRLL-MA190 |  | Review & Approval of Ceiling System | 21d | 2016-07-24 A | 2016-09-15 A | B7-UPRLL-MS190 | 100% | 2016-07-15 | 2016-08-04 | ATL522 - Engineering Approval (7x9) |
|  | 7 | **Material Process Bill 8-UP-FRONT OFFICE** |  | 2016-04-04 | 2017-11-14 |  |  |  |  |  |
| B8-UPFO-MS110 |  | Preparation and Submission of Veneer | 30d | 2016-04-04 A | 2017-01-01 A | RM-DF-007 | 100% | 2016-04-06 | 2016-05-19 | ATL522 - Engineering Submission (5x9) |
| B8-UPFO-MS190 |  | Preparation and Submission of Ceiling System | 30d | 2016-04-04 A | 2016-09-14 A | RM-DF-007 | 100% | 2016-04-06 | 2016-05-19 | ATL522 - Engineering Submission (5x9) |
| B8-UPFO-MS210 |  | Preparation and Submission of Carpet | 30d | 2016-04-04 A | 2017-08-20 A | RM-DF-007 | 100% | 2016-04-06 | 2016-05-19 | ATL522 - Engineering Submission (5x9) |
| B8-UPFO-MS270 |  | Preparation and Submission of Doors , Ironmongery and Hardware | 30d | 2016-04-04 A | 2017-11-02 A | RM-DF-007 | 100% | 2016-04-06 | 2016-05-19 | ATL522 - Engineering Submission (5x9) |
| B8-UPFO-MA110 |  | Review & Approval of Veneer | 21d | 2016-05-16 A | 2017-01-03 A | B8-UPFO-MS110 | 100% | 2016-05-19 | 2016-06-08 | ATL522 - Engineering Approval (7x9) |
| B8-UPFO-MA270 |  | Review & Approval of Doors , Ironmongery and Hardware | 21d | 2016-06-12 A | 2017-11-14 A | B8-UPFO-MS270 | 100% | 2016-05-19 | 2016-06-08 | ATL522 - Engineering Approval (7x9) |
| B8-UPFO-MA190 |  | Review & Approval of Ceiling System | 21d | 2016-07-24 A | 2016-09-15 A | B8-UPFO-MS190 | 100% | 2016-07-15 | 2016-08-04 | ATL522 - Engineering Approval (7x9) |
| B8-UPFO-MA210 |  | Review & Approval of Carpet | 21d | 2016-08-17 A | 2017-08-15 A | B8-UPFO-MS210 | 100% | 2016-07-12 | 2016-08-01 | ATL522 - Engineering Approval (7x9) |
|  | 8 | **Material Process Bill 9-UP-CHOCOLATE BOUTIQUE** |  | 2016-04-04 | 2017-11-05 |  |  |  |  |  |
| B9-UPCB-MS150 |  | Preparation and Submission of Paint | 30d | 2016-04-04 A | 2017-11-02 A | RM-DF-008 | 100% | 2016-04-06 | 2016-05-19 | ATL522 - Engineering Submission (5x9) |
| B9-UPCB-MS190 |  | Preparation and Submission of Metal | 30d | 2016-04-04 A | 2017-01-09 A | RM-DF-008 | 100% | 2016-04-06 | 2016-05-19 | ATL522 - Engineering Submission (5x9) |
| B9-UPCB-MA150 |  | Review & Approval of Paint | 21d | 2016-05-16 A | 2017-11-03 A | B9-UPCB-MS150 | 100% | 2016-05-19 | 2016-06-08 | ATL522 - Engineering Approval (7x9) |
| B9-UPCB-MA110 |  | Review & Approval of Veneer | 21d | 2016-06-01 A | 2017-09-14 A | B9-UPCB-MS110 | 100% | 2016-05-19 | 2016-06-08 | ATL522 - Engineering Approval (7x9) |
| B9-UPCB-MA160 |  | Review & Approval of Glass | 21d | 2016-06-01 A | 2017-11-05 A | B9-UPCB-MS160 | 100% | 2016-05-19 | 2016-06-08 | ATL522 - Engineering Approval (7x9) |
| B9-UPCB-MA190 |  | Review & Approval of Metal | 21d | 2016-06-01 A | 2017-08-07 A | B9-UPCB-MS190 | 100% | 2016-05-12 | 2016-06-01 | ATL522 - Engineering Approval (7x9) |
| B9-UPCB-MS110 |  | Preparation and Submission of Veneer | 30d | 2016-06-12 A | 2017-09-11 A | RM-DF-008 | 100% | 2016-04-06 | 2016-05-19 | ATL522 - Engineering Submission (5x9) |
| B9-UPCB-MS160 |  | Preparation and Submission of Glass | 30d | 2016-06-12 A | 2017-11-05 A | RM-DF-008 | 100% | 2016-04-06 | 2016-05-19 | ATL522 - Engineering Submission (5x9) |
| B9-UPCB-MS200 |  | Preparation and Submission of Tiles | 30d | 2016-06-12 A | 2017-09-02 A | RM-DF-008 | 100% | 2016-04-06 | 2016-05-19 | ATL522 - Engineering Submission (5x9) |
| B9-UPCB-MS210 |  | Preparation and Submission of Ceiling System | 30d | 2016-06-12 A | 2016-09-14 A | RM-DF-008 | 100% | 2016-04-06 | 2016-05-19 | ATL522 - Engineering Submission (5x9) |
| B9-UPCB-MA210 |  | Review & Approval of Ceiling System | 21d | 2016-07-24 A | 2016-09-15 A | B9-UPCB-MS210 | 100% | 2016-07-15 | 2016-08-04 | ATL522 - Engineering Approval (7x9) |
| B9-UPCB-MA200 |  | Review & Approval of Tiles | 21d | 2016-09-11 A | 2017-09-04 A | B9-UPCB-MS200 | 100% | 2016-09-28 | 2016-10-19 | ATL522 - Engineering Approval (7x9) |

| ID | WBS | Activity | Duration | Start | Finish | Predecessors | Complete | Planned start | Planned finish | Calendar |
| --- | --- | --- | --- | --- | --- | --- | --- | --- | --- | --- |
|  | 9 | **Material Process Bill 10-UP-RETAIL** |  | 2016-04-04 | 2017-08-20 |  |  |  |  |  |
| B10-UPRT-MS140 |  | Preparation and Submission of Paint | 30d | 2016-04-04 A | 2017-08-20 A | RM-DF-009 | 100% | 2016-04-06 | 2016-05-19 | ATL522 - Engineering Submission (5x9) |
| B10-UPRT-MS150 |  | Preparation and Submission of Glass | 30d | 2016-04-04 A | 2017-08-20 A | RM-DF-009 | 100% | 2016-04-06 | 2016-05-19 | ATL522 - Engineering Submission (5x9) |
| B10-UPRT-MA140 |  | Review & Approval of Paint | 21d | 2016-05-16 A | 2017-08-08 A | B10-UPRT-MS140 | 100% | 2016-05-19 | 2016-06-08 | ATL522 - Engineering Approval (7x9) |
| B10-UPRT-MA150 |  | Review & Approval of Glass | 21d | 2016-06-01 A | 2017-08-16 A | B10-UPRT-MS150 | 100% | 2016-05-19 | 2016-06-08 | ATL522 - Engineering Approval (7x9) |
| B10-UPRT-MS180 |  | Preparation and Submission of Tiles | 30d | 2016-06-12 A | 2017-07-18 A | RM-DF-009 | 100% | 2016-04-06 | 2016-05-19 | ATL522 - Engineering Submission (5x9) |
| B10-UPRT-MA180 |  | Review & Approval of Tiles | 21d | 2016-09-11 A | 2017-06-07 A | B10-UPRT-MS180 | 100% | 2016-09-28 | 2016-10-19 | ATL522 - Engineering Approval (7x9) |
|  | 10 | **Material Process Bill 11-UP-REST ROOMS** |  | 2016-04-04 | 2018-03-01 |  |  |  |  |  |
| B11-UPRR-MS110 |  | Preparation and Submission of Veneer | 30d | 2016-04-04 A | 2017-08-02 A | RM-DF-010 | 100% | 2016-04-06 | 2016-05-19 | ATL522 - Engineering Submission (5x9) |
| B11-UPRR-MS150 |  | Preparation and Submission of Glass | 30d | 2016-04-04 A | 2017-08-01 A | RM-DF-010 | 100% | 2016-04-06 | 2016-05-19 | ATL522 - Engineering Submission (5x9) |
| B11-UPRR-MS170 |  | Preparation and Submission of Metal | 30d | 2016-04-04 A | 2017-08-02 A | RM-DF-010 | 100% | 2016-04-06 | 2016-05-19 | ATL522 - Engineering Submission (5x9) |
| B11-UPRR-MS190 |  | Preparation and Submission of Wall Covering | 30d | 2016-04-04 A | 2017-10-10 A | RM-DF-010 | 100% | 2016-04-06 | 2016-05-19 | ATL522 - Engineering Submission (5x9) |
| B11-UPRR-MS200 |  | Preparation and Submission of Ceiling System | 30d | 2016-04-04 A | 2016-09-14 A | RM-DF-010 | 100% | 2016-04-06 | 2016-05-19 | ATL522 - Engineering Submission (5x9) |
| B11-UPRR-MS280 |  | Preparation and Submission of Doors , Ironmongery and Hardware | 30d | 2016-04-04 A | 2017-11-02 A | RM-DF-010 | 100% | 2016-04-06 | 2016-05-19 | ATL522 - Engineering Submission (5x9) |
| B11-UPRR-MA110 |  | Review & Approval of Veneer | 21d | 2016-05-16 A | 2017-08-10 A | B11-UPRR-MS110 | 100% | 2016-05-19 | 2016-06-08 | ATL522 - Engineering Approval (7x9) |
| B11-UPRR-MA150 |  | Review & Approval of Glass | 21d | 2016-05-16 A | 2017-08-05 A | B11-UPRR-MS150 | 100% | 2016-05-19 | 2016-06-08 | ATL522 - Engineering Approval (7x9) |
| B11-UPRR-MA170 |  | Review & Approval of Metal | 21d | 2016-05-16 A | 2017-08-10 A | B11-UPRR-MS170 | 100% | 2016-05-19 | 2016-06-08 | ATL522 - Engineering Approval (7x9) |
| B11-UPRR-MA190 |  | Review & Approval of Wall Covering | 21d | 2016-05-16 A | 2017-10-25 A | B11-UPRR-MS190 | 100% | 2016-05-19 | 2016-06-08 | ATL522 - Engineering Approval (7x9) |
| B11-UPRR-MA280 |  | Review & Approval of Doors , Ironmongery and Hardware | 21d | 2016-05-16 A | 2017-11-14 A | B11-UPRR-MS280 | 100% | 2016-05-19 | 2016-06-08 | ATL522 - Engineering Approval (7x9) |
| B11-UPRR-MA200 |  | Review & Approval of Ceiling System | 21d | 2016-07-24 A | 2016-09-15 A | B11-UPRR-MS200 | 100% | 2016-07-15 | 2016-08-04 | ATL522 - Engineering Approval (7x9) |
| B11-UPRR-MS290 |  | Preparation and Submission of Sanitary Ware , Fitttings and Accessories | 30d | 2016-10-12 A | 2018-02-25 A | RM-DF-010 | 100% | 2017-07-13 | 2017-08-24 | ATL522 - Engineering Submission (5x9) |
| B11-UPRR-MA290 |  | Review & Approval of Sanitary Ware , Fitttings and Accessories | 21d | 2017-01-24 A | 2018-03-01 A | B11-UPRR-MS290 | 100% | 2017-08-29 | 2017-09-19 | ATL522 - Engineering Approval (7x9) |
|  | 11 | **Material Process Bill 12-UP-PRAYER ROOMS** |  | 2016-04-04 | 2017-11-14 |  |  |  |  |  |
| B12-UPPR-MS110 |  | Preparation and Submission of Veneer | 30d | 2016-04-04 A | 2017-01-11 A | RM-DF-011 | 100% | 2016-04-06 | 2016-05-19 | ATL522 - Engineering Submission (5x9) |
| B12-UPPR-MS140 |  | Preparation and Submission of Glass | 30d | 2016-04-04 A | 2017-10-18 A | RM-DF-011 | 100% | 2016-04-06 | 2016-05-19 | ATL522 - Engineering Submission (5x9) |
| B12-UPPR-MS170 |  | Preparation and Submission of Wall Covering | 30d | 2016-04-04 A | 2017-08-09 A | RM-DF-011 | 100% | 2016-04-06 | 2016-05-19 | ATL522 - Engineering Submission (5x9) |
| B12-UPPR-MS190 |  | Preparation and Submission of Ceiling System | 30d | 2016-04-04 A | 2016-09-14 A | RM-DF-011 | 100% | 2016-04-06 | 2016-05-19 | ATL522 - Engineering Submission (5x9) |
| B12-UPPR-MS210 |  | Preparation and Submission of Carpet | 30d | 2016-04-04 A | 2016-09-06 A | RM-DF-011 | 100% | 2016-04-06 | 2016-05-19 | ATL522 - Engineering Submission (5x9) |
| B12-UPPR-MS270 |  | Preparation and Submission of Doors , Ironmongery and Hardware | 30d | 2016-04-04 A | 2017-11-02 A | RM-DF-011 | 100% | 2016-04-06 | 2016-05-19 | ATL522 - Engineering Submission (5x9) |
| B12-UPPR-MA110 |  | Review & Approval of Veneer | 21d | 2016-05-16 A | 2017-06-06 A | B12-UPPR-MS110 | 100% | 2016-05-19 | 2016-06-08 | ATL522 - Engineering Approval (7x9) |
| B12-UPPR-MA140 |  | Review & Approval of Glass | 21d | 2016-05-16 A | 2017-10-25 A | B12-UPPR-MS140 | 100% | 2016-05-19 | 2016-06-08 | ATL522 - Engineering Approval (7x9) |
| B12-UPPR-MA170 |  | Review & Approval of Wall Covering | 21d | 2016-05-16 A | 2017-09-30 A | B12-UPPR-MS170 | 100% | 2016-05-19 | 2016-06-08 | ATL522 - Engineering Approval (7x9) |
| B12-UPPR-MA210 |  | Review & Approval of Carpet | 21d | 2016-05-16 A | 2017-08-16 A | B12-UPPR-MS210 | 100% | 2016-05-19 | 2016-06-08 | ATL522 - Engineering Approval (7x9) |
| B12-UPPR-MA270 |  | Review & Approval of Doors , Ironmongery and Hardware | 21d | 2016-05-16 A | 2017-11-14 A | B12-UPPR-MS270 | 100% | 2016-05-19 | 2016-06-08 | ATL522 - Engineering Approval (7x9) |
| B12-UPPR-MA190 |  | Review & Approval of Ceiling System | 21d | 2016-07-24 A | 2016-09-15 A | B12-UPPR-MS190 | 100% | 2016-07-15 | 2016-08-04 | ATL522 - Engineering Approval (7x9) |

| ID | WBS | Activity | Duration | Start | Finish | Predecessors | Complete | Planned start | Planned finish | Calendar |
| --- | --- | --- | --- | --- | --- | --- | --- | --- | --- | --- |
|  | 12 | **Material Process Bill 13-UP-RESIDENCES LOBBY** |  | 2016-04-04 | 2017-10-25 |  |  |  |  |  |
| B13-UPRL-MS110 |  | Preparation and Submission of Veneer | 30d | 2016-04-04 A | 2017-07-04 A | RM-DF-012 | 100% | 2016-04-06 | 2016-05-19 | ATL522 - Engineering Submission (5x9) |
| B13-UPRL-MS150 |  | Preparation and Submission of Metal | 30d | 2016-04-04 A | 2017-10-17 A | RM-DF-012 | 100% | 2016-04-06 | 2016-05-19 | ATL522 - Engineering Submission (5x9) |
| B13-UPRL-MS190 |  | Preparation and Submission of Ceiling System | 30d | 2016-04-04 A | 2016-09-14 A | RM-DF-012 | 100% | 2016-04-06 | 2016-05-19 | ATL522 - Engineering Submission (5x9) |
| B13-UPRL-MA110 |  | Review & Approval of Veneer | 21d | 2016-05-16 A | 2017-07-13 A | B13-UPRL-MS110 | 100% | 2016-05-19 | 2016-06-08 | ATL522 - Engineering Approval (7x9) |
| B13-UPRL-MA150 |  | Review & Approval of Metal | 21d | 2016-05-16 A | 2017-10-25 A | B13-UPRL-MS150 | 100% | 2016-05-19 | 2016-06-08 | ATL522 - Engineering Approval (7x9) |
| B13-UPRL-MA190 |  | Review & Approval of Ceiling System | 21d | 2016-07-24 A | 2016-09-15 A | B13-UPRL-MS190 | 100% | 2016-07-15 | 2016-08-04 | ATL522 - Engineering Approval (7x9) |
|  | 15 | **Material Process Bill 20-UP-COFFEE BAR** |  | 2016-04-04 | 2017-07-10 |  |  |  |  |  |
| B20-UPCB-MS110 |  | Preparation and Submission of Veneer | 30d | 2016-04-04 A | 2017-07-01 A | RM-DF-015 | 100% | 2016-04-06 | 2016-05-19 | ATL522 - Engineering Submission (5x9) |
| B20-UPCB-MA110 |  | Review & Approval of Veneer | 21d | 2016-05-16 A | 2017-07-10 A | B20-UPCB-MS110 | 100% | 2016-05-19 | 2016-06-08 | ATL522 - Engineering Approval (7x9) |
|  | 16 | **Material Process Bill 28-LIFT CAR - TOWER A, B & D** |  | 2016-04-04 | 2017-08-05 |  |  |  |  |  |
| B28-TsLC-MS110 |  | Preparation and Submission of Veneer | 30d | 2016-04-04 A | 2017-08-01 A | RM-DF-016 | 100% | 2016-04-06 | 2016-05-19 | ATL522 - Engineering Submission (5x9) |
| B28-TsLC-MS150 |  | Preparation and Submission of Glass | 30d | 2016-04-04 A | 2017-07-16 A | RM-DF-016 | 100% | 2016-04-06 | 2016-05-19 | ATL522 - Engineering Submission (5x9) |
| B28-TsLC-MS160 |  | Preparation and Submission of Metal | 30d | 2016-04-04 A | 2017-07-19 A | RM-DF-016 | 100% | 2016-04-06 | 2016-05-19 | ATL522 - Engineering Submission (5x9) |
| B28-TsLC-MS190 |  | Preparation and Submission of Ceiling System | 30d | 2016-04-04 A | 2016-09-14 A | RM-DF-016 | 100% | 2016-04-06 | 2016-05-19 | ATL522 - Engineering Submission (5x9) |
| B28-TsLC-MA110 |  | Review & Approval of Veneer | 21d | 2016-05-16 A | 2017-08-05 A | B28-TsLC-MS110 | 100% | 2016-05-19 | 2016-06-08 | ATL522 - Engineering Approval (7x9) |
| B28-TsLC-MA150 |  | Review & Approval of Glass | 21d | 2016-05-16 A | 2017-07-25 A | B28-TsLC-MS150 | 100% | 2016-05-19 | 2016-06-08 | ATL522 - Engineering Approval (7x9) |
| B28-TsLC-MA160 |  | Review & Approval of Metal | 21d | 2016-05-16 A | 2017-07-25 A | B28-TsLC-MS160 | 100% | 2016-05-19 | 2016-06-08 | ATL522 - Engineering Approval (7x9) |
| B28-TsLC-MA190 |  | Review & Approval of Ceiling System | 21d | 2016-07-24 A | 2016-09-15 A | B28-TsLC-MS190 | 100% | 2016-07-15 | 2016-08-04 | ATL522 - Engineering Approval (7x9) |
| B28-TsLC-MS230 |  | Preparation and Submission of Streached Printed Panel | 30d | 2017-01-09 A | 2017-06-06 A | RM-DF-016 | 100% | 2017-01-08 | 2017-02-19 | ATL522 - Engineering Submission (5x9) |
| B28-TsLC-MA230 |  | Review & Approval of Streached Printed Panel | 21d | 2017-01-11 A | 2017-06-20 A | B28-TsLC-MS230 | 100% | 2017-02-17 | 2017-03-09 | ATL522 - Engineering Approval (7x9) |
|  | 17 | **Material Process Bill 29-SPA** |  | 2016-04-04 | 2017-11-14 |  |  |  |  |  |
| B29-SPALC-MS110 |  | Preparation and Submission of Veneer | 30d | 2016-04-04 A | 2017-10-30 A | RM-DF-017 | 100% | 2016-04-06 | 2016-05-19 | ATL522 - Engineering Submission (5x9) |
| B29-SPALC-MS150 |  | Preparation and Submission of Paint | 30d | 2016-04-04 A | 2017-11-02 A | RM-DF-017 | 100% | 2016-04-06 | 2016-05-19 | ATL522 - Engineering Submission (5x9) |
| B29-SPALC-MS200 |  | Preparation and Submission of Glass | 30d | 2016-04-04 A | 2017-10-30 A | RM-DF-017 | 100% | 2016-04-06 | 2016-05-19 | ATL522 - Engineering Submission (5x9) |
| B29-SPALC-MS220 |  | Preparation and Submission of Metal | 30d | 2016-04-04 A | 2017-10-30 A | RM-DF-017 | 100% | 2016-04-06 | 2016-05-19 | ATL522 - Engineering Submission (5x9) |
| B29-SPALC-MS230 |  | Preparation and Submission of Wall Covering | 30d | 2016-04-04 A | 2017-11-04 A | RM-DF-017 | 100% | 2016-04-06 | 2016-05-19 | ATL522 - Engineering Submission (5x9) |
| B29-SPALC-MS250 |  | Preparation and Submission of Ceiling System | 30d | 2016-04-04 A | 2016-09-14 A | RM-DF-017 | 100% | 2016-04-06 | 2016-05-19 | ATL522 - Engineering Submission (5x9) |
| B29-SPALC-MS280 |  | Preparation and Submission of Leather and Fabric | 30d | 2016-04-04 A | 2017-10-24 A | RM-DF-017 | 100% | 2016-04-06 | 2016-05-19 | ATL522 - Engineering Submission (5x9) |
| B29-SPALC-MS290 |  | Preparation and Submission of Doors , Ironmongery and Hardware | 30d | 2016-04-04 A | 2017-10-25 A | RM-DF-017 | 100% | 2016-04-06 | 2016-05-19 | ATL522 - Engineering Submission (5x9) |
| B29-SPALC-MA110 |  | Review & Approval of Veneer | 21d | 2016-05-16 A | 2017-11-01 A | B29-SPALC-MS110 | 100% | 2016-05-19 | 2016-06-08 | ATL522 - Engineering Approval (7x9) |
| B29-SPALC-MA150 |  | Review & Approval of Paint | 21d | 2016-05-16 A | 2017-11-06 A | B29-SPALC-MS150 | 100% | 2016-05-19 | 2016-06-08 | ATL522 - Engineering Approval (7x9) |
| B29-SPALC-MA200 |  | Review & Approval of Glass | 21d | 2016-05-16 A | 2017-11-01 A | B29-SPALC-MS200 | 100% | 2016-05-19 | 2016-06-08 | ATL522 - Engineering Approval (7x9) |
| B29-SPALC-MA220 |  | Review & Approval of Metal | 21d | 2016-05-16 A | 2017-11-02 A | B29-SPALC-MS220 | 100% | 2016-05-19 | 2016-06-08 | ATL522 - Engineering Approval (7x9) |
| B29-SPALC-MA230 |  | Review & Approval of Wall Covering | 21d | 2016-05-16 A | 2017-10-29 A | B29-SPALC-MS230 | 100% | 2016-05-19 | 2016-06-08 | ATL522 - Engineering Approval (7x9) |
| B29-SPALC-MA290 |  | Review & Approval of Doors , Ironmongery and Hardware | 21d | 2016-05-16 A | 2017-11-14 A | B29-SPALC-MS290 | 100% | 2016-05-19 | 2016-06-08 | ATL522 - Engineering Approval (7x9) |
| B29-SPALC-MS240 |  | Preparation and Submission of Tiles | 30d | 2016-06-12 A | 2017-08-03 A | RM-DF-017 | 100% | 2016-04-06 | 2016-05-19 | ATL522 - Engineering Submission (5x9) |
| B29-SPALC-MS270 |  | Preparation and Submission of Stone | 30d | 2016-06-12 A | 2017-10-25 A | RM-DF-017 | 100% | 2016-04-06 | 2016-05-19 | ATL522 - Engineering Submission (5x9) |
| B29-SPALC-MA250 |  | Review & Approval of Ceiling System | 21d | 2016-07-24 A | 2016-09-15 A | B29-SPALC-MS250 | 100% | 2016-07-15 | 2016-08-04 | ATL522 - Engineering Approval (7x9) |
| B29-SPALC-MA240 |  | Review & Approval of Tiles | 21d | 2016-09-11 A | 2017-08-09 A | B29-SPALC-MS240 | 100% | 2016-09-28 | 2016-10-19 | ATL522 - Engineering Approval (7x9) |
| B29-SPALC-MA270 |  | Review & Approval of Stone | 21d | 2016-09-11 A | 2017-11-02 A | B29-SPALC-MS270 | 100% | 2016-10-07 | 2016-10-27 | ATL522 - Engineering Approval (7x9) |
| B29-SPALC-MA280 |  | Review & Approval of Leather and Fabric | 21d | 2016-10-23 A | 2017-10-29 A | B29-SPALC-MS280 | 100% | 2016-10-24 | 2016-11-13 | ATL522 - Engineering Approval (7x9) |

| ID | WBS | Activity | Duration | Start | Finish | Predecessors | Complete | Planned start | Planned finish | Calendar |
| --- | --- | --- | --- | --- | --- | --- | --- | --- | --- | --- |
|  | 22 | **Material Process Bill 34-UP-SPEAK EASY BAR** |  | 2016-04-04 | 2017-11-14 |  |  |  |  |  |
| B34-UPSEB-MS150 |  | Preparation and Submission of Veneer | 30d | 2016-04-04 A | 2017-06-20 A | RM-DF-020 | 100% | 2016-04-06 | 2016-05-19 | ATL522 - Engineering Submission (5x9) |
| B34-UPSEB-MS200 |  | Preparation and Submission of Solid Wood | 30d | 2016-04-04 A | 2017-06-13 A | RM-DF-020 | 100% | 2016-04-06 | 2016-05-19 | ATL522 - Engineering Submission (5x9) |
| B34-UPSEB-MS220 |  | Preparation and Submission of Paint | 30d | 2016-04-04 A | 2017-10-18 A | RM-DF-020 | 100% | 2016-04-06 | 2016-05-19 | ATL522 - Engineering Submission (5x9) |
| B34-UPSEB-MS230 |  | Preparation and Submission of Glass | 30d | 2016-04-04 A | 2017-10-24 A | RM-DF-020 | 100% | 2016-04-06 | 2016-05-19 | ATL522 - Engineering Submission (5x9) |
| B34-UPSEB-MS240 |  | Preparation and Submission of Metal | 30d | 2016-04-04 A | 2017-10-24 A | RM-DF-020 | 100% | 2016-04-06 | 2016-05-19 | ATL522 - Engineering Submission (5x9) |
| B34-UPSEB-MS250 |  | Preparation and Submission of Wall Covering | 30d | 2016-04-04 A | 2017-10-31 A | RM-DF-020 | 100% | 2016-04-06 | 2016-05-19 | ATL522 - Engineering Submission (5x9) |
| B34-UPSEB-MS280 |  | Preparation and Submission of Ceiling System | 30d | 2016-04-04 A | 2016-09-14 A | RM-DF-020 | 100% | 2016-04-06 | 2016-05-19 | ATL522 - Engineering Submission (5x9) |
| B34-UPSEB-MS300 |  | Preparation and Submission of Leather and Fabric | 30d | 2016-04-04 A | 2017-10-24 A | RM-DF-020 | 100% | 2016-04-06 | 2016-05-19 | ATL522 - Engineering Submission (5x9) |
| B34-UPSEB-MS310 |  | Preparation and Submission of Doors , Ironmongery and Hardware | 30d | 2016-04-04 A | 2017-11-02 A | RM-DF-020 | 100% | 2016-04-06 | 2016-05-19 | ATL522 - Engineering Submission (5x9) |
| B34-UPSEB-MA150 |  | Review & Approval of Veneer | 21d | 2016-05-16 A | 2017-06-26 A | B34-UPSEB-MS150 | 100% | 2016-05-19 | 2016-06-08 | ATL522 - Engineering Approval (7x9) |
| B34-UPSEB-MA200 |  | Review & Approval of Solid Wood | 21d | 2016-05-16 A | 2017-06-28 A | B34-UPSEB-MS200 | 100% | 2016-05-19 | 2016-06-08 | ATL522 - Engineering Approval (7x9) |
| B34-UPSEB-MA220 |  | Review & Approval of Paint | 21d | 2016-05-16 A | 2017-10-30 A | B34-UPSEB-MS220 | 100% | 2016-05-19 | 2016-06-08 | ATL522 - Engineering Approval (7x9) |
| B34-UPSEB-MA230 |  | Review & Approval of Glass | 21d | 2016-05-16 A | 2017-10-31 A | B34-UPSEB-MS230 | 100% | 2016-05-19 | 2016-06-08 | ATL522 - Engineering Approval (7x9) |
| B34-UPSEB-MA240 |  | Review & Approval of Metal | 21d | 2016-05-16 A | 2017-10-25 A | B34-UPSEB-MS240 | 100% | 2016-05-19 | 2016-06-08 | ATL522 - Engineering Approval (7x9) |
| B34-UPSEB-MA250 |  | Review & Approval of Wall Covering | 21d | 2016-05-16 A | 2017-11-12 A | B34-UPSEB-MS250 | 100% | 2016-05-19 | 2016-06-08 | ATL522 - Engineering Approval (7x9) |
| B34-UPSEB-MA300 |  | Review & Approval of Leather and Fabric | 21d | 2016-05-16 A | 2017-11-09 A | B34-UPSEB-MS300 | 100% | 2016-05-19 | 2016-06-08 | ATL522 - Engineering Approval (7x9) |
| B34-UPSEB-MA310 |  | Review & Approval of Doors , Ironmongery and Hardware | 21d | 2016-05-16 A | 2017-11-14 A | B34-UPSEB-MS310 | 100% | 2016-05-19 | 2016-06-08 | ATL522 - Engineering Approval (7x9) |
| B34-UPSEB-MS270 |  | Preparation and Submission of Tiles | 30d | 2016-06-12 A | 2017-08-01 A | RM-DF-020 | 100% | 2016-04-06 | 2016-05-19 | ATL522 - Engineering Submission (5x9) |
| B34-UPSEB-MS290 |  | Preparation and Submission of Stone | 30d | 2016-06-12 A | 2017-06-01 A | RM-DF-020 | 100% | 2016-04-06 | 2016-05-19 | ATL522 - Engineering Submission (5x9) |
| B34-UPSEB-MA280 |  | Review & Approval of Ceiling System | 21d | 2016-07-24 A | 2016-09-15 A | B34-UPSEB-MS280 | 100% | 2016-07-15 | 2016-08-04 | ATL522 - Engineering Approval (7x9) |
| B34-UPSEB-MA270 |  | Review & Approval of Tiles | 21d | 2016-09-11 A | 2017-08-08 A | B34-UPSEB-MS270 | 100% | 2016-09-28 | 2016-10-19 | ATL522 - Engineering Approval (7x9) |
| B34-UPSEB-MA290 |  | Review & Approval of Stone | 21d | 2016-09-11 A | 2017-06-06 A | B34-UPSEB-MS290 | 100% | 2016-10-07 | 2016-10-27 | ATL522 - Engineering Approval (7x9) |
|  | 20 | **Material Process Bill 35-LIFT CAR - TOWER C** |  | 2016-04-04 | 2017-07-31 |  |  |  |  |  |
| B35-TCSR-MS150 |  | Preparation and Submission of Metal | 30d | 2016-04-04 A | 2017-07-24 A | RM-DF-021 | 100% | 2016-04-06 | 2016-05-11 |  |
| B35-TCSR-MS190 |  | Preparation and Submission of Ceiling System | 30d | 2016-04-04 A | 2016-09-10 A | RM-DF-021 | 100% | 2016-04-06 | 2016-05-11 |  |
| B35-TCSR-MA150 |  | Review & Approval of Metal | 21d | 2016-05-09 A | 2017-07-31 A | B35-TCSR-MS150 | 100% | 2016-05-12 | 2016-06-01 | ATL522 - Engineering Approval (7x9) |
| B35-TCSR-MA190 |  | Review & Approval of Ceiling System | 21d | 2016-07-24 A | 2016-09-15 A | B35-TCSR-MS190 | 100% | 2016-07-14 | 2016-08-03 | ATL522 - Engineering Approval (7x9) |

| ID | WBS | Activity | Duration | Start | Finish | Predecessors | Complete | Planned start | Planned finish | Calendar |
| --- | --- | --- | --- | --- | --- | --- | --- | --- | --- | --- |
|  | 21 | **Material Process Bill 39-LG- LIFT LOBBY** |  | 2016-04-04 | 2017-08-08 |  |  |  |  |  |
| B39-LGLL-MS110 |  | Preparation and Submission of Veneer | 30d | 2016-04-04 A | 2017-06-20 A | RM-DF-021 | 100% | 2016-04-06 | 2016-05-11 |  |
| B39-LGLL-MS150 |  | Preparation and Submission of Glass | 30d | 2016-04-04 A | 2017-08-02 A | RM-DF-021 | 100% | 2016-04-06 | 2016-05-11 |  |
| B39-LGLL-MS160 |  | Preparation and Submission of Metal | 30d | 2016-04-04 A | 2017-06-01 A | RM-DF-021 | 100% | 2016-04-06 | 2016-05-11 |  |
| B39-LGLL-MS190 |  | Preparation and Submission of Ceiling System | 30d | 2016-04-04 A | 2016-09-10 A | RM-DF-021 | 100% | 2016-04-06 | 2016-05-11 |  |
| B39-LGLL-MA110 |  | Review & Approval of Veneer | 21d | 2016-05-09 A | 2017-07-01 A | B39-LGLL-MS110 | 100% | 2016-05-12 | 2016-06-01 | ATL522 - Engineering Approval (7x9) |
| B39-LGLL-MA150 |  | Review & Approval of Glass | 21d | 2016-05-09 A | 2017-08-08 A | B39-LGLL-MS150 | 100% | 2016-05-12 | 2016-06-01 | ATL522 - Engineering Approval (7x9) |
| B39-LGLL-MA160 |  | Review & Approval of Metal | 21d | 2016-05-09 A | 2017-06-06 A | B39-LGLL-MS160 | 100% | 2016-05-12 | 2016-06-01 | ATL522 - Engineering Approval (7x9) |
| B39-LGLL-MA190 |  | Review & Approval of Ceiling System | 21d | 2016-07-24 A | 2016-09-15 A | B39-LGLL-MS190 | 100% | 2016-07-14 | 2016-08-03 | ATL522 - Engineering Approval (7x9) |
|  | 4 | **Procurement Phase** |  | 2016-08-21 | 2018-05-03 |  |  |  |  |  |
|  | 1 | **Procurement Process Bill 2 UP-HOTEL LOBBY** |  | 2016-09-04 | 2017-11-25 |  |  |  |  |  |
| B2-UPHL-PR120 |  | Fabrication and Delivery of Paint | 56d | 2016-09-04 A | 2017-11-25 A | KD03, B2-UPHL-MA150, B2-UPHL-SDA190 | 100% | 2016-08-15 | 2016-10-14 | ATL522 - Local Procurment (7x24) |
| B2-UPHL-PR180 |  | Fabrication and Delivery of Ceiling System | 35d | 2016-09-18 A | 2017-07-18 A | KD03, B2-UPHL-SDA170, B2-UPHL-MA220 | 100% | 2016-09-25 | 2016-10-31 | ATL522 - Local Procurment (7x24) |
| B2-UPHL-PR100 |  | Fabrication and Delivery of Veneer Works - Joinery | 42d | 2016-09-25 A | 2017-06-14 A | KD03, B2-UPHL-SDA220, B2-UPHL-MA110, B2-UPHL-SDA200, B2-UPHL-SDA230 | 100% | 2016-10-05 | 2016-11-16 | ATL522 - EU Procurment (7x24) |
| B2-UPHL-PR130 |  | Fabrication and Delivery of Glass | 56d | 2016-09-29 A | 2017-10-19 A | KD03, B2-UPHL-SDA190, B2-UPHL-MA160, B2-UPHL-SDA220 | 100% | 2016-10-14 | 2016-12-10 | ATL522 - Local Procurment (7x24) |
| B2-UPHL-PR140 |  | Fabrication and Delivery of Metal | 77d | 2016-09-29 A | 2017-06-04 A | KD03, B2-UPHL-SDA190, B2-UPHL-MA200 | 100% | 2016-10-14 | 2017-01-01 | ATL522 - Local Procurment (7x24) |
| B2-UPHL-PR170 |  | Fabrication and Delivery of Tiles | 70d | 2016-09-29 A | 2017-07-29 A | B2-UPHL-SDA190, B2-UPHL-MA210, KD03, B2-UPHL-SDA180 | 100% | 2016-10-25 | 2017-01-05 | ATL522 - Local Procurment (7x24) |
| B2-UPHL-PR190 |  | Fabrication and Delivery of Stone | 63d | 2016-11-06 A | 2017-08-15 A | B2-UPHL-SDA180, KD03, B2-UPHL-MA230 | 100% | 2016-12-01 | 2017-02-03 | ATL522 - Local Procurment (7x24) |
| B2-UPHL-PR260 |  | Fabrication and Delivery of Doors , Ironmongery and Hardware | 49d | 2017-09-26 A | 2017-10-26 A | KD03, B2-UPHL-SDA210, B2-UPHL-SDA220, B2-UPHL-MA270 | 100% | 2017-10-12 | 2017-11-30 | ATL522 - Local Procurment (7x24) |
|  | 2 | **Procurement Process Bill 3-UP-HOTEL RECEPTION** |  | 2016-09-18 | 2018-01-11 |  |  |  |  |  |
| B3-UPHR-PR180 |  | Fabrication and Delivery of Ceiling System | 70d | 2016-09-18 A | 2017-07-01 A | KD03, B3-UPHR-SDA110, B3-UPHR-MA190 | 100% | 2016-09-25 | 2016-12-06 | ATL522 - Local Procurment (7x24) |
| B3-UPHR-PR130 |  | Fabrication and Delivery of Glass | 56d | 2016-09-29 A | 2017-12-04 A | B3-UPHR-SDA150, B3-UPHR-MA150, KD03, B3-UPHR-SDA130 | 100% | 2016-10-14 | 2016-12-10 | ATL522 - Local Procurment (7x24) |
| B3-UPHR-PR140 |  | Fabrication and Delivery of Metal | 77d | 2016-09-29 A | 2018-01-11 A | B3-UPHR-MA160, KD03 | 100% | 2016-10-14 | 2017-01-01 | ATL522 - Local Procurment (7x24) |
|  | 3 | **Procurement Process Bill 4-UP-VIP PROTOCOL** |  | 2016-09-18 | 2017-10-22 |  |  |  |  |  |
| B4-UPVP-PR180 |  | Fabrication and Delivery of Ceiling System | 42d | 2016-09-18 A | 2017-07-01 A | B4-UPVP-SDA140, B4-UPVP-MA190, KD03 | 100% | 2016-09-25 | 2016-11-07 | ATL522 - Local Procurment (7x24) |
| B4-UPVP-PR100 |  | Fabrication and Delivery of Veneer Works - Joinery | 63d | 2016-09-25 A | 2017-06-11 A | B4-UPVP-SDA190, B4-UPVP-SDA210, KD03, B4-UPVP-MA110 | 100% | 2016-10-08 | 2016-12-12 | ATL522 - EU Procurment (7x24) |
| B4-UPVP-PR110 |  | Fabrication and Delivery of Solid Works - Joinery | 63d | 2016-09-25 A | 2017-07-18 A | KD03, B4-UPVP-SDA170 | 100% | 2016-09-25 | 2016-11-28 | ATL522 - EU Procurment (7x24) |
| B4-UPVP-PR130 |  | Fabrication and Delivery of Glass | 56d | 2016-09-29 A | 2017-10-19 A | KD03, B4-UPVP-MA140, B4-UPVP-SDA180, B4-UPVP-SDA200 | 100% | 2016-10-14 | 2016-12-10 | ATL522 - Local Procurment (7x24) |
| B4-UPVP-PR160 |  | Fabrication and Delivery of Wall Covering | 49d | 2016-10-16 A | 2017-06-08 A | B4-UPVP-SDA180, B4-UPVP-SDA200, KD03, B4-UPVP-MA170 | 100% | 2016-10-31 | 2016-12-21 | ATL522 - Local Procurment (7x24) |
| B4-UPVP-PR260 |  | Fabrication and Delivery of Doors , Ironmongery and Hardware | 49d | 2016-11-27 A | 2017-10-22 A | KD03, B4-UPVP-MA270, B4-UPVP-SDA180, B4-UPVP-SDA200 | 100% | 2017-06-27 | 2017-08-15 | ATL522 - Local Procurment (7x24) |

| ID | WBS | Activity | Duration | Start | Finish | Predecessors | Complete | Remaining | Planned start | Planned finish | Total float | Free float | Calendar |
| --- | --- | --- | --- | --- | --- | --- | --- | --- | --- | --- | --- | --- | --- |
|  | 4 | **Procurement Process Bill 5-UP-SAFE DEPOSIT** |  | 2016-09-18 | 2017-12-09 |  |  |  |  |  |  |  |  |
| B5-UPSD-PR180 |  | Fabrication and Delivery of Ceiling System | 63d | 2016-09-18 A | 2017-07-04 A | B5-UPSD-MA190, B5-UPSD-SDA170 FS-18.67d, KD03 | 100% |  | 2016-09-25 | 2016-11-28 |  |  | ATL522 - Local Procurment (7x24) |
| B5-UPSD-PR100 |  | Fabrication and Delivery of Veneer Works - Joinery | 63d | 2016-09-25 A | 2017-09-13 A | KD03, B5-UPSD-SDA220 FF+18.67d, B5-UPSD-SDA190, B5-UPSD-MA110, B5-UPSD-SDA200, B5-UPSD-SDA230 SS | 100% |  | 2016-10-08 | 2016-12-12 |  |  | ATL522 - EU Procurment (7x24) |
| B5-UPSD-PR260 |  | Fabrication and Delivery of Doors , Ironmongery and Hardware | 49d | 2016-11-27 A | 2017-12-09 A | B5-UPSD-MA270, KD03, B5-UPSD-SDA210 | 100% |  | 2017-06-24 | 2017-08-12 |  |  | ATL522 - Local Procurment (7x24) |
|  | 5 | **Procurement Process Bill 6-UP-HOTEL LIFT LOBBY** |  | 2016-09-18 | 2017-09-21 |  |  |  |  |  |  |  |  |
| B6-UPHLL-PR180 |  | Fabrication and Delivery of Ceiling System | 77d | 2016-09-18 A | 2017-06-29 A | B6-UPHLL-SDA110, KD03, B6-UPHLL-MA190 | 100% |  | 2016-09-25 | 2016-12-14 |  |  | ATL522 - Local Procurment (7x24) |
| B6-UPHLL-PR130 |  | Fabrication and Delivery of Glass | 56d | 2016-09-29 A | 2017-09-21 A | B6-UPHLL-MA150, B6-UPHLL-SDA130, B6-UPHLL-SDA160, KD03 | 100% |  | 2016-10-14 | 2016-12-10 |  |  | ATL522 - Local Procurment (7x24) |
| B6-UPHLL-PR140 |  | Fabrication and Delivery of Metal | 77d | 2016-09-29 A | 2017-01-18 A | B6-UPHLL-MA160, B6-UPHLL-SDA130, B6-UPHLL-SDA170 FF+42d, KD03 | 100% |  | 2016-10-14 | 2017-01-01 |  |  | ATL522 - Local Procurment (7x24) |
|  | 6 | **Procurement Process Bill 7-UP-RESIDENCE'S LIFT LOBBY** |  | 2016-09-18 | 2017-07-01 |  |  |  |  |  |  |  |  |
| B7-UPRLL-PR180 |  | Fabrication and Delivery of Ceiling System | 70d | 2016-09-18 A | 2017-07-01 A | B7-UPRLL-SDA110, B7-UPRLL-SDA170 FF, B7-UPRLL-MA190, KD03 | 100% |  | 2016-09-25 | 2016-12-06 |  |  | ATL522 - Local Procurment (7x24) |
|  | 7 | **Procurement Process Bill 8-UP-FRONT OFFICE** |  | 2016-08-21 | 2017-10-24 |  |  |  |  |  |  |  |  |
| B8-UPFO-PR200 |  | Fabrication and Delivery of Carpet | 63d | 2016-08-21 A | 2017-09-19 A | KD03, B8-UPFO-SDA180, B8-UPFO-MA210 | 100% |  | 2016-09-01 | 2016-11-07 |  |  | ATL522 - EU Procurment (7x24) |
| B8-UPFO-PR180 |  | Fabrication and Delivery of Ceiling System | 49d | 2016-09-18 A | 2017-07-03 A | B8-UPFO-SDA170, KD03, B8-UPFO-MA190 | 100% |  | 2016-09-25 | 2016-11-14 |  |  | ATL522 - Local Procurment (7x24) |
| B8-UPFO-PR100 |  | Fabrication and Delivery of Veneer Works - Joinery | 77d | 2016-09-25 A | 2017-07-25 A | B8-UPFO-SDA190, B8-UPFO-SDA200, B8-UPFO-SDA230, B8-UPFO-MA110, KD03, B8-UPFO-SDA220 FF+18.67d | 100% |  | 2016-10-08 | 2016-12-26 |  |  | ATL522 - EU Procurment (7x24) |
| B8-UPFO-PR260 |  | Fabrication and Delivery of Doors , Ironmongery and Hardware | 49d | 2016-11-27 A | 2017-10-24 A | B8-UPFO-SDA210, B8-UPFO-SDA220, KD03, B8-UPFO-MA270 | 100% |  | 2017-06-29 | 2017-08-17 |  |  | ATL522 - Local Procurment (7x24) |
|  | 8 | **Procurement Process Bill 9-UP-CHOCOLATE BOUTIQUE** |  | 2016-09-04 | 2018-05-03 |  |  |  |  |  |  |  |  |
| B9-UPCB-PR120 |  | Fabrication and Delivery of Paint | 56d | 2016-09-04 A | 2017-12-06 A | B9-UPCB-MA150, B9-UPCB-SDA180, KD03 | 100% |  | 2016-08-31 | 2016-10-30 |  |  | ATL522 - Local Procurment (7x24) |
| B9-UPCB-PR180 |  | Fabrication and Delivery of Ceiling System | 28d | 2016-09-18 A | 2017-11-21 A | B9-UPCB-SDA160, KD03, B9-UPCB-MA210 | 100% |  | 2016-09-25 | 2016-10-24 |  |  | ATL522 - Local Procurment (7x24) |
| B9-UPCB-PR100 |  | Fabrication and Delivery of Veneer Works - Joinery | 56d | 2016-09-25 A | 2018-05-01 | B9-UPCB-SDA190, B9-UPCB-SDA210, KD03, B9-UPCB-MA110 | 90% | 5.6d | 2016-10-08 | 2016-12-04 | -459.91d | 0d | ATL522 - EU Procurment (7x24) |
| B9-UPCB-PR130 |  | Fabrication and Delivery of Glass | 35d | 2016-09-29 A | 2018-04-29 | B9-UPCB-SDA200, KD03, B9-UPCB-SDA180, B9-UPCB-MA160 | 90% | 3.5d | 2016-10-14 | 2016-11-18 | -449.19d | 4.2d | ATL522 - Local Procurment (7x24) |
| B9-UPCB-PR140 |  | Fabrication and Delivery of Metal | 77d | 2016-09-29 A | 2018-05-03 | KD03, B9-UPCB-SDA180, B9-UPCB-MA190 | 90% | 7.7d | 2016-10-14 | 2017-01-01 | -521.35d | 0d | ATL522 - Local Procurment (7x24) |
| B9-UPCB-PR170 |  | Fabrication and Delivery of Tiles | 49d | 2016-10-16 A | 2017-09-20 A | B9-UPCB-SDA170, B9-UPCB-MA200, KD03 | 100% |  | 2016-11-02 | 2016-12-23 |  |  | ATL522 - Local Procurment (7x24) |
|  | 9 | **Procurement Process Bill 10-UP-RETAIL** |  | 2016-09-04 | 2018-04-28 |  |  |  |  |  |  |  |  |
| B10-UPRT-PR120 |  | Fabrication and Delivery of Paint | 56d | 2016-09-04 A | 2017-07-19 A | KD03, B10-UPRT-SDA130 SS, B10-UPRT-MA140 | 100% |  | 2016-07-28 | 2016-09-25 |  |  | ATL522 - Local Procurment (7x24) |
| B10-UPRT-PR130 |  | Fabrication and Delivery of Glass | 56d | 2016-09-29 A | 2018-04-28 | B10-UPRT-SDA110, B10-UPRT-SDA160 SS, B10-UPRT-SDA130, B10-UPRT-MA150, KD03 | 96% | 2.24d | 2016-10-14 | 2016-12-10 | -436.55d | 5.46d | ATL522 - Local Procurment (7x24) |
| B10-UPRT-PR170 |  | Fabrication and Delivery of Tiles | 56d | 2016-10-16 A | 2017-09-06 A | RM-DF-009, KD03, B10-UPRT-MA180, B10-UPRT-SDS110 | 100% |  | 2016-11-02 | 2016-12-30 |  |  | ATL522 - Local Procurment (7x24) |

| ID | WBS | Activity | Duration | Start | Finish | Predecessors | Complete | Planned start | Planned finish | Calendar |
| --- | --- | --- | --- | --- | --- | --- | --- | --- | --- | --- |
|  | 10 | **Procurement Process Bill 11-UP-REST ROOMS** |  | 2016-09-18 | 2018-03-06 |  |  |  |  |  |
| B11-UPRR-PR180 |  | Fabrication and Delivery of Ceiling System | 49d | 2016-09-18 A | 2017-06-27 A | KD03, B11-UPRER-SDA110, B11-UPRR-MA200 | 100% | 2016-09-25 | 2016-11-14 | ATL522 - Local Procurment (7x24) |
| B11-UPRR-PR100 |  | Fabrication and Delivery of Veneer Works - Joinery | 70d | 2016-09-25 A | 2017-06-29 A | B11-UPRR-MA110, KD03, B11-UPRER-SDA190, B11-UPRER-SDA170 | 100% | 2016-10-08 | 2016-12-19 | ATL522 - EU Procurment (7x24) |
| B11-UPRR-PR130 |  | Fabrication and Delivery of Glass | 56d | 2016-09-29 A | 2017-10-26 A | KD03, B11-UPRER-SDA160, B11-UPRER-SDA190, B11-UPRR-MA150 | 100% | 2016-10-14 | 2016-12-10 | ATL522 - Local Procurment (7x24) |
| B11-UPRR-PR140 |  | Fabrication and Delivery of Metal | 77d | 2016-09-29 A | 2018-02-15 A | B11-UPRR-MA170, KD03, B11-UPRER-SDA160 | 100% | 2016-10-14 | 2017-01-01 | ATL522 - Local Procurment (7x24) |
| B11-UPRR-PR160 |  | Fabrication and Delivery of Wall Covering | 70d | 2016-10-16 A | 2017-06-01 A | B11-UPRR-MA190, KD03 | 100% | 2016-11-02 | 2017-01-13 | ATL522 - Local Procurment (7x24) |
| B11-UPRR-PR260 |  | Fabrication and Delivery of Doors , Ironmongery and Hardware | 49d | 2017-07-04 A | 2017-09-13 A | KD03, B11-UPRR-MA280, B11-UPRER-SDA180 | 100% | 2017-07-04 | 2017-08-22 | ATL522 - Local Procurment (7x24) |
| B11-UPRR-PR270 |  | Fabrication and Delivery of Sanitary Ware , Fitttings and Accessories | 84d | 2018-02-12 A | 2018-03-06 A | KD03, B11-UPRR-MA290 | 100% | 2018-02-20 | 2018-05-15 | ATL522 - Local Procurment (7x24) |
|  | 11 | **Procurement Process Bill 12-UP-PRAYER ROOMS** |  | 2016-08-21 | 2017-10-26 |  |  |  |  |  |
| B12-UPPR-PR200 |  | Fabrication and Delivery of Carpet | 63d | 2016-08-21 A | 2017-10-05 A | KD03, B12-UPPR-MA210, B12-UPPR-SDA170 | 100% | 2016-09-01 | 2016-11-07 | ATL522 - EU Procurment (7x24) |
| B12-UPPR-PR180 |  | Fabrication and Delivery of Ceiling System | 35d | 2016-09-18 A | 2017-06-27 A | B12-UPPR-SDA160, B12-UPPR-MA190, KD03 | 100% | 2016-09-25 | 2016-10-31 | ATL522 - Local Procurment (7x24) |
| B12-UPPR-PR100 |  | Fabrication and Delivery of Veneer Works - Joinery | 91d | 2016-09-25 A | 2017-09-13 A | KD03, B12-UPPR-SDA190, B12-UPPR-MA110, B12-UPPR-SDA210 | 100% | 2016-10-08 | 2017-01-09 | ATL522 - EU Procurment (7x24) |
| B12-UPPR-PR160 |  | Fabrication and Delivery of Wall Covering | 70d | 2016-10-16 A | 2017-06-29 A | B12-UPPR-SDA180, B12-UPPR-MA170, KD03 | 100% | 2016-11-02 | 2017-01-13 | ATL522 - Local Procurment (7x24) |
| B12-UPPR-PR260 |  | Fabrication and Delivery of Doors , Ironmongery and Hardware | 49d | 2017-07-05 A | 2017-10-26 A | B12-UPPR-MA270, B12-UPPR-SDA200, KD03 | 100% | 2017-08-21 | 2017-10-09 | ATL522 - Local Procurment (7x24) |
|  | 12 | **Procurement Process Bill 13-UP-RESIDENCES LOBBY** |  | 2016-09-18 | 2018-02-25 |  |  |  |  |  |
| B13-UPRL-PR180 |  | Fabrication and Delivery of Ceiling System | 35d | 2016-09-18 A | 2017-06-26 A | B13-UPRL-SDA110, B13-UPRL-MA190, KD03 | 100% | 2016-09-30 | 2016-11-05 | ATL522 - Local Procurment (7x24) |
| B13-UPRL-PR100 |  | Fabrication and Delivery of Veneer Works - Joinery | 63d | 2016-09-25 A | 2017-08-16 A | KD03, B13-UPRL-SDA170, B13-UPRL-SDA190, B13-UPRL-MA110 | 100% | 2016-10-08 | 2016-12-12 | ATL522 - EU Procurment (7x24) |
| B13-UPRL-PR140 |  | Fabrication and Delivery of Metal | 77d | 2016-09-29 A | 2018-02-25 A | KD03, B13-UPRL-SDA160, B13-UPRL-MA150 | 100% | 2016-10-14 | 2017-01-01 | ATL522 - Local Procurment (7x24) |
|  | 15 | **Procurement Process Bill 20-UP-COFFEE BAR** |  | 2016-09-25 | 2018-03-29 |  |  |  |  |  |
| B20-UPCB-PR100 |  | Fabrication and Delivery of Veneer Works - Joinery | 49d | 2016-09-25 A | 2018-03-29 A | B20-UPCB-SDA180, B20-UPCB-SDA160, KD03, B20-UPCB-SDA170, B20-UPCB-MA110 | 100% | 2016-10-08 | 2016-11-26 | ATL522 - EU Procurment (7x24) |
|  | 16 | **Procurement Process Bill 28-LIFT CAR - TOWER A, B & D** |  | 2016-09-18 | 2017-12-13 |  |  |  |  |  |
| B28-TsLC-PR180 |  | Fabrication and Delivery of Ceiling System | 42d | 2016-09-18 A | 2017-07-28 A | KD03, B28-TsLC-MA190, B28-TsLC-SDA110 | 100% | 2016-10-19 | 2016-12-01 | ATL522 - Local Procurment (7x24) |
| B28-TsLC-PR100 |  | Fabrication and Delivery of Veneer Works - Joinery | 42d | 2016-09-25 A | 2017-08-20 A | B28-TsLC-SDA190, KD03, B28-TsLC-SDA170, B28-TsLC-SDA180, B28-TsLC-MA110 | 100% | 2016-10-17 | 2016-11-28 | ATL522 - EU Procurment (7x24) |
| B28-TsLC-PR130 |  | Fabrication and Delivery of Glass | 56d | 2016-09-29 A | 2017-11-14 A | B28-TsLC-MA150, KD03, B28-TsLC-SDA180, B28-TsLC-SDA160 | 100% | 2016-10-20 | 2016-12-17 | ATL522 - Local Procurment (7x24) |
| B28-TsLC-PR140 |  | Fabrication and Delivery of Metal | 77d | 2016-09-29 A | 2017-09-04 A | KD03, B28-TsLC-MA160, B28-TsLC-SDA160 | 100% | 2016-10-16 | 2017-01-03 | ATL522 - Local Procurment (7x24) |
| B28-TsLC-PR220 |  | Fabrication and Delivery of Streached Printed Panel | 84d | 2017-09-28 A | 2017-12-13 A | KD03, B28-TsLC-MA230 | 100% | 2017-10-19 | 2018-01-11 | ATL522 - Local Procurment (7x24) |

| ID | WBS | Activity | Duration | Start | Finish | Predecessors | Complete | Planned start | Planned finish | Calendar |
| --- | --- | --- | --- | --- | --- | --- | --- | --- | --- | --- |
|  | 17 | **Procurement Process Bill 29-SPA** |  | 2016-09-04 | 2018-03-02 |  |  |  |  |  |
| B29-SPALC-PR120 |  | Fabrication and Delivery of Paint | 56d | 2016-09-04 A | 2017-12-04 A | B29-SPA-SDA190, KD03, B29-SPALC-MA150 | 100% | 2016-09-07 | 2016-11-06 | ATL522 - Local Procurment (7x24) |
| B29-SPALC-PR180 |  | Fabrication and Delivery of Ceiling System | 49d | 2016-09-18 A | 2017-09-14 A | KD03, B29-SPALC-MA250, B29-SPA-SDA170 | 100% | 2016-09-27 | 2016-11-16 | ATL522 - Local Procurment (7x24) |
| B29-SPALC-PR100 |  | Fabrication and Delivery of Veneer Works - Joinery | 42d | 2016-09-25 A | 2017-06-05 A | B29-SPA-SDA200, B29-SPALC-MA110, KD03, B29-SPA-SDA220, B29-SPA-SDA230 | 100% | 2016-10-08 | 2016-11-19 | ATL522 - EU Procurment (7x24) |
| B29-SPALC-PR130 |  | Fabrication and Delivery of Glass | 56d | 2016-09-29 A | 2018-02-10 A | KD03, B29-SPA-SDA190, B29-SPA-SDA220, B29-SPALC-MA200 | 100% | 2016-10-14 | 2016-12-10 | ATL522 - Local Procurment (7x24) |
| B29-SPALC-PR140 |  | Fabrication and Delivery of Metal | 77d | 2016-09-29 A | 2018-01-06 A | B29-SPA-SDA190, KD03, B29-SPALC-MA220 | 100% | 2016-10-14 | 2017-01-01 | ATL522 - Local Procurment (7x24) |
| B29-SPALC-PR160 |  | Fabrication and Delivery of Wall Covering | 70d | 2016-10-16 A | 2017-06-10 A | KD03, B29-SPALC-MA230, B29-SPA-SDA190 | 100% | 2016-11-02 | 2017-01-13 | ATL522 - Local Procurment (7x24) |
| B29-SPALC-PR170 |  | Fabrication and Delivery of Tiles | 77d | 2016-10-16 A | 2017-10-25 A | B29-SPA-SDA180, KD03, B29-SPALC-MA240 | 100% | 2016-11-02 | 2017-01-20 | ATL522 - Local Procurment (7x24) |
| B29-SPALC-PR210 |  | Fabrication and Delivery of Leather and Fabric | 56d | 2017-01-24 A | 2017-06-10 A | B29-SPALC-MA280, KD03, B29-SPA-SDA200 | 100% | 2017-02-07 | 2017-04-04 | ATL522 - EU Procurment (7x24) |
| B29-SPALC-PR260 |  | Fabrication and Delivery of Doors , Ironmongery and Hardware | 35d | 2017-07-19 A | 2018-03-02 A | KD03, B29-SPA-SDA210, B29-SPALC-MA290 | 100% | 2017-07-27 | 2017-08-31 | ATL522 - Local Procurment (7x24) |
| B29-SPALC-PR190 |  | Fabrication and Delivery of Stone | 77d | 2017-10-18 A | 2017-12-02 A | B29-SPALC-MA270, B29-SPA-SDA180, KD03 | 100% | 2017-10-23 | 2018-01-08 | ATL522 - Local Procurment (7x24) |
|  | 22 | **Procurement Process Bill 34-UP-SPEAK EASY BAR** |  | 2016-09-04 | 2018-02-11 |  |  |  |  |  |
| B34-UPSEB-PR120 |  | Fabrication and Delivery of Paint | 56d | 2016-09-04 A | 2017-12-19 A | KD03, B34-UPSEB-SDA190, B34-UPSEB-MA220 | 100% | 2016-07-28 | 2016-09-25 | ATL522 - Local Procurment (7x24) |
| B34-UPSEB-PR180 |  | Fabrication and Delivery of Ceiling System | 28d | 2016-09-18 A | 2017-06-27 A | B34-UPSEB-SDA170, KD03, B34-UPSEB-MA280 | 100% | 2016-09-25 | 2016-10-24 | ATL522 - Local Procurment (7x24) |
| B34-UPSEB-PR100 |  | Fabrication and Delivery of Veneer Works - Joinery | 70d | 2016-09-25 A | 2017-08-28 A | B34-UPSEB-SDA200, B34-UPSEB-SDA230, KD03, B34-UPSEB-MA150 | 100% | 2016-10-08 | 2016-12-19 | ATL522 - EU Procurment (7x24) |
| B34-UPSEB-PR110 |  | Fabrication and Delivery of Solid Works - Joinery | 63d | 2016-09-28 A | 2017-12-06 A | KD03, B34-UPSEB-SDA180, B34-UPSEB-MA200, B34-UPSEB-SDA220 FF+18.67d | 100% | 2016-10-20 | 2016-12-24 | ATL522 - EU Procurment (7x24) |
| B34-UPSEB-PR130 |  | Fabrication and Delivery of Glass | 56d | 2016-09-29 A | 2018-02-10 A | B34-UPSEB-MA230, KD03, B34-UPSEB-SDA220, B34-UPSEB-SDA190 | 100% | 2016-10-14 | 2016-12-10 | ATL522 - Local Procurment (7x24) |
| B34-UPSEB-PR140 |  | Fabrication and Delivery of Metal | 77d | 2016-09-29 A | 2018-02-11 A | B34-UPSEB-SDA190, B34-UPSEB-MA240, KD03 | 100% | 2016-10-14 | 2017-01-01 | ATL522 - Local Procurment (7x24) |
| B34-UPSEB-PR160 |  | Fabrication and Delivery of Wall Covering | 70d | 2016-10-16 A | 2017-06-30 A | B34-UPSEB-SDA220, B34-UPSEB-SDA190, B34-UPSEB-MA250, KD03 | 100% | 2016-11-02 | 2017-01-13 | ATL522 - Local Procurment (7x24) |
| B34-UPSEB-PR170 |  | Fabrication and Delivery of Tiles | 77d | 2016-10-16 A | 2017-09-05 A | B34-UPSEB-SDA190, KD03, B34-UPSEB-MA270 | 100% | 2016-11-02 | 2017-01-20 | ATL522 - Local Procurment (7x24) |
| B34-UPSEB-PR210 |  | Fabrication and Delivery of Leather and Fabric | 77d | 2017-07-18 A | 2017-10-10 A | KD03, B34-UPSEB-MA300 | 100% | 2017-07-30 | 2017-10-15 | ATL522 - Local Procurment (7x24) |
| B34-UPSEB-PR190 |  | Fabrication and Delivery of Stone | 49d | 2017-08-01 A | 2017-09-06 A | KD03, B34-UPSEB-MA290 | 100% | 2017-09-09 | 2017-10-28 | ATL522 - Local Procurment (7x24) |
| B34-UPSEB-PR260 |  | Fabrication and Delivery of Doors , Ironmongery and Hardware | 49d | 2017-08-30 A | 2017-12-05 A | KD03, B34-UPSEB-MA310, B34-UPSEB-SDA210 | 100% | 2017-09-27 | 2017-11-15 | ATL522 - Local Procurment (7x24) |
|  | 20 | **Procurement Process Bill 35-LIFT CAR - TOWER C** |  | 2016-09-18 | 2017-10-25 |  |  |  |  |  |
| B35-TCSR-PR180 |  | Fabrication and Delivery of Ceiling System | 42d | 2016-09-18 A | 2017-07-28 A | KD03, B35-TCSR-MA190, B35-TCLC-SDA110 | 100% | 2016-10-21 | 2016-12-03 | ATL522 - Local Procurment (7x24) |
| B35-TCSR-PR140 |  | Fabrication and Delivery of Metal | 77d | 2016-09-29 A | 2017-10-25 A | KD03, B35-TCLC-SDA150, B35-TCSR-MA150, B35-TCLC-SDA160 | 100% | 2016-10-17 | 2017-01-04 | ATL522 - Local Procurment (7x24) |

| ID | WBS | Activity | Type | Duration | Start | Finish | Predecessors | Complete | Planned start | Planned finish | Total float | Free float | Calendar | Resources |
| --- | --- | --- | --- | --- | --- | --- | --- | --- | --- | --- | --- | --- | --- | --- |
|  | 21 | **Procurement Process Bill 39-LG- LIFT LOBBY** |  |  | 2016-09-18 | 2017-10-25 |  |  |  |  |  |  |  |  |
| B39-LGLL-PR180 |  | Fabrication and Delivery of Ceiling System |  | 42d | 2016-09-18 A | 2017-07-28 A | KD03, B39-LGLL-SDA110, B39-LGLL-MA190 | 100% | 2016-10-09 | 2016-11-20 |  |  | ATL522 - Local Procurment (7x24) |  |
| B39-LGLL-PR100 |  | Fabrication and Delivery of Veneer Works - Joinery |  | 28d | 2016-09-25 A | 2017-08-04 A | B39-LGLL-SDA190, B39-LGLL-MA110, KD03, B39-LGLL-SDA170 | 100% | 2016-10-07 | 2016-11-04 |  |  | ATL522 - EU Procurment (7x24) |  |
| B39-LGLL-PR130 |  | Fabrication and Delivery of Glass |  | 35d | 2016-09-29 A | 2017-10-24 A | B39-LGLL-SDA180 FF+18.67d, KD03, B39-LGLL-SDA160, B39-LGLL-MA150 | 100% | 2016-10-13 | 2016-11-17 |  |  | ATL522 - Local Procurment (7x24) |  |
| B39-LGLL-PR140 |  | Fabrication and Delivery of Metal |  | 77d | 2016-09-29 A | 2017-10-25 A | B39-LGLL-MA160, B39-LGLL-SDA160, KD03 | 100% | 2016-10-13 | 2016-12-31 |  |  | ATL522 - Local Procurment (7x24) |  |
|  | 5 | **Construction Phase** |  |  | 2016-06-05 | 2018-08-01 |  |  |  |  |  |  |  |  |
|  | 0 | **Mobilization** |  |  | 2016-06-05 | 2016-07-17 |  |  |  |  |  |  |  |  |
| Con000 |  | Site Mobilization |  | 14d | 2016-06-05 A | 2016-07-17 A | RM-SA-000 | 100% | 2016-05-01 | 2016-05-17 |  |  |  |  |
|  | 1 | **Bill 2 UP-HOTEL LOBBY** |  |  | 2016-10-13 | 2018-05-03 |  |  |  |  |  |  |  |  |
| B2-UPHL-C021 |  | Clearance process for Measurements , Framing&Enabling Works |  | 5d | 2016-10-13 A | 2016-11-24 A | B2-UPHL-1stP001 | 100% | 2016-12-15 | 2016-12-20 |  |  |  | Concrete Barrier |
| B2-UPHL-C001 |  | Installation of Ceiling System |  | 20.94d | 2016-11-12 A | 2017-02-08 A | Con000, RM-SA-001, B2-UPHL-1stP001, B2-UPHL-C031 | 100% | 2017-01-07 | 2017-01-30 |  |  |  | Concrete Barrier [305007 m] |
| B2-UPHL-1stP001 |  | MEP 1st , 2nd Fix and Wall System | milestone | 0d | 2016-11-23 A | 2016-11-23 A | RM-SA-001 | 100% | 2016-12-15 | 2016-12-15 |  |  |  |  |
| B2-UPHL-C031 |  | Measurements , Framing & Enabling Works |  | 14d | 2016-11-26 A | 2017-03-12 A | B2-UPHL-C021 | 100% | 2016-12-21 | 2017-01-05 |  |  |  | Concrete Barrier [123887 m] |
| B2-UPHL-2ndP002 |  | MEP Ceiling Closure Clearance |  | 7d | 2017-02-09 A | 2017-03-19 A | B2-UPHL-C001, RM-SA-001 | 100% | 2017-03-26 | 2017-04-02 |  |  |  | Concrete Barrier |
| B2-UPHL-C002 |  | Ceiling Closure |  | 21.44d | 2017-03-20 A | 2017-04-14 A | B2-UPHL-2ndP002, B2-UPHL-PR180, Con000, RM-SA-001 | 100% | 2017-04-05 | 2017-04-30 |  |  |  | Concrete Barrier [405007 m] |
| B2-UPHL-C006 |  | Installation of Wooden wall panelling |  | 14.28d | 2017-04-02 A | 2017-08-23 A | RM-SA-001, Con000, B2-UPHL-C004 SS+2d, RM-AC-001 | 100% | 2017-06-14 | 2017-07-01 |  |  |  | Concrete Barrier [259897 m] |
| B2-UPHL-3rdP003 |  | Flooring (by others) |  | 10d | 2017-04-09 A | 2017-08-10 A | RM-SA-001, B2-UPHL-C003 | 100% | 2017-06-18 | 2017-06-28 |  |  |  | Concrete Barrier [68513 m] |
| B2-UPHL-C007 |  | Installation of Metal panelling |  | 13.94d | 2017-05-01 A | 2018-02-01 A | Con000, B2-UPHL-PR140, RM-SA-001, B2-UPHL-C004 SS+3d | 100% | 2017-08-10 | 2017-08-26 |  |  |  | Concrete Barrier [72888 m] |
| B2-UPHL-C003 |  | Installation of Wall Tiling |  | 6.89d | 2017-05-09 A | 2017-11-25 A | RM-SA-001, Con000, B2-UPHL-PR190, B2-UPHL-PR170, B2-UPHL-C002 | 100% | 2017-07-01 | 2017-07-08 |  |  |  | Concrete Barrier [166852 m] |
| B2-UPHL-C011 |  | Installation of Doors & Ironmongery |  | 7d | 2017-09-09 A | 2017-12-10 A | RM-SA-001, B2-UPHL-C008, Con000, RM-AC-001, B2-UPHL-PR260 | 100% | 2017-10-29 | 2017-11-06 |  |  |  | Concrete Barrier [44144 m] |
| B2-UPHL-C008 |  | Installation of Joinery Works |  | 13.94d | 2017-09-11 A | 2018-03-01 A | Con000, B2-UPHL-C004 SS+3d, RM-AC-001, B2-UPHL-PR100, RM-SA-001 | 100% | 2017-09-23 | 2017-10-09 |  |  |  | Concrete Barrier [97350 m] |
| B2-UPHL-C009 |  | Installation of Mirror |  | 4.94d | 2017-09-20 A | 2017-12-20 A | B2-UPHL-C007, B2-UPHL-C005, Con000, B2-UPHL-C008, B2-UPHL-C006, RM-SA-001, B2-UPHL-PR130 | 100% | 2017-10-23 | 2017-10-28 |  |  |  | Concrete Barrier [148832 m] |
| B2-UPHL-C004 |  | 1st Coat of Paint |  | 30d | 2017-11-06 A | 2017-12-19 A | Con000, B2-UPHL-3rdP003, RM-SA-001, B2-UPHL-PR120 | 100% | 2017-11-13 | 2017-12-17 |  |  |  | Concrete Barrier [20244 m] |
| B2-UPHL-C014 |  | Final Coat of Paint |  | 30d | 2017-12-28 A | 2018-03-03 A | B2-UPHL-C004 | 100% | 2017-12-28 | 2018-01-31 |  |  |  | Concrete Barrier [20244 m] |
| B2-UPHL-C005 |  | Installation of Metal Skirting |  | 7.06d | 2018-01-13 A | 2018-02-05 A | B2-UPHL-C007, B2-UPHL-PR140, RM-SA-001, Con000 | 100% | 2018-01-13 | 2018-01-21 |  |  |  | Concrete Barrier [22888 m] |
| B2-UPHL-C010 |  | Installation of Light Fittings |  | 14d | 2018-01-23 A | 2018-02-20 A | RM-SA-001, B2-UPHL-C009, Con000 | 100% | 2018-01-23 | 2018-02-08 |  |  |  | Concrete Barrier [49738 m] |
| B2-UPHL-C012 |  | FF&E |  | 5d | 2018-02-18 A | 2018-03-07 A | B2-UPHL-C009, B2-UPHL-C008, Con000, B2-UPHL-C004, B2-UPHL-C006, B2-UPHL-C007, RM-SA-001, RM-AC-002, B2-UPHL-C010, B2-UPHL-C011, B2-UPHL-C014 | 100% | 2018-02-20 | 2018-02-26 |  |  |  | Concrete Barrier [66854 m] |
| B2-UPHL-S13 |  | Snagging and De-Snagging |  | 7d | 2018-04-26 | 2018-05-03 | B2-UPHL-C014, RM-SA-001, B2-UPHL-C011, Con000, B2-UPHL-C012, B2-UPHL-C010 |  |  |  | -379d | 0d |  | Concrete Barrier |

| ID | WBS | Activity | Type | Duration | Start | Finish | Predecessors | Complete | Planned start | Planned finish | Total float | Free float | Resources |
| --- | --- | --- | --- | --- | --- | --- | --- | --- | --- | --- | --- | --- | --- |
|  | 2 | **Bill 3-UP-HOTEL RECEPTION** |  |  | 2016-08-19 | 2018-05-03 |  |  |  |  |  |  |  |
| B3-UPHR-1stP001 |  | MEP 1st , 2nd Fix and Wall System | milestone | 0d | 2016-08-19 A | 2016-08-19 A | RM-SA-002 | 100% | 2016-12-15 | 2016-12-15 |  |  |  |
| B3-UPHR-C021 |  | Clearance process for Measurements , Framing&Enabling Works |  | 5d | 2016-08-20 A | 2016-08-29 A | B3-UPHR-1stP001 | 100% | 2016-08-14 | 2016-08-18 |  |  | Concrete Barrier |
| B3-UPHR-C003 |  | Paint Works |  | 30d | 2016-08-29 A | 2018-01-20 A | B3-UPHR-3rdP003, RM-SA-002, Con000 | 100% | 2017-01-11 | 2017-02-15 |  |  | Concrete Barrier [7357 m] |
| B3-UPHR-C031 |  | Measurements , Framing & Enabling Works |  | 13.94d | 2016-08-30 A | 2016-09-18 A | B3-UPHR-C021 | 100% | 2016-08-20 | 2016-09-04 |  |  | Concrete Barrier [2000 m] |
| B3-UPHR-C001 |  | Installation of Celling System |  | 28d | 2017-04-04 A | 2017-06-10 A | Con000, RM-SA-002, B3-UPHR-1stP001, B3-UPHR-C031 | 100% | 2017-04-20 | 2017-05-22 |  |  | Concrete Barrier [34834 m] |
| B3-UPHR-C002 |  | Ceiling Closure |  | 28d | 2017-04-17 A | 2017-08-13 A | B3-UPHR-2ndP002, B3-UPHR-PR130 FF+7d, Con000, RM-SA-002, B3-UPHR-PR180 | 100% | 2017-05-31 | 2017-07-02 |  |  | Concrete Barrier [36843 m] |
| B3-UPHR-2ndP002 |  | MEP Ceiling Closure Clearance |  | 7d | 2017-04-25 A | 2017-07-26 A | B3-UPHR-C001, RM-SA-002 | 100% | 2017-05-17 | 2017-05-25 |  |  | Concrete Barrier |
| B3-UPHR-C007 |  | Installation of Metal panelling |  | 14d | 2017-05-02 A | 2018-03-01 A | B3-UPHR-PR140, Con000, B3-UPHR-C003 SS+3d, RM-SA-002 | 100% | 2017-07-31 | 2017-08-15 |  |  | Concrete Barrier [12100 m] |
| B3-UPHR-3rdP003 |  | Flooring (by others) |  | 13.94d | 2017-07-31 A | 2017-08-12 A | B3-UPHR-C002, RM-SA-002 | 100% | 2017-09-23 | 2017-10-08 |  |  | Concrete Barrier |
| B3-UPHR-C008 |  | Installation of Joinery Works |  | 21.06d | 2017-09-18 A | 2018-02-03 A | B3-UPHR-C003 SS+3d, B3-UPHR-PR130, RM-SA-002, Con000, RM-AC-002 | 100% | 2017-10-24 | 2017-11-18 |  |  | Concrete Barrier [11022 m] |
| B3-UPHR-C004 |  | Installation of Metal Skirting |  | 6.94d | 2018-01-28 A | 2018-02-19 A | Con000, B3-UPHR-PR140, RM-SA-002, B3-UPHR-C007 | 100% | 2018-01-28 | 2018-02-05 |  |  | Concrete Barrier [7921 m] |
| B3-UPHR-C011 |  | FF&E |  | 7d | 2018-02-11 A | 2018-02-14 A | RM-SA-002, B3-UPHR-C008, RM-AC-002, B3-UPHR-C004, B3-UPHR-C010, B3-UPHR-C003, Con000 | 100% | 2018-02-26 | 2018-03-06 |  |  | Concrete Barrier [426 m] |
| B3-UPHR-C010 |  | Installation of Light Fittings |  | 13.94d | 2018-02-17 A | 2018-03-01 A | B3-UPHR-C007, B3-UPHR-C008, Con000, RM-SA-002 | 100% | 2018-02-17 | 2018-03-05 |  |  | Concrete Barrier [5278 m] |
| B3-UPHR-S012 |  | Snagging and De-Snagging |  | 7d | 2018-04-26 | 2018-05-03 | B3-UPHR-C011, RM-SA-002, Con000, B3-UPHR-C010 |  |  |  | -379d | 0d | Concrete Barrier |
|  | 3 | **Bill 4-UP-VIP PROTOCOL** |  |  | 2016-07-03 | 2018-05-13 |  |  |  |  |  |  |  |
| B4-UPVP-1stP001 |  | MEP 1st , 2nd Fix and Wall System | milestone | 0d | 2016-07-03 A | 2016-07-03 A | RM-SA-003 | 100% | 2016-12-15 | 2016-12-15 |  |  |  |
| B4-UPVP-C021 |  | Clearance process for Measurements , Framing&Enabling Works |  | 5d | 2016-07-04 A | 2016-10-01 A | B4-UPVP-1stP001 | 100% | 2016-09-18 | 2016-09-22 |  |  | Concrete Barrier |
| B4-UPVP-C001 |  | Installation of Celling System |  | 21d | 2016-09-18 A | 2016-12-19 A | Con000, B4-UPVP-C031, B4-UPVP-1stP001, RM-SA-003 | 100% | 2016-10-11 | 2016-11-03 |  |  | Concrete Barrier [8760 m] |
| B4-UPVP-C031 |  | Measurements , Framing & Enabling Works |  | 13.94d | 2016-10-02 A | 2016-10-25 A | B4-UPVP-C021 | 100% | 2016-09-24 | 2016-10-10 |  |  | Concrete Barrier [2000 m] |
| B4-UPVP-C003 |  | 1st Coat of Paint |  | 29.94d | 2016-10-10 A | 2017-11-16 A | Con000, B4-UPVP-C002, RM-SA-003 | 100% | 2016-11-10 | 2016-12-17 |  |  | Concrete Barrier [5272 m] |
| B4-UPVP-C007 |  | Installation of Wall Covering |  | 13.94d | 2016-12-20 A | 2018-01-06 A | RM-SA-003, B4-UPVP-PR160, Con000, B4-UPVP-C005 | 100% | 2017-03-16 | 2017-04-01 |  |  | Concrete Barrier [3668 m] |
| B4-UPVP-2ndP002 |  | MEP Ceiling Closure Clearance |  | 7d | 2017-03-05 A | 2017-03-16 A | B4-UPVP-C001, RM-SA-003 | 100% | 2017-03-26 | 2017-04-02 |  |  | Concrete Barrier |
| B4-UPVP-C002 |  | Ceiling Closure |  | 21d | 2017-04-04 A | 2017-05-27 A | B4-UPVP-PR180 FF+7d, RM-SA-003, Con000, B4-UPVP-2ndP002 | 100% | 2017-04-09 | 2017-05-02 |  |  | Concrete Barrier [8760 m] |
| B4-UPVP-C004 |  | Installation of Wooden wall panelling |  | 21d | 2017-04-05 A | 2017-08-19 A | B4-UPVP-C003 SS, RM-AC-003, Con000, RM-SA-003 | 100% | 2017-05-16 | 2017-06-10 |  |  | Concrete Barrier [5621 m] |
| B4-UPVP-C009 |  | Installation of Mirror |  | 14d | 2017-06-28 A | 2017-07-27 A | RM-SA-003, B4-UPVP-C005, B4-UPVP-C004, B4-UPVP-C011, Con000, B4-UPVP-C006 | 100% | 2017-09-19 | 2017-10-05 |  |  | Concrete Barrier [6220 m] |
| B4-UPVP-C006 |  | Installation of Joinery Works |  | 14.06d | 2017-08-27 A | 2017-10-14 A | RM-AC-003, B4-UPVP-C003 SS, B4-UPVP-C005, B4-UPVP-PR100 FF, RM-SA-003, Con000 | 100% | 2017-09-14 | 2017-10-01 |  |  | Concrete Barrier [7888 m] |
| B4-UPVP-C011 |  | Installation of Doors & Ironmongery |  | 7d | 2017-09-13 A | 2017-11-20 A | B4-UPVP-C006, RM-SA-003, B4-UPVP-C013, Con000, B4-UPVP-PR260, B4-UPVP-C003 | 100% | 2017-10-16 | 2017-10-24 |  |  | Concrete Barrier [5216 m] |
| B4-UPVP-C005 |  | Installation of Timber Flooring |  | 14.06d | 2017-09-21 A | 2017-10-05 A | B4-UPVP-PR110, Con000, RM-SA-003, RM-AC-003, B4-UPVP-C004 | 100% | 2017-09-21 | 2017-10-08 |  |  | Concrete Barrier [17074 m] |
| B4-UPVP-C008 |  | Installation of Glazing Works |  | 21.11d | 2017-10-17 A | 2017-12-02 A | RM-SA-003, B4-UPVP-C005, B4-UPVP-C006, B4-UPVP-PR130, Con000 | 100% | 2017-11-09 | 2017-12-04 |  |  | Concrete Barrier [2000 m] |
| B4-UPVP-C013 |  | Fianl Coat of Paint |  | 30d | 2017-12-28 A | 2018-01-22 A | B4-UPVP-C003 | 100% | 2017-12-28 | 2018-01-31 |  |  | Concrete Barrier [5272 m] |
| B4-UPVP-C010 |  | Installation of Light Fittings |  | 14.06d | 2018-01-18 A | 2018-01-23 A | B4-UPVP-C005, RM-SA-003, Con000 | 100% | 2018-01-18 | 2018-02-04 |  |  | Concrete Barrier [1200 m] |
| B4-UPVP-C012 |  | FF&E |  | 6.94d | 2018-02-01 A | 2018-02-08 A | Con000, B4-UPVP-C007, B4-UPVP-C008, RM-SA-003, B4-UPVP-C005, B4-UPVP-C006, B4-UPVP-C013, B4-UPVP-C003 | 100% |  |  |  |  | Concrete Barrier [3500 m] |
| B4-UPVP-S013 |  | Snagging and De-Snagging |  | 14.06d | 2018-04-26 | 2018-05-13 | Con000, B4-UPVP-C003, B4-UPVP-C007, B4-UPVP-C012, RM-SA-003, B4-UPVP-C013, B4-UPVP-C005, B4-UPVP-C006, B4-UPVP-C009, B4-UPVP-C010, B4-UPVP-C011 |  |  |  | -386.06d | 0d | Concrete Barrier |

| ID | WBS | Activity | Type | Duration | Start | Finish | Predecessors | Complete | Planned start | Planned finish | Total float | Free float | Resources |
| --- | --- | --- | --- | --- | --- | --- | --- | --- | --- | --- | --- | --- | --- |
|  | 4 | **Bill 5-UP-SAFE DEPOSIT** |  |  | 2016-09-25 | 2018-05-03 |  |  |  |  |  |  |  |
| B5-UPSD-1stP001 |  | MEP 1st , 2nd Fix and Wall System | milestone | 0d | 2016-09-25 A | 2016-09-25 A | RM-SA-004 | 100% | 2016-12-15 | 2016-12-15 |  |  |  |
| B5-UPSD-C011 |  | Clearance process for Measurements , Framing&Enabling Works |  | 4.94d | 2016-09-25 A | 2016-09-26 A | B5-UPSD-1stP001 | 100% | 2016-10-03 | 2016-10-08 |  |  | Concrete Barrier |
| B5-UPSD-C021 |  | Measurements , Framing & Enabling Works |  | 14d | 2016-09-27 A | 2016-12-15 A | B5-UPSD-C011 | 100% | 2016-10-09 | 2016-10-24 |  |  | Concrete Barrier [2000 m] |
| B5-UPSD-C001 |  | Installation of Celling System |  | 21d | 2016-09-28 A | 2016-12-15 A | B5-UPSD-1stP001, Con000, B5-UPSD-C021, RM-SA-004 | 100% | 2016-10-25 | 2016-11-17 |  |  | Concrete Barrier [5926 m] |
| B5-UPSD-C003 |  | 1st Coat of Paint |  | 30d | 2016-10-10 A | 2017-11-25 A | RM-SA-004, Con000, B5-UPSD-3rdP003 | 100% | 2016-12-27 | 2017-01-31 |  |  | Concrete Barrier [581 m] |
| B5-UPSD-2ndP002 |  | MEP Ceiling Closure Clearance |  | 7d | 2017-01-18 A | 2017-01-26 A | RM-SA-004, B5-UPSD-C001 | 100% | 2017-03-12 | 2017-03-19 |  |  | Concrete Barrier |
| B5-UPSD-C002 |  | Ceiling Closure |  | 21d | 2017-01-29 A | 2017-04-09 A | B5-UPSD-2ndP002, RM-SA-004, Con000, B5-UPSD-PR180 FF+14d | 100% | 2017-03-21 | 2017-04-13 |  |  | Concrete Barrier [5926 m] |
| B5-UPSD-C004 |  | Installation of Wooden wall panelling |  | 14d | 2017-05-09 A | 2017-09-23 A | Con000, RM-AC-004, B5-UPSD-C003 SS, B5-UPSD-PR100 FF+7d, RM-SA-004 | 100% | 2017-07-12 | 2017-07-27 |  |  | Concrete Barrier [9198 m] |
| B5-UPSD-C005 |  | Installation of Joinery Works |  | 14d | 2017-07-02 A | 2017-10-11 A | RM-AC-004, B5-UPSD-PR100, Con000, B5-UPSD-C007, RM-SA-004, B5-UPSD-C003 SS+3d | 100% | 2017-08-14 | 2017-08-30 |  |  | Concrete Barrier [9572 m] |
| B5-UPSD-3rdP003 |  | Flooring (by others) |  | 7d | 2017-07-12 A | 2017-08-05 A | RM-SA-004, B5-UPSD-C002 | 100% | 2017-08-30 | 2017-09-06 |  |  | Concrete Barrier |
| B5-UPSD-C007 |  | Installation of Doors & Ironmongery |  | 6.89d | 2017-08-29 A | 2017-10-17 A | RM-SA-004, Con000, RM-AC-004, B5-UPSD-C003, B5-UPSD-C004, B5-UPSD-PR260 | 100% | 2017-09-25 | 2017-10-02 |  |  | Concrete Barrier [5642 m] |
| B5-UPSD-C013 |  | Fianl Coat of Paint |  | 30d | 2017-12-09 A | 2018-02-05 A | B5-UPSD-C003, B5-UPSD-C006 | 100% | 2017-12-24 | 2018-01-28 |  |  | Concrete Barrier [581 m] |
| B5-UPSD-C006 |  | Installation of Light Fittings |  | 14.11d | 2018-02-01 A | 2018-02-26 A | Con000, RM-SA-004, B5-UPSD-C003 | 100% | 2018-02-01 | 2018-02-18 |  |  | Concrete Barrier [414 m] |
| B5-UPSD-C008 |  | FF&E |  | 2.94d | 2018-02-11 A | 2018-02-14 A | Con000, B5-UPSD-C003, B5-UPSD-C013, B5-UPSD-C004, RM-SA-004, B5-UPSD-C005 | 100% | 2018-02-17 | 2018-02-19 |  |  | Concrete Barrier [269 m] |
| B5-UPSD-S009 |  | Snagging and De-Snagging |  | 7d | 2018-04-26 | 2018-05-03 | RM-SA-004, B5-UPSD-C008, B5-UPSD-C013, Con000, B5-UPSD-C006, B5-UPSD-C007 |  |  |  | -379d | 0d | Concrete Barrier |
|  | 5 | **Bill 6-UP-HOTEL LIFT LOBBY** |  |  | 2016-10-01 | 2018-05-13 |  |  |  |  |  |  |  |
| B5-UPSD-C21 |  | Clearance process for Measurements , Framing&Enabling Works |  | 5d | 2016-10-01 A | 2016-10-03 A | B6-UPHLL-1stP001 | 100% | 2016-12-15 | 2016-12-20 |  |  | Concrete Barrier |
| B6-UPHLL-1stP001 |  | MEP 1st , 2nd Fix and Wall System | milestone | 0d | 2016-10-01 A | 2016-10-01 A | RM-SA-005 | 100% | 2016-12-15 | 2016-12-15 |  |  |  |
| B5-UPSD-C31 |  | Measurements , Framing & Enabling Works |  | 14d | 2016-10-04 A | 2017-03-01 A | B5-UPSD-C21 | 100% | 2016-12-21 | 2017-01-05 |  |  | Concrete Barrier [2000 m] |
| B6-UPHLL-C001 |  | Installation of Celling System |  | 27.94d | 2016-10-22 A | 2017-03-16 A | Con000, B6-UPHLL-1stP001, RM-SA-005, B5-UPSD-C31 | 100% | 2017-01-07 | 2017-02-07 |  |  | Concrete Barrier [5411 m] |
| B6-UPHLL-3rdP003 |  | Flooring (by others) |  | 14d | 2017-01-04 A | 2017-01-11 A | RM-SA-005, B6-UPHLL-2ndP002 | 100% | 2017-04-08 | 2017-04-24 |  |  | Concrete Barrier |
| B6-UPHLL-C002 |  | Ceiling Closure |  | 28d | 2017-04-11 A | 2017-05-15 A | B6-UPHLL-PR180, B6-UPHLL-PR140 FF+2d, RM-SA-005, B6-UPHLL-3rdP003, Con000, B6-UPHLL-2ndP002 | 100% | 2017-05-21 | 2017-06-21 |  |  | Concrete Barrier [5411 m] |
| B6-UPHLL-2ndP002 |  | MEP Ceiling Closure Clearance |  | 7d | 2017-05-04 A | 2017-05-06 A | RM-SA-005, B6-UPHLL-C001 | 100% | 2017-05-04 | 2017-05-11 |  |  | Concrete Barrier |
| B6-UPHLL-C004 |  | Installation of Mirror |  | 7d | 2017-09-21 A | 2017-10-12 A | B6-UPHLL-PR130, RM-AC-005, Con000, B6-UPHLL-C003, RM-SA-005 | 100% | 2017-10-09 | 2017-10-16 |  |  | Concrete Barrier [5384 m] |
| B6-UPHLL-C003 |  | Installation of Light Fittings |  | 13.94d | 2018-01-18 A | 2018-02-24 A | B6-UPHLL-3rdP003, RM-SA-005, Con000, B6-UPHLL-C002 | 100% | 2018-01-18 | 2018-02-03 |  |  | Concrete Barrier [2208 m] |
| B6-UPHLL-C005 |  | FF&E |  | 7.11d | 2018-02-10 A | 2018-02-14 A | RM-AC-006, Con000, B6-UPHLL-C004, RM-SA-005 | 100% | 2018-02-15 | 2018-02-25 |  |  | Concrete Barrier [33177 m] |
| B6-UPHLL-S006 |  | Snagging and De-Snagging |  | 14.11d | 2018-04-26 | 2018-05-13 | RM-SA-005, Con000, B6-UPHLL-C005 |  |  |  | -386.11d | 0d | Concrete Barrier |

| ID | WBS | Activity | Type | Duration | Start | Finish | Predecessors | Complete | Planned start | Planned finish | Total float | Free float | Calendar | Resources |
| --- | --- | --- | --- | --- | --- | --- | --- | --- | --- | --- | --- | --- | --- | --- |
|  | 6 | **Bill 7-UP-RESIDENCE'S LIFT LOBBY** |  |  | 2016-10-01 | 2018-05-13 |  |  |  |  |  |  |  |  |
| B7-UPRLL-1stP001 |  | MEP 1st , 2nd Fix and Wall System | milestone | 0d | 2016-10-01 A | 2016-10-01 A | RM-SA-006 | 100% | 2016-12-15 | 2016-12-15 |  |  |  |  |
| B5-UPSD-C41 |  | Clearance process for Measurements , Framing&Enabling Works |  | 5d | 2016-10-02 A | 2016-10-03 A | B7-UPRLL-1stP001 | 100% | 2016-12-15 | 2016-12-20 |  |  |  | Concrete Barrier |
| B5-UPSD-C51 |  | Measurements , Framing & Enabling Works |  | 14d | 2016-10-04 A | 2017-03-26 A | B5-UPSD-C41 | 100% | 2016-12-21 | 2017-01-05 |  |  |  | Concrete Barrier [2000 m] |
| B7-UPRLL-C001 |  | Installation of Celling System |  | 28d | 2016-12-20 A | 2017-02-09 A | Con000, RM-SA-006, B7-UPRLL-1stP001, B5-UPSD-C51 | 100% | 2017-01-02 | 2017-02-02 |  |  |  | Concrete Barrier [23069 m] |
| B7-UPRLL-2ndP002 |  | MEP Ceiling Closure Clearance |  | 7d | 2017-02-08 A | 2017-02-25 A | B7-UPRLL-C001, RM-SA-006 | 100% | 2017-03-14 | 2017-03-22 |  |  |  | Concrete Barrier |
| B7-UPRLL-C002 |  | Ceiling Closure |  | 28d | 2017-02-26 A | 2017-04-18 A | B7-UPRLL-2ndP002, Con000, RM-SA-006, B7-UPRLL-SDA160 FF, B7-UPRLL-PR180 FF+7d | 100% | 2017-03-22 | 2017-04-24 |  |  |  | Concrete Barrier [23069 m] |
| B7-UPRLL-3rdP003 |  | Flooring (by others) |  | 7d | 2017-03-02 A | 2017-03-25 A | B7-UPRLL-C002, RM-SA-006 | 100% | 2017-04-27 | 2017-05-06 |  |  |  | Concrete Barrier |
| B7-UPRLL-C004 |  | Installation of Wooden wall panelling |  | 21d | 2017-04-19 A | 2017-08-12 A | Con000, B7-UPRLL-C002, B7-UPRLL-SDA130, RM-SA-006, B7-UPRLL-SDA160, RM-AC-006 | 100% | 2017-05-27 | 2017-06-20 |  |  |  | Concrete Barrier [122682 m] |
| B7-UPRLL-C012 |  | 1st Coat of Paint |  | 30d | 2017-05-01 A | 2017-08-31 A | B7-UPRLL-C002 | 100% | 2017-06-03 | 2017-07-03 |  |  | 7x24 | Concrete Barrier [3507 m] |
| B7-UPRLL-C005 |  | Installation of Steel wall panelling |  | 15.11d | 2017-09-21 A | 2017-10-12 A | RM-SA-006, Con000, B7-UPRLL-SDA160, B7-UPRLL-C012 | 100% | 2017-09-21 | 2017-10-09 |  |  |  | Concrete Barrier [237202 m] |
| B7-UPRLL-C006 |  | Apply of Sibu Finish |  | 15.11d | 2017-10-05 A | 2017-12-18 A | B7-UPRLL-C012, B7-UPRLL-SDA160, Con000, RM-SA-006, RM-AC-006 | 100% | 2017-10-05 | 2017-10-23 |  |  |  | Concrete Barrier [169359 m] |
| B7-UPRLL-C003 |  | Final Coat of Paint |  | 30d | 2017-12-28 A | 2018-01-22 A | B7-UPRLL-SDA130, B7-UPRLL-3rdP003, Con000, B7-UPRLL-SDA160, B7-UPRLL-C012, RM-SA-006 | 100% | 2017-12-28 | 2018-01-31 |  |  |  | Concrete Barrier [3507 m] |
| B7-UPRLL-C007 |  | Installation of Light Fittings |  | 21d | 2018-01-18 A | 2018-02-27 A | B7-UPRLL-C004, Con000, B7-UPRLL-C005, B7-UPRLL-C006, RM-SA-006 | 100% | 2018-01-18 | 2018-02-11 |  |  |  | Concrete Barrier [2196 m] |
| B7-UPRLL-C008 |  | FF&E |  | 7d | 2018-02-08 A | 2018-02-15 A | RM-SA-006, B7-UPRLL-SDA170, RM-AC-006, Con000, B7-UPRLL-C003 | 100% |  |  |  |  |  | Concrete Barrier [2000 m] |
| B7-UPRLL-S009 |  | Snagging and De-Snagging |  | 14.11d | 2018-04-26 | 2018-05-13 | Con000, B7-UPRLL-C007, RM-SA-006, B7-UPRLL-C008 |  |  |  | -386.11d | 0d |  | Concrete Barrier |
|  | 7 | **Bill 8-UP-FRONT OFFICE** |  |  | 2016-09-25 | 2018-05-03 |  |  |  |  |  |  |  |  |
| B8-UPFO-1stP001 |  | MEP 1st , 2nd Fix and Wall System | milestone | 0d | 2016-09-25 A | 2016-09-25 A | RM-SA-007 | 100% | 2016-12-25 | 2016-12-25 |  |  |  |  |
| B5-UPSD-C61 |  | Clearance process for Measurements , Framing&Enabling Works |  | 4.94d | 2016-09-26 A | 2016-10-03 A | B8-UPFO-1stP001 | 100% | 2016-10-03 | 2016-10-08 |  |  |  | Concrete Barrier |
| B8-UPFO-C001 |  | Installation of Celling System |  | 21d | 2016-09-27 A | 2016-12-15 A | B5-UPSD-C71, RM-SA-007, B8-UPFO-1stP001, Con000 | 100% | 2016-10-25 | 2016-11-17 |  |  |  | Concrete Barrier [19324 m] |
| B5-UPSD-C71 |  | Measurements , Framing & Enabling Works |  | 14d | 2016-10-04 A | 2016-10-25 A | B5-UPSD-C61 | 100% | 2016-10-09 | 2016-10-24 |  |  |  | Concrete Barrier [2000 m] |
| B8-UPFO-C003 |  | 1st Coat of Paint |  | 30d | 2016-10-10 A | 2017-07-16 A | B8-UPFO-C002, RM-SA-007, Con000 | 100% | 2016-11-22 | 2016-12-29 |  |  |  | Concrete Barrier [1647 m] |
| B8-UPFO-2ndP002 |  | MEP Ceiling Closure Clearance |  | 7d | 2017-02-07 A | 2017-02-22 A | B8-UPFO-C001, RM-SA-007 | 100% | 2017-03-12 | 2017-03-19 |  |  |  | Concrete Barrier |
| B8-UPFO-C002 |  | Ceiling Closure |  | 21d | 2017-02-23 A | 2017-05-17 A | Con000, RM-SA-007, B8-UPFO-2ndP002, B8-UPFO-PR180 | 100% | 2017-03-27 | 2017-04-19 |  |  |  | Concrete Barrier [19324 m] |
| B8-UPFO-C004 |  | Installation of Doors & Ironmongery |  | 7d | 2017-06-27 A | 2017-10-17 A | RM-AC-007, Con000, B8-UPFO-C003, B8-UPFO-PR260, RM-SA-007 | 100% | 2017-08-05 | 2017-08-13 |  |  |  | Concrete Barrier [5786 m] |
| B8-UPFO-C014 |  | Installation of Joinery Works |  | 14.06d | 2017-07-01 A | 2017-08-16 A | B8-UPFO-C004, B8-UPFO-PR100 FF+7d, RM-AC-007, B8-UPFO-C003 | 100% | 2017-08-12 | 2017-08-28 |  |  |  | Concrete Barrier [2025 m] |
| B8-UPFO-C005 |  | Installation of Carpet |  | 7.06d | 2017-09-18 A | 2017-11-23 A | RM-SA-007, B8-UPFO-PR200, B8-UPFO-C014, B8-UPFO-C013, B8-UPFO-C004, Con000 | 100% | 2017-11-04 | 2017-11-12 |  |  |  | Concrete Barrier [37100 m] |
| B8-UPFO-C013 |  | Final Coat of Paint |  | 30d | 2017-12-28 A | 2018-02-05 A | B8-UPFO-C004, B8-UPFO-C003 | 100% | 2017-12-28 | 2018-01-31 |  |  |  | Concrete Barrier [1647 m] |
| B8-UPFO-C006 |  | FF&E |  | 3.11d | 2018-02-08 A | 2018-02-12 A | RM-SA-007, Con000, B8-UPFO-C013, RM-AC-008, B8-UPFO-C004, B8-UPFO-SDA230, B8-UPFO-C005 | 100% |  |  |  |  |  | Concrete Barrier [2000 m] |
| B8-UPFO-S007 |  | Snagging and De-Snagging |  | 6.94d | 2018-04-26 | 2018-05-03 | RM-SA-007, Con000, B8-UPFO-C005, B8-UPFO-C006, B8-UPFO-C013, B8-UPFO-C014 |  |  |  | -378.94d | 0d |  | Concrete Barrier |

| ID | WBS | Activity | Type | Duration | Start | Finish | Predecessors | Complete | Remaining | Planned start | Planned finish | Total float | Free float | Calendar | Resources |
| --- | --- | --- | --- | --- | --- | --- | --- | --- | --- | --- | --- | --- | --- | --- | --- |
|  | 8 | **Bill 9-UP-CHOCOLATE BOUTIQUE** |  |  | 2017-08-17 | 2018-07-23 |  |  |  |  |  |  |  |  |  |
| B5-UPSD-C81 |  | Clearance process for Measurements , Framing&Enabling Works |  | 5d | 2017-08-17 A | 2017-08-20 A | B9-UPCB-1stP001 | 100% |  | 2017-08-17 | 2017-08-22 |  |  |  | Concrete Barrier |
| B9-UPCB-1stP001 |  | MEP 1st , 2nd Fix and Wall System | milestone | 0d | 2017-08-17 A | 2017-08-17 A | RM-SA-008 | 100% |  |  |  |  |  |  |  |
| B5-UPSD-C91 |  | Measurements , Framing & Enabling Works |  | 14d | 2017-08-19 A | 2017-10-09 A | B5-UPSD-C81 | 100% |  | 2017-08-23 | 2017-09-07 |  |  |  | Concrete Barrier [2000 m] |
| B9-UPCB-2ndP002 |  | MEP Ceiling Closure Clearance |  | 7d | 2017-09-10 A | 2017-09-10 A | RM-SA-008, B9-UPCB-C001 | 100% |  | 2017-11-07 | 2017-11-14 |  |  |  | Concrete Barrier |
| B9-UPCB-C008 |  | Installation of Joinery Works |  | 14d | 2017-10-09 A | 2018-06-11 | RM-AC-008, RM-SA-008, B9-UPCB-PR100, Con000, B9-UPCB-C004 SS+3d | 85% | 2.07d | 2018-01-15 | 2018-01-31 | -422.62d | 0d |  | Concrete Barrier [32170 m] |
| B9-UPCB-C001 |  | Installation of Celling System |  | 21d | 2017-12-14 A | 2018-01-21 A | B9-UPCB-1stP001, Con000, B5-UPSD-C91, RM-SA-008 | 100% |  | 2017-12-14 | 2018-01-07 |  |  |  | Concrete Barrier [5978 m] |
| B9-UPCB-C002 |  | Ceiling Closure |  | 21d | 2018-03-22 A | 2018-04-01 A | Con000, B9-UPCB-2ndP002, RM-SA-008, B9-UPCB-PR180 | 100% |  | 2018-03-22 | 2018-04-15 |  |  |  | Concrete Barrier [29672 m] |
| B9-UPCB-C003 |  | Installation of Wall Tiling |  | 9.89d | 2018-04-26 | 2018-05-07 | B9-UPCB-PR170, Con000, B9-UPCB-C002, RM-SA-008 |  |  |  |  | -433.22d | 0d |  | Concrete Barrier [1400 m] |
| B9-UPCB-C007 |  | Installation of Metal panelling |  | 13.78d | 2018-05-05 | 2018-05-20 | RM-SA-008, B9-UPCB-C002, B9-UPCB-PR140, Con000 |  |  |  |  | -447.89d | 0d |  | Concrete Barrier [43415 m] |
| B9-UPCB-3rdP003 |  | Flooring (by others) |  | 10d | 2018-05-07 | 2018-05-19 | B9-UPCB-C003, RM-SA-008 |  |  |  |  | -433.22d | 0d |  | Concrete Barrier |
| B9-UPCB-C014 |  | Apply of Sibu Finish |  | 13.78d | 2018-05-19 | 2018-06-04 | Con000, B9-UPCB-3rdP003, RM-SA-008, B9-UPCB-C003 |  |  |  |  | -412.67d | 35.22d |  | Concrete Barrier [74024 m] |
| B9-UPCB-C005 |  | Installation of Metal Skirting |  | 3d | 2018-05-20 | 2018-05-23 | RM-SA-008, B9-UPCB-C007, B9-UPCB-PR140 FF+5d, Con000 |  |  |  |  | -406.78d | 24.44d |  | Concrete Barrier [495 m] |
| B9-UPCB-C013 |  | Aluminium Works |  | 13.78d | 2018-05-20 | 2018-06-05 | RM-SA-008, Con000, B9-UPCB-C007, B9-UPCB-PR140 FF+5d |  |  |  |  | -447.89d | 0d |  | Concrete Barrier [7920 m] |
| B9-UPCB-C004 |  | Paint Works |  | 20.56d | 2018-06-05 | 2018-06-30 | RM-SA-008, B9-UPCB-C013, B9-UPCB-3rdP003, Con000, B9-UPCB-PR120 |  |  |  |  | -447.89d | 0d |  | Concrete Barrier [8904 m] |
| B9-UPCB-C006 |  | Installation of Wooden wall panelling |  | 13.67d | 2018-06-05 | 2018-06-21 | B9-UPCB-C004 SS, Con000, B9-UPCB-PR100 FF+7d, RM-SA-008, RM-AC-008 |  |  |  |  | -431.22d | 0d |  | Concrete Barrier [2000 m] |
| B9-UPCB-C011 |  | Installation of Doors & Ironmongery |  | 2d | 2018-06-11 | 2018-06-13 | Con000, RM-SA-008, B9-UPCB-C008, RM-AC-008 |  |  |  |  | -420.62d | 27.27d |  | Concrete Barrier [5176 m] |
| B9-UPCB-C009 |  | Installation of Mirror |  | 2d | 2018-06-21 | 2018-06-24 | B9-UPCB-C007, B9-UPCB-C008, B9-UPCB-C005, B9-UPCB-C006, B9-UPCB-PR130, RM-SA-008, Con000 |  |  |  |  | -431.22d | 4.89d |  | Concrete Barrier [2000 m] |
| B9-UPCB-C010 |  | Installation of Light Fittings |  | 13.78d | 2018-06-30 | 2018-07-15 | RM-SA-008, Con000, B9-UPCB-C004 |  |  |  |  | -447.89d | 0d |  | Concrete Barrier [1872 m] |
| B9-UPCB-C012 |  | FF&E |  | 2d | 2018-06-30 | 2018-07-02 | B9-UPCB-C006, B9-UPCB-C009, B9-UPCB-C004, Con000, RM-SA-008, B9-UPCB-C013, B9-UPCB-C007, B9-UPCB-C008 |  |  |  |  | -436.11d | 11.78d |  | Concrete Barrier [7084 m] |
| B9-UPCB-S13 |  | Snagging and De-Snagging |  | 7d | 2018-07-15 | 2018-07-23 | B9-UPCB-C013, Con000, B9-UPCB-C011, RM-SA-008, B9-UPCB-C010, B9-UPCB-C012, B9-UPCB-C014 |  |  |  |  | -447.89d | 0d |  | Concrete Barrier |
|  | 9 | **Bill 10-UP-RETAIL** |  |  | 2016-10-09 | 2018-05-05 |  |  |  |  |  |  |  |  |  |
| B10-UPRT-1stP001 |  | MEP 1st , 2nd Fix and Wall System | milestone | 0d | 2016-10-09 A | 2016-10-09 A | RM-SA-009 | 100% |  | 2016-12-15 | 2016-12-15 |  |  |  |  |
| B10-UPRT-C001 |  | Paint Works |  | 29.94d | 2016-10-10 A | 2017-09-25 A | B10-UPRT-PR120 FF+3d, B10-UPRT-1stP001, RM-SA-009, B10-UPRT-C002 FF+7d, Con000, B5-UPSD-C111, B10-UPRT-3rdP003 | 100% |  | 2017-01-14 | 2017-02-16 |  |  |  | Concrete Barrier [22179 m] |
| B10-UPRT-3rdP003 |  | Flooring (by others) |  | 21d | 2016-12-19 A | 2017-01-19 A | B10-UPRT-1stP001, RM-SA-009, B10-UPRT-3rdP013 | 100% |  | 2016-12-25 | 2017-01-17 |  |  |  | Concrete Barrier |
| B5-UPSD-C101 |  | Clearance process for Measurements , Framing&Enabling Works |  | 5d | 2016-12-19 A | 2017-01-22 A | B10-UPRT-3rdP003, B10-UPRT-1stP001 | 100% |  | 2017-01-18 | 2017-01-23 |  |  |  | Concrete Barrier [5000 m] |
| B5-UPSD-C111 |  | Measurements , Framing & Enabling Works |  | 13.99d | 2017-01-22 A | 2017-01-25 A | B5-UPSD-C101 | 100% |  | 2017-03-04 | 2017-03-20 |  |  |  | Concrete Barrier [5502 m] |
| B10-UPRT-3rdP013 |  | Celling System |  | 35d | 2017-01-24 A | 2017-07-21 A | B10-UPRT-1stP001 | 100% |  | 2017-01-22 | 2017-02-26 |  |  | 7x24 | Concrete Barrier [15000 m] |
| B10-UPRT-C002 |  | Installation of Wall Tiling |  | 27.94d | 2017-08-19 A | 2017-08-24 A | B5-UPSD-C111, B10-UPRT-3rdP003, Con000, B10-UPRT-1stP001, B10-UPRT-PR170 FF+5d, RM-SA-009 | 100% |  | 2017-08-19 | 2017-09-19 |  |  |  | Concrete Barrier [8508 m] |
| B10-UPRT-C004 |  | Aluminium Works |  | 21d | 2017-12-07 A | 2018-03-10 A | Con000, B10-UPRT-C001, RM-SA-009 | 100% |  | 2017-12-07 | 2017-12-31 |  |  |  | Concrete Barrier [7196 m] |
| B10-UPRT-C005 |  | Installation of Glazing Works |  | 21.06d | 2017-12-26 A | 2018-03-12 A | B10-UPRT-C002, RM-SA-009, Con000, RM-AC-009, B10-UPRT-PR130 | 100% |  | 2017-12-26 | 2018-01-20 |  |  |  | Concrete Barrier [12000 m] |
| B10-UPRT-C006 |  | FF&E |  | 7d | 2018-02-11 A | 2018-03-13 A | Con000, B10-UPRT-C005, B10-UPRT-C004, RM-SA-009, B10-UPRT-SDA170, B10-UPRT-C002, B10-UPRT-C001, B10-UPRT-C003 | 100% |  | 2018-03-06 | 2018-03-14 |  |  |  | Concrete Barrier [2348 m] |
| B10-UPRT-C003 |  | Installation of Light Fittings |  | 15d | 2018-03-04 A | 2018-03-13 A | RM-SA-009, Con000, B10-UPRT-C002, B10-UPRT-C004 | 100% |  | 2018-03-04 | 2018-03-21 |  |  |  | Concrete Barrier [6500 m] |
| B10-UPRT-S007 |  | Snagging and De-Snagging |  | 7.06d | 2018-04-26 | 2018-05-05 | B10-UPRT-C004, B10-UPRT-C003, B10-UPRT-C001, B10-UPRT-C006, RM-SA-009, Con000, B10-UPRT-C005 |  |  |  |  | -379.06d | 0d |  | Concrete Barrier |

| ID | WBS | Activity | Type | Duration | Start | Finish | Predecessors | Complete | Planned start | Planned finish | Total float | Free float | Resources |
| --- | --- | --- | --- | --- | --- | --- | --- | --- | --- | --- | --- | --- | --- |
|  | 10 | **Bill 11-UP-REST ROOMS** |  |  | 2016-11-08 | 2018-05-03 |  |  |  |  |  |  |  |
| B11-UPRR-1stP001 |  | MEP 1st , 2nd Fix and Wall System | milestone | 0d | 2016-11-08 A | 2016-11-08 A | RM-SA-010 | 100% | 2016-12-15 | 2016-12-15 |  |  |  |
| B5-UPSD-C121 |  | Clearance process for Measurements , Framing&Enabling Works |  | 5d | 2016-11-10 A | 2017-02-08 A | B11-UPRR-1stP001 | 100% | 2016-12-15 | 2016-12-20 |  |  | Concrete Barrier [2000 m] |
| B5-UPSD-C131 |  | Measurements , Framing & Enabling Works |  | 14d | 2016-11-12 A | 2017-03-12 A | B5-UPSD-C121, B5-UPSD-C121 FF, B5-UPSD-C121 SS | 100% | 2016-12-21 | 2017-01-05 |  |  | Concrete Barrier [2000 m] |
| B11-UPRR-C001 |  | Installation of Celling System |  | 30d | 2016-12-20 A | 2017-03-19 A | B11-UPRR-1stP001, RM-SA-010, Con000, B5-UPSD-C131 | 100% | 2017-01-09 | 2017-02-13 |  |  | Concrete Barrier [16492 m] |
| B11-UPRR-C007 |  | Installation of Wall Covering |  | 7d | 2017-03-09 A | 2017-12-28 A | B11-UPRR-C010, RM-AC-010, B11-UPRR-PR160, RM-SA-010, Con000 | 100% | 2017-07-05 | 2017-07-12 |  |  | Concrete Barrier [6646 m] |
| B11-UPRR-C002 |  | Ceiling Closure |  | 29.94d | 2017-04-08 A | 2017-05-11 A | B11-UPRR-PR180, RM-SA-010, B11-UPRR-2ndP002, Con000 | 100% | 2017-05-06 | 2017-06-08 |  |  | Concrete Barrier [16492 m] |
| B11-UPRR-2ndP002 |  | MEP Ceiling Closure Clearance |  | 7d | 2017-05-04 A | 2017-05-06 A | B11-UPRR-C001, RM-SA-010 | 100% | 2017-05-04 | 2017-05-11 |  |  | Concrete Barrier |
| B11-UPRR-C003 |  | Paint Works |  | 30d | 2017-05-08 A | 2017-12-23 A | B11-UPRR3rdP003, RM-SA-010, Con000 | 100% | 2017-06-22 | 2017-07-27 |  |  | Concrete Barrier [6105 m] |
| B11-UPRR-C005 |  | Installation of Doors & Ironmongery |  | 7d | 2017-06-27 A | 2017-11-06 A | B11-UPRR-C008, B11-UPRR-PR260, RM-AC-010, Con000, RM-SA-010 | 100% | 2017-10-03 | 2017-10-11 |  |  | Concrete Barrier [87876 m] |
| B11-UPRR3rdP003 |  | Flooring (by others) |  | 14d | 2017-08-15 A | 2017-09-23 A | B11-UPRR-C002, RM-SA-010 | 100% | 2017-08-30 | 2017-09-14 |  |  | Concrete Barrier [10754 m] |
| B11-UPRR-C010 |  | Installation of Joinery Works |  | 14.06d | 2017-08-23 A | 2017-12-21 A | B11-UPRR-C003 SS, B11-UPRR-PR100 FF+7d, RM-AC-010, RM-SA-010, Con000 | 100% | 2017-09-16 | 2017-10-02 |  |  | Concrete Barrier [64080 m] |
| B11-UPRR-C008 |  | Installation of Glazing Works |  | 13.89d | 2017-11-20 A | 2018-01-18 A | B11-UPRR-C010, B11-UPRR-C004, B11-UPRR-PR130, RM-SA-010, Con000 | 100% | 2017-12-03 | 2017-12-18 |  |  | Concrete Barrier [20016 m] |
| B11-UPRR-C004 |  | Installation of Metal Skirting |  | 7.06d | 2018-01-09 A | 2018-02-07 A | Con000, B11-UPRR-C007, RM-SA-010, B11-UPRR-PR140 | 100% | 2018-01-13 | 2018-01-21 |  |  | Concrete Barrier [15590 m] |
| B11-UPRR-C009 |  | Installation of Sanitary Ware |  | 7d | 2018-01-15 A | 2018-03-08 A | Con000, RM-SA-010, B11-UPRR-C008, B11-UPRR-PR270 | 100% | 2018-04-17 | 2018-04-25 |  |  | Concrete Barrier [16549 m] |
| B11-UPRR-C006 |  | Installation of Light Fittings |  | 14d | 2018-01-24 A | 2018-03-07 A | B11-UPRR-C008, RM-SA-010, Con000 | 100% | 2018-01-30 | 2018-02-15 |  |  | Concrete Barrier [4326 m] |
| B11-UPRR-S011 |  | Snagging and De-Snagging |  | 6.89d | 2018-04-26 | 2018-05-03 | B11-UPRR-C006 FS-1d, B11-UPRR-C009, Con000, RM-SA-010, B11-UPRR-C005 |  |  |  | -378.89d | 0d | Concrete Barrier |
|  | 11 | **Bill 12-UP-PRAYER ROOMS** |  |  | 2016-07-03 | 2018-05-03 |  |  |  |  |  |  |  |
| B12-UPPR-1stP001 |  | MEP 1st , 2nd Fix and Wall System | milestone | 0d | 2016-07-03 A | 2016-07-03 A | RM-SA-011 | 100% | 2016-12-15 | 2016-12-15 |  |  |  |
| B5-UPSD-C141 |  | Clearance process for Measurements , Framing&Enabling Works |  | 5d | 2016-07-04 A | 2016-09-15 A | B12-UPPR-1stP001 | 100% | 2016-09-18 | 2016-09-22 |  |  | Concrete Barrier |
| B12-UPPR-C001 |  | Installation of Celling System |  | 27.94d | 2016-09-18 A | 2016-09-29 A | Con000, B5-UPSD-C151, RM-SA-011, B12-UPPR-1stP001 | 100% | 2016-10-11 | 2016-11-12 |  |  | Concrete Barrier [3965 m] |
| B5-UPSD-C151 |  | Measurements , Framing & Enabling Works |  | 13.94d | 2016-09-18 A | 2016-09-25 A | B5-UPSD-C141, B5-UPSD-C141 FF, B5-UPSD-C141 SS | 100% | 2016-09-24 | 2016-10-10 |  |  | Concrete Barrier [2008 m] |
| B12-UPPR-C003 |  | Paint Works |  | 29.94d | 2016-10-10 A | 2017-12-25 A | B12-UPPR-3rdP003, RM-SA-011, Con000 | 100% | 2016-11-19 | 2016-12-25 |  |  | Concrete Barrier [20977 m] |
| B12-UPPR-C004 |  | Installation of Doors & Ironmongery |  | 7d | 2016-12-20 A | 2017-12-03 A | RM-AC-011, B12-UPPR-PR260, Con000, B12-UPPR-C003, RM-SA-011 | 100% | 2017-03-15 | 2017-03-23 |  |  | Concrete Barrier [1638 m] |
| B12-UPPR-C007 |  | Installation of Wall Covering |  | 7d | 2017-01-24 A | 2017-12-26 A | RM-AC-011, B12-UPPR-PR160, RM-SA-011, Con000, B12-UPPR-C003 | 100% | 2017-04-04 | 2017-04-11 |  |  | Concrete Barrier [58969 m] |
| B12-UPPR-2ndP002 |  | MEP Ceiling Closure Clearance |  | 7d | 2017-02-05 A | 2017-02-20 A | RM-SA-011, B12-UPPR-C001 | 100% | 2017-03-26 | 2017-04-02 |  |  | Concrete Barrier |
| B12-UPPR-C002 |  | Ceiling Closure |  | 21d | 2017-02-22 A | 2017-05-10 A | RM-SA-011, B12-UPPR-PR180 FF+14d, Con000, B12-UPPR-2ndP002 | 100% | 2017-04-03 | 2017-04-26 |  |  | Concrete Barrier [3965 m] |
| B12-UPPR-C008 |  | Installation of Carpet |  | 7.06d | 2017-10-04 A | 2017-12-28 A | B12-UPPR-C009, B12-UPPR-PR200, Con000, B12-UPPR-C005, B12-UPPR-C007, RM-SA-011, B12-UPPR-C006 | 100% | 2017-12-09 | 2017-12-17 |  |  | Concrete Barrier [23016 m] |
| B12-UPPR-3rdP003 |  | Flooring (by others) |  | 7d | 2017-10-18 A | 2017-11-05 A | RM-SA-011, B12-UPPR-C002 | 100% | 2017-11-16 | 2017-11-23 |  |  | Concrete Barrier |
| B12-UPPR-C009 |  | Installation of Joinery Works |  | 13.94d | 2017-11-21 A | 2018-01-04 A | B12-UPPR-C004, RM-SA-011, RM-AC-011, B12-UPPR-PR100 FF+5d, B12-UPPR-C006, Con000, B12-UPPR-C003 SS | 100% | 2018-01-01 | 2018-01-16 |  |  | Concrete Barrier [43336 m] |
| B12-UPPR-C006 |  | Installation of Timber Flooring |  | 13.94d | 2017-12-12 A | 2017-12-27 A | RM-AC-011, B12-UPPR-C003, Con000, RM-SA-011, B12-UPPR-C007, B12-UPPR-C005 | 100% | 2018-01-03 | 2018-01-18 |  |  | Concrete Barrier [4644 m] |
| B12-UPPR-C005 |  | Installation of Light Fittings |  | 14.11d | 2018-01-18 A | 2018-02-20 A | B12-UPPR-C003, RM-SA-011, Con000, B12-UPPR-C004 | 100% | 2018-01-18 | 2018-02-04 |  |  | Concrete Barrier [2112 m] |
| B12-UPPR-S010 |  | Snagging and De-Snagging |  | 7d | 2018-04-26 | 2018-05-03 | B12-UPPR-C008, Con000, B12-UPPR-C004, RM-SA-011, B12-UPPR-C003, B12-UPPR-C005 |  |  |  | -379d | 0d | Concrete Barrier |

| ID | WBS | Activity | Type | Duration | Start | Finish | Predecessors | Complete | Remaining | Planned start | Planned finish | Total float | Free float | Resources |
| --- | --- | --- | --- | --- | --- | --- | --- | --- | --- | --- | --- | --- | --- | --- |
|  | 12 | **Bill 13-UP-RESIDENCES LOBBY** |  |  | 2016-10-12 | 2018-05-03 |  |  |  |  |  |  |  |  |
| B13-UPRL-1stP001 |  | MEP 1st , 2nd Fix and Wall System | milestone | 0d | 2016-10-12 A | 2016-10-12 A | RM-SA-012 | 100% |  | 2016-12-15 | 2016-12-15 |  |  |  |
| B5-UPSD-C161 |  | Clearance process for Measurements , Framing&Enabling Works |  | 5d | 2016-10-13 A | 2016-11-08 A | B13-UPRL-1stP001 | 100% |  | 2016-12-15 | 2016-12-20 |  |  | Concrete Barrier |
| B5-UPSD-C171 |  | Measurements , Framing & Enabling Works |  | 14d | 2016-11-09 A | 2016-12-05 A | B5-UPSD-C161 SS, B5-UPSD-C161, B5-UPSD-C161 FF | 100% |  | 2016-12-21 | 2017-01-05 |  |  | Concrete Barrier [3000 m] |
| B13-UPRL-C001 |  | Installation of Celling System |  | 20.94d | 2016-12-06 A | 2017-01-19 A | RM-SA-012, Con000, B5-UPSD-C171, B13-UPRL-1stP001, B13-UPRL-1stP001 FF | 100% |  | 2017-01-07 | 2017-01-30 |  |  | Concrete Barrier [208105 m] |
| B13-UPRL-2ndP002 |  | MEP Ceiling Closure Clearance |  | 7d | 2017-03-01 A | 2017-03-11 A | RM-SA-012, B13-UPRL-C001 | 100% |  | 2017-03-14 | 2017-03-22 |  |  | Concrete Barrier |
| B13-UPRL-C002 |  | Ceiling Closure |  | 21d | 2017-03-12 A | 2017-05-28 A | Con000, B13-UPRL-2ndP002, RM-SA-012, B13-UPRL-PR180 | 100% |  | 2017-04-05 | 2017-04-30 |  |  | Concrete Barrier [208105 m] |
| B13-UPRL-3rdP003 |  | Flooring (by others) |  | 14d | 2017-05-01 A | 2017-05-30 A | B13-UPRL-C002, RM-SA-012 | 100% |  | 2017-06-12 | 2017-06-28 |  |  | Concrete Barrier |
| B13-UPRL-C004 |  | Installation of Wooden wall panelling |  | 13.94d | 2017-05-15 A | 2017-08-12 A | RM-AC-012, RM-SA-012, Con000, B13-UPRL-C003, B13-UPRL-PR100 | 100% |  | 2017-08-02 | 2017-08-19 |  |  | Concrete Barrier [219935 m] |
| B13-UPRL-C003 |  | Paint Works |  | 30d | 2017-05-17 A | 2018-01-06 A | RM-SA-012, Con000, B13-UPRL-3rdP003 | 100% |  | 2017-06-28 | 2017-08-02 |  |  | Concrete Barrier [21816 m] |
| B13-UPRL-C009 |  | Installation of Joinery Works |  | 15.11d | 2017-07-02 A | 2018-03-15 A | RM-SA-012, B13-UPRL-C004, B13-UPRL-PR100, RM-AC-012, Con000, B13-UPRL-C003 | 100% |  | 2017-08-01 | 2017-08-20 |  |  | Concrete Barrier [89308 m] |
| B13-UPRL-C007 |  | Installation of Metal panelling |  | 4.94d | 2017-08-08 A | 2018-01-11 A | Con000, B13-UPRL-PR140, RM-SA-012, B13-UPRL-C004 | 100% |  | 2017-10-09 | 2017-10-14 |  |  | Concrete Barrier [186930 m] |
| B13-UPRL-C005 |  | Installation of Mirror |  | 5d | 2017-09-20 A | 2018-01-23 A | B13-UPRL-C008, Con000, B13-UPRL-C007, B13-UPRL-C004, RM-AC-012, RM-SA-012 | 100% |  | 2017-11-02 | 2017-11-08 |  |  | Concrete Barrier [57460 m] |
| B13-UPRL-C008 |  | Aluminium Works |  | 5d | 2017-12-27 A | 2018-03-05 A | RM-SA-012, B13-UPRL-C007 SS+1d, Con000 | 100% |  | 2018-01-01 | 2018-01-07 |  |  | Concrete Barrier [63908 m] |
| B13-UPRL-C006 |  | Installation of Light Fittings |  | 15d | 2018-02-19 A | 2018-03-10 A | B13-UPRL-C005, Con000, RM-SA-012 | 100% |  | 2018-02-19 | 2018-03-08 |  |  | Concrete Barrier [40059 m] |
| B13-UPRL-S010 |  | Snagging and De-Snagging |  | 7d | 2018-04-26 | 2018-05-03 | Con000, B13-UPRL-C009, RM-SA-012, B13-UPRL-C006, B13-UPRL-C003 |  |  |  |  | -379d | 0d | Concrete Barrier |
|  | 15 | **Bill 20-UP-COFFEE BAR** |  |  | 2018-01-21 | 2018-08-01 |  |  |  |  |  |  |  |  |
| B20-UPCB-1stP001 |  | MEP 1st , 2nd Fix and Wall System | milestone | 0d | 2018-01-21 A | 2018-01-21 A | RM-SA-015 | 100% |  | 2018-02-15 | 2018-02-15 |  |  |  |
| B5-UPSD-C221 |  | Clearance process for Measurements , Framing&Enabling Works |  | 4.94d | 2018-04-02 A | 2018-05-10 | RM-SA-015, B20-UPCB-3rdP003, B20-UPCB-1stP001 | 85% | 0.73d | 2018-04-23 | 2018-04-28 | -384.26d | 71.1d | Concrete Barrier |
| B5-UPSD-C231 |  | Measurements , Framing & Enabling Works |  | 14d | 2018-04-04 A | 2018-04-12 A | B5-UPSD-C221 | 100% |  | 2018-04-29 | 2018-05-14 |  |  | Concrete Barrier [5000 m] |
| B20-UPCB-3rdP003 |  | Flooring (by others) |  | 21d | 2018-04-05 A | 2018-05-09 | RM-SA-015, B20-UPCB-1stP001 | 45% | 11.53d | 2018-04-05 | 2018-04-29 | -455.36d | 0d | Concrete Barrier |
| B20-UPCB-C002 |  | Installation of Timber Flooring |  | 27.44d | 2018-05-09 | 2018-06-10 | Con000, RM-SA-015, B5-UPSD-C231, B20-UPCB-3rdP003, B20-UPCB-SDA150, RM-AC-015 |  |  |  |  | -455.36d | 0d | Concrete Barrier [334184 m] |
| B20-UPCB-C001 |  | Installation of Light Fittings |  | 27.56d | 2018-06-10 | 2018-07-12 | B20-UPCB-1stP001, B20-UPCB-3rdP003, B20-UPCB-C002, RM-SA-015, Con000 |  |  |  |  | -445.58d | 9.78d | Concrete Barrier [3642 m] |
| B20-UPCB-C003 |  | Installation of Joinery Works |  | 37.33d | 2018-06-10 | 2018-07-24 | RM-SA-015, B20-UPCB-C002, RM-AC-015, Con000, B20-UPCB-PR100 FF+7d |  |  |  |  | -455.36d | 0d | Concrete Barrier [44640 m] |
| B20-UPCB-C004 |  | Snagging and De-Snagging |  | 7.06d | 2018-07-24 | 2018-08-01 | Con000, B20-UPCB-C003, B20-UPCB-C001, RM-SA-015 |  |  |  |  | -455.36d | 0d | Concrete Barrier |

| ID | WBS | Activity | Type | Duration | Start | Finish | Predecessors | Complete | Planned start | Planned finish | Total float | Free float | Resources |
| --- | --- | --- | --- | --- | --- | --- | --- | --- | --- | --- | --- | --- | --- |
|  | 16 | **Bill 28-LIFT CAR - TOWER A, B & D** |  |  | 2017-01-26 | 2018-05-03 |  |  |  |  |  |  |  |
| B5-UPSD-C241 |  | Clearance process for Measurements , Framing&Enabling Works |  | 5d | 2017-01-26 A | 2017-02-08 A | B28-TsLC-1stP001 | 100% | 2017-02-12 | 2017-02-16 |  |  | Concrete Barrier |
| B28-TsLC-1stP001 |  | MEP 1st , 2nd Fix and Wall System | milestone | 0d | 2017-02-09 A | 2017-02-09 A | RM-SA-016 | 100% | 2017-02-12 | 2017-02-12 |  |  |  |
| B5-UPSD-C251 |  | Measurements , Framing & Enabling Works |  | 13.94d | 2017-02-11 A | 2017-03-08 A | B5-UPSD-C241 | 100% | 2017-02-18 | 2017-03-05 |  |  | Concrete Barrier [5000 m] |
| B28-TsLC-C001 |  | Installation of Celling System |  | 21d | 2017-05-04 A | 2017-08-14 A | Con000, B5-UPSD-C251, B28-TsLC-1stP001, RM-SA-016 | 100% | 2017-05-04 | 2017-05-28 |  |  | Concrete Barrier [42311 m] |
| B28-TsLC-C004 |  | Installation of Wooden wall panelling |  | 14d | 2017-06-14 A | 2017-08-06 A | RM-SA-016, Con000, B28-TsLC-PR100, RM-AC-016, B28-TsLC-C005, B28-TsLC-C002 | 100% | 2017-10-22 | 2017-11-06 |  |  | Concrete Barrier [20423 m] |
| B28-TsLC-2ndP002 |  | MEP Ceiling Closure Clearance |  | 7d | 2017-06-28 A | 2017-06-28 A | RM-SA-016, B28-TsLC-C001 | 100% | 2017-08-14 | 2017-08-22 |  |  | Concrete Barrier |
| B28-TsLC-C009 |  | Installation of Metal Raling |  | 20.94d | 2017-06-28 A | 2017-10-05 A | B28-TsLC-C002, RM-SA-016, Con000 | 100% | 2017-08-22 | 2017-09-16 |  |  | Concrete Barrier [33633 m] |
| B28-TsLC-C003 |  | Installation of Metal Skirting |  | 5d | 2017-07-03 A | 2017-12-28 A | B28-TsLC-C005, B28-TsLC-C009, Con000, B28-TsLC-C006, B28-TsLC-3rdP003, RM-SA-016, B28-TsLC-PR140, B28-TsLC-C004 | 100% | 2017-10-30 | 2017-11-05 |  |  | Concrete Barrier [21543 m] |
| B28-TsLC-C006 |  | Installation of Metal panelling |  | 13.89d | 2017-07-03 A | 2017-09-27 A | Con000, B28-TsLC-PR140, B28-TsLC-C002, B28-TsLC-3rdP003, RM-SA-016 | 100% | 2017-09-25 | 2017-10-10 |  |  | Concrete Barrier [32154 m] |
| B28-TsLC-C002 |  | Ceiling Closure |  | 21.11d | 2017-08-16 A | 2017-11-06 A | B28-TsLC-2ndP002, RM-SA-016, Con000, B28-TsLC-PR180 | 100% | 2017-10-12 | 2017-11-06 |  |  | Concrete Barrier [42311 m] |
| B28-TsLC-3rdP003 |  | Flooring (by others) |  | 13.94d | 2017-09-05 A | 2017-09-28 A | RM-SA-016, B28-TsLC-C002 FS+5d | 100% | 2017-11-12 | 2017-11-28 |  |  | Concrete Barrier [32152 m] |
| B28-TsLC-C007 |  | Installation of Glazing Works |  | 7d | 2017-11-21 A | 2018-01-18 A | B28-TsLC-C005, B28-TsLC-C009, Con000, B28-TsLC-C003, B28-TsLC-C004, RM-SA-016, B28-TsLC-C006, B28-TsLC-PR130 | 100% | 2017-12-04 | 2017-12-12 |  |  | Concrete Barrier [32154 m] |
| B28-TsLC-C008 |  | Installation of Wall Covering |  | 4.94d | 2017-12-07 A | 2018-02-01 A | B28-TsLC-C004, B28-TsLC-C005, B28-TsLC-C006, B28-TsLC-PR220, RM-AC-016, Con000, B28-TsLC-C003, RM-SA-016, B28-TsLC-C009 | 100% | 2017-12-24 | 2017-12-30 |  |  | Concrete Barrier [12353 m] |
| B28-TsLC-C005 |  | Installation of Light Fittings |  | 14.11d | 2018-02-08 A | 2018-02-25 A | B28-TsLC-C006, B28-TsLC-3rdP003, RM-SA-016, B28-TsLC-C002, Con000 | 100% |  |  |  |  | Concrete Barrier [22132 m] |
| B28-TsLC-S010 |  | Snagging and De-Snagging |  | 7d | 2018-04-26 | 2018-05-03 | B28-TsLC-C008, B28-TsLC-C007, RM-SA-016, Con000 |  |  |  | -379d | 0d | Concrete Barrier |
|  | 17 | **Bill 29-SPA** |  |  | 2017-01-26 | 2018-05-03 |  |  |  |  |  |  |  |
| B29-SPALC-1stP001 |  | MEP 1st , 2nd Fix and Wall System | milestone | 0d | 2017-01-26 A | 2017-01-26 A | RM-SA-017 | 100% | 2017-02-12 | 2017-02-12 |  |  |  |
| B5-UPSD-C261 |  | Clearance process for Measurements , Framing&Enabling Works |  | 5d | 2017-01-26 A | 2017-02-08 A | B29-SPALC-1stP001 | 100% | 2017-02-12 | 2017-02-16 |  |  | Concrete Barrier |
| B5-UPSD-C271 |  | Measurements , Framing & Enabling Works |  | 13.94d | 2017-02-09 A | 2017-08-27 A | B5-UPSD-C261 | 100% | 2017-02-18 | 2017-03-05 |  |  | Concrete Barrier [5000 m] |
| B29-SPALC-C001 |  | Installation of Celling System |  | 28d | 2017-03-05 A | 2017-08-29 A | B5-UPSD-C271, Con000, B29-SPALC-1stP001, RM-SA-017 | 100% | 2017-03-26 | 2017-04-27 |  |  | Concrete Barrier [85163 m] |
| B29-SPALC-C010 |  | Installation of Wall Covering |  | 6.89d | 2017-05-16 A | 2018-02-14 A | RM-AC-017, B29-SPALC-C003, B29-SPALC-PR160, B29-SPALC-C005, RM-SA-017, B29-SPALC-C006, B29-SPALC-C008, B29-SPALC-C009, B29-SPALC-PR210, Con000, B29-SPALC-C012 | 100% | 2017-09-23 | 2017-09-30 |  |  | Concrete Barrier [196018 m] |
| B29-SPALC-C003 |  | Paint Works |  | 29.94d | 2017-05-30 A | 2018-03-03 A | RM-SA-017, Con000, B29-SPALC-PR120, B29-SPALC-3rdP003 | 100% | 2017-08-06 | 2017-09-09 |  |  | Concrete Barrier [105756 m] |
| B29-SPALC-C017 |  | Installation of Steel wall panelling |  | 20.89d | 2017-06-01 A | 2017-07-01 A | B29-SPALC-C003 SS+3d, Con000, B29-SPALC-PR140, RM-SA-017 | 100% | 2017-09-05 | 2017-09-28 |  |  | Concrete Barrier [150012 m] |
| B29-SPALC-C011 |  | Installation of Wooden wall panelling |  | 21d | 2017-06-17 A | 2018-02-10 A | B29-SPALC-PR210, B29-SPALC-C003 SS+3d, B29-SPALC-PR100 FF+7d, RM-SA-017, Con000, RM-AC-017 | 100% | 2017-08-24 | 2017-09-18 |  |  | Concrete Barrier [86115 m] |
| B29-SPALC-2ndP002 |  | MEP Ceiling Closure Clearance |  | 7d | 2017-07-25 A | 2017-08-30 A | RM-SA-017, B34-UPSEB-C001, B29-SPALC-C001 | 100% | 2017-08-22 | 2017-08-30 |  |  | Concrete Barrier |
| B29-SPALC-3rdP003 |  | Flooring (by others) |  | 9.89d | 2017-08-08 A | 2017-08-31 A | B29-SPALC-C002, RM-SA-017 | 100% | 2017-10-01 | 2017-10-11 |  |  | Concrete Barrier [103800 m] |
| B29-SPALC-C015 |  | Installation of Joinery Works |  | 14d | 2017-08-21 A | 2018-03-15 A | B29-SPALC-C003 SS+3d, B29-SPALC-PR210, RM-SA-017, RM-AC-017, Con000, B29-SPALC-PR100 | 100% | 2017-10-16 | 2017-10-31 |  |  | Concrete Barrier [88201 m] |
| B29-SPALC-C002 |  | Ceiling Closure |  | 27.94d | 2017-08-27 A | 2017-12-14 A | RM-SA-017, B29-SPALC-2ndP002, Con000, B29-SPALC-PR180 | 100% | 2017-09-09 | 2017-10-10 |  |  | Concrete Barrier [85163 m] |
| B29-SPALC-C004 |  | Installation of Wall Tiling |  | 9.94d | 2017-09-11 A | 2017-11-15 A | Con000, RM-SA-017, B29-SPALC-PR190, B29-SPALC-PR170, B29-SPALC-C003 SS | 100% | 2017-12-16 | 2017-12-26 |  |  | Concrete Barrier [88934 m] |
| B29-SPALC-C009 |  | Installation of Timber Flooring |  | 14d | 2017-10-23 A | 2018-01-23 A | B29-SPALC-C017, B29-SPALC-C015, B29-SPALC-C007, B29-SPALC-C011, RM-SA-017, B29-SPALC-C004, RM-AC-017, Con000 | 100% | 2017-12-27 | 2018-01-11 |  |  | Concrete Barrier [113800 m] |
| B29-SPALC-C012 |  | Installation of Floor Tiling |  | 14d | 2017-11-14 A | 2017-11-25 A | Con000, B29-SPALC-C011, B29-SPALC-C015, B29-SPALC-C007, RM-SA-017, B29-SPALC-C004, B29-SPALC-C017, B29-SPALC-PR190, B29-SPALC-PR170 | 100% | 2017-12-17 | 2018-01-01 |  |  | Concrete Barrier [131210 m] |
| B29-SPALC-C007 |  | Installation of Doors & Ironmongery |  | 4.94d | 2017-11-27 A | 2018-03-15 A | Con000, B29-SPALC-C003 SS+3d, RM-SA-017, RM-AC-017, B29-SPALC-PR260 | 100% | 2017-12-02 | 2017-12-06 |  |  | Concrete Barrier [90975 m] |
| B29-SPALC-C006 |  | Installation of Mirror |  | 7.06d | 2017-12-11 A | 2018-01-24 A | RM-SA-017, B29-SPALC-PR130, B29-SPALC-C015, Con000, B29-SPALC-C017, B29-SPALC-C007, B29-SPALC-C011, B29-SPALC-C004 | 100% | 2017-12-23 | 2017-12-31 |  |  | Concrete Barrier [158888 m] |
| B29-SPALC-C005 |  | Installation of Metal Skirting |  | 7.06d | 2018-01-08 A | 2018-01-25 A | Con000, B29-SPALC-PR140, B29-SPALC-C017, B29-SPALC-C004, RM-SA-017, B29-SPALC-C011, B29-SPALC-C007, B29-SPALC-C015 | 100% | 2018-01-20 | 2018-01-28 |  |  | Concrete Barrier [25920 m] |
| B29-SPALC-C013 |  | Installation of Glazing Works |  | 8.94d | 2018-01-15 A | 2018-01-25 A | RM-SA-017, Con000, B29-SPALC-C005, B29-SPALC-C008, B29-SPALC-C009, B29-SPALC-C006, RM-AC-017, B29-SPALC-C012, B29-SPALC-PR130 | 100% | 2018-02-06 | 2018-02-17 |  |  | Concrete Barrier [229113 m] |
| B29-SPALC-C008 |  | Installation of Light Fittings |  | 14d | 2018-01-22 A | 2018-03-17 A | RM-SA-017, Con000, B29-SPALC-C007, B29-SPALC-C015, B29-SPALC-C004, B29-SPALC-C011, B29-SPALC-C017 | 100% | 2018-01-22 | 2018-02-07 |  |  | Concrete Barrier [35838 m] |
| B29-SPALC-C014 |  | Installation of Sanitary Ware |  | 8.89d | 2018-02-13 A | 2018-03-22 A | B29-SPALC-C009, B29-SPALC-C006, RM-SA-017, B29-SPALC-C012, B29-SPALC-C008, Con000, B29-SPALC-C005 | 100% | 2018-02-18 | 2018-02-28 |  |  | Concrete Barrier [30522 m] |
| B29-SPALC-S018 |  | Snagging and De-Snagging |  | 7d | 2018-04-26 | 2018-05-03 | RM-SA-017, B29-SPALC-C013, Con000, B29-SPALC-C003, B29-SPALC-C010, B29-SPALC-C014 |  |  |  | -379d | 0d | Concrete Barrier |

| ID | WBS | Activity | Type | Duration | Start | Finish | Predecessors | Complete | Planned start | Planned finish | Total float | Free float | Calendar | Resources |
| --- | --- | --- | --- | --- | --- | --- | --- | --- | --- | --- | --- | --- | --- | --- |
|  | 18 | **Bill 34-UP-SPEAK EASY BAR** |  |  | 2016-08-06 | 2018-05-03 |  |  |  |  |  |  |  |  |
| B34-UPSEB-1stP001 |  | MEP 1st , 2nd Fix and Wall System | milestone | 0d | 2016-08-06 A | 2016-08-06 A | RM-SA-020 | 100% | 2016-12-15 | 2016-12-15 |  |  |  |  |
| B5-UPSD-C301 |  | Clearance process for Measurements , Framing&Enabling Works |  | 5d | 2016-08-07 A | 2016-10-09 A | B34-UPSEB-1stP001 | 100% | 2016-07-05 | 2016-07-12 |  |  |  | Concrete Barrier |
| B5-UPSD-C311 |  | Measurements , Framing & Enabling Works |  | 14d | 2016-10-10 A | 2016-10-20 A | B5-UPSD-C301 FS-1d | 100% | 2016-09-07 | 2016-09-26 |  |  |  | Concrete Barrier [5000 m] |
| B34-UPSEB-C001 |  | Installation of Celling System |  | 21d | 2016-10-15 A | 2017-01-03 A | B5-UPSD-C311, RM-SA-020, B34-UPSEB-1stP001, Con000 | 100% | 2016-12-15 | 2017-01-08 |  |  |  | Concrete Barrier [66885 m] |
| B34-UPSEB-C003 |  | Paint Works |  | 21d | 2016-10-18 A | 2018-03-07 A | B34-UPSEB-PR120, Con000, B34-UPSEB-3rdP003, B34-UPSEB-C004, RM-SA-020 | 100% | 2017-01-10 | 2017-02-04 |  |  |  | Concrete Barrier [18899 m] |
| B34-UPSEB-C002 |  | Ceiling Closure |  | 21d | 2017-05-28 A | 2017-05-31 A | Con000, B34-UPSEB-2ndP002, B34-UPSEB-PR180, RM-SA-020 | 100% | 2017-06-25 | 2017-07-18 |  |  |  | Concrete Barrier [73885 m] |
| B34-UPSEB-C011 |  | Installation of Wooden wall panelling |  | 20.89d | 2017-05-30 A | 2017-09-23 A | B34-UPSEB-C003 SS+3d, RM-SA-020, B34-UPSEB-C002, RM-AC-020, Con000 | 100% | 2017-09-03 | 2017-09-27 |  |  |  | Concrete Barrier [41490 m] |
| B34-UPSEB-2ndP002 |  | MEP Ceiling Closure Clearance |  | 6.89d | 2017-06-07 A | 2017-06-08 A | B34-UPSEB-C041, RM-SA-020 | 100% | 2017-09-02 | 2017-09-09 |  |  |  | Concrete Barrier |
| B34-UPSEB-C021 |  | Removal of Ceiling grid due to addtional MEP from TAV |  | 7d | 2017-06-13 A | 2017-06-23 A | A6050 | 100% | 2017-08-17 | 2017-08-24 |  |  | 7x24 | Concrete Barrier |
| B34-UPSEB-C031 |  | Additional MEP Works (Pleenum Boxes) by TAV |  | 1.82d | 2017-06-24 A | 2017-07-04 A | B34-UPSEB-C021 | 100% | 2017-08-24 | 2017-08-25 |  |  | 7x24 | Concrete Barrier |
| B34-UPSEB-C041 |  | Reinstallation of Ceiling grids due to additional MEP |  | 7d | 2017-07-01 A | 2017-07-11 A | B34-UPSEB-C031 | 100% | 2017-08-25 | 2017-09-01 |  |  | 7x24 | Concrete Barrier |
| B34-UPSEB-3rdP003 |  | Flooring (by others) |  | 14d | 2017-07-05 A | 2017-07-23 A | B34-UPSEB-C002, RM-SA-020 | 100% | 2017-09-10 | 2017-09-25 |  |  |  | Concrete Barrier |
| B34-UPSEB-C015 |  | Installation of Joinery Works |  | 14.11d | 2017-08-27 A | 2018-03-08 A | RM-SA-020, B34-UPSEB-PR110 FF+7d, B34-UPSEB-PR130, Con000, RM-AC-020, B34-UPSEB-PR100 FF+7d, B34-UPSEB-C003 | 100% | 2017-10-19 | 2017-11-05 |  |  |  | Concrete Barrier [20000 m] |
| B34-UPSEB-C017 |  | Installation of Steel wall panelling |  | 20.94d | 2017-10-25 A | 2017-11-04 A | Con000, RM-SA-020, B34-UPSEB-PR140, B34-UPSEB-C003 SS+3d | 100% | 2017-12-09 | 2018-01-01 |  |  |  | Concrete Barrier [10212 m] |
| B34-UPSEB-C012 |  | Installation of Floor Tiling |  | 7d | 2017-11-14 A | 2017-11-28 A | RM-SA-020, Con000, B34-UPSEB-C002, B34-UPSEB-C015, B34-UPSEB-PR170, B34-UPSEB-C011, B34-UPSEB-C017 | 100% | 2018-01-02 | 2018-01-09 |  |  |  | Concrete Barrier [20000 m] |
| B34-UPSEB-C007 |  | Installation of Doors & Ironmongery |  | 7d | 2017-11-20 A | 2017-12-13 A | RM-AC-020, B34-UPSEB-PR260, Con000, B34-UPSEB-C013, RM-SA-020 | 100% | 2018-02-04 | 2018-02-11 |  |  |  | Concrete Barrier [4047 m] |
| B34-UPSEB-C004 |  | Installation of Wall Tiling |  | 14d | 2017-11-29 A | 2017-12-21 A | RM-SA-020, B34-UPSEB-3rdP003, B34-UPSEB-PR190, Con000 | 100% | 2017-11-29 | 2017-12-14 |  |  |  | Concrete Barrier [12957 m] |
| B34-UPSEB-C009 |  | Installation of Timber Flooring |  | 21.06d | 2017-12-12 A | 2017-12-28 A | RM-SA-020, B34-UPSEB-C015, B34-UPSEB-C002, B34-UPSEB-C017, Con000, B34-UPSEB-C011, RM-AC-020 | 100% | 2017-12-23 | 2018-01-16 |  |  |  | Concrete Barrier [16470 m] |
| B34-UPSEB-C010 |  | Installation of Wall Covering |  | 6.89d | 2017-12-26 A | 2018-02-15 A | B34-UPSEB-C008, RM-AC-020, B34-UPSEB-C012, RM-SA-020, B34-UPSEB-C002, B34-UPSEB-C003, B34-UPSEB-C005, B34-UPSEB-C006, B34-UPSEB-C009, B34-UPSEB-PR160, Con000 | 100% | 2018-01-22 | 2018-01-29 |  |  |  | Concrete Barrier [17784 m] |
| B34-UPSEB-C006 |  | Installation of Mirror |  | 7d | 2018-02-10 A | 2018-02-15 A | B34-UPSEB-C011, RM-SA-020, Con000, B34-UPSEB-C015, B34-UPSEB-C017, B34-UPSEB-PR130 | 100% | 2018-02-12 | 2018-02-20 |  |  |  | Concrete Barrier [7215 m] |
| B34-UPSEB-C005 |  | Installation of Metal Skirting |  | 7d | 2018-02-18 A | 2018-03-05 A | B34-UPSEB-C011, B34-UPSEB-C017, B34-UPSEB-PR140, RM-SA-020, B34-UPSEB-C015, Con000 | 100% | 2018-02-18 | 2018-02-26 |  |  |  | Concrete Barrier [5120 m] |
| B34-UPSEB-C013 |  | Installation of Glazing Works |  | 6.89d | 2018-02-24 A | 2018-03-01 A | B34-UPSEB-C005, RM-AC-020, Con000, B34-UPSEB-C012, RM-SA-020, B34-UPSEB-C009, B34-UPSEB-C006, B34-UPSEB-C008 | 100% | 2018-03-12 | 2018-03-20 |  |  |  | Concrete Barrier [5000 m] |
| B34-UPSEB-C008 |  | Installation of Light Fittings |  | 14.06d | 2018-02-24 A | 2018-03-05 A | B34-UPSEB-C017, B34-UPSEB-C002, Con000, RM-SA-020, B34-UPSEB-C011, B34-UPSEB-C015 | 100% | 2018-02-24 | 2018-03-12 |  |  |  | Concrete Barrier [4084 m] |
| B34-UPSEB-C014 |  | Installation of Sanitary Ware |  | 6.89d | 2018-03-08 A | 2018-03-11 A | RM-SA-020, B34-UPSEB-C006, Con000, B34-UPSEB-C005, B34-UPSEB-C009, B34-UPSEB-C008, B34-UPSEB-C012 | 100% | 2018-03-08 | 2018-03-15 |  |  |  | Concrete Barrier [2000 m] |
| B34-UPSEB-C016 |  | Sanitary Ware |  | 6.89d | 2018-03-08 A | 2018-03-11 A | B34-UPSEB-C008, RM-SA-020, B34-UPSEB-C005, B34-UPSEB-C006, B34-UPSEB-C012, Con000, B34-UPSEB-C009 | 100% | 2018-03-08 | 2018-03-15 |  |  |  | Concrete Barrier [2000 m] |
| B34-UPSEB-S018 |  | Snagging and De-Snagging |  | 7d | 2018-04-26 | 2018-05-03 | Con000, B34-UPSEB-C003, B34-UPSEB-C007, B34-UPSEB-C014, RM-SA-020, B34-UPSEB-C010, B34-UPSEB-C016, B34-UPSEB-C013 |  |  |  | -379d | 0d |  | Concrete Barrier |

| ID | WBS | Activity | Type | Duration | Start | Finish | Predecessors | Complete | Planned start | Planned finish | Total float | Free float | Resources |
| --- | --- | --- | --- | --- | --- | --- | --- | --- | --- | --- | --- | --- | --- |
|  | 20 | **Bill 35-LIFT CAR - TOWER C** |  |  | 2017-06-28 | 2018-05-03 |  |  |  |  |  |  |  |
| B35-TCSR-C005 |  | Installation of Metal panelling |  | 21d | 2017-06-28 A | 2017-10-12 A | Con000, B35-TCSR-PR140, RM-SA-021, B35-TCLC-SDA160, B35-TCSR-3rdP003 | 100% | 2017-10-12 | 2017-11-05 |  |  | Concrete Barrier [46546 m] |
| B35-TCSR-1stP001 |  | MEP 1st , 2nd Fix and Wall System | milestone | 0d | 2017-07-05 A | 2017-07-05 A | RM-SA-021 | 100% | 2017-08-10 | 2017-08-10 |  |  |  |
| B5-UPSD-C321 |  | Clearance process for Measurements , Framing&Enabling Works |  | 5d | 2017-07-10 A | 2017-07-13 A | B35-TCSR-1stP001 | 100% | 2017-07-13 | 2017-07-18 |  |  | Concrete Barrier |
| B5-UPSD-C331 |  | Measurements , Framing & Enabling Works |  | 14.11d | 2017-07-16 A | 2017-07-27 A | B5-UPSD-C321 | 100% | 2017-08-10 | 2017-08-27 |  |  | Concrete Barrier [2000 m] |
| B35-TCSR-2ndP002 |  | MEP Ceiling Closure Clearance |  | 7d | 2017-08-10 A | 2017-08-10 A | RM-SA-021, B35-TCSR-C001 | 100% | 2017-10-31 | 2017-11-07 |  |  | Concrete Barrier |
| B35-TCSR-C001 |  | Installation of Celling System |  | 28d | 2017-08-15 A | 2017-09-06 A | Con000, B5-UPSD-C331, B35-TCSR-1stP001, RM-SA-021 | 100% | 2017-09-28 | 2017-10-30 |  |  | Concrete Barrier [18475 m] |
| B35-TCSR-C002 |  | Ceiling Closure |  | 28d | 2017-09-07 A | 2017-09-26 A | Con000, B35-TCSR-PR180, B35-TCSR-2ndP002, RM-SA-021 | 100% | 2017-11-08 | 2017-12-10 |  |  | Concrete Barrier [20475 m] |
| B35-TCSR-3rdP003 |  | Flooring (by others) |  | 14d | 2017-09-22 A | 2017-10-02 A | B35-TCSR-C002, RM-SA-021 | 100% | 2017-12-11 | 2017-12-26 |  |  | Concrete Barrier [19533 m] |
| B35-TCSR-C006 |  | Installation of Metal Raling |  | 13.89d | 2017-10-01 A | 2017-11-16 A | RM-SA-021, B35-TCSR-3rdP003, RM-AC-021, Con000, B35-TCSR-PR140 | 100% | 2017-12-27 | 2018-01-11 |  |  | Concrete Barrier [16085 m] |
| B35-TCSR-C003 |  | Installation of Metal Skirting |  | 14.11d | 2017-12-07 A | 2018-01-14 A | Con000, B35-TCSR-3rdP003 FS+3d, RM-SA-021, B35-TCSR-C005, B35-TCSR-PR140 | 100% | 2017-12-07 | 2017-12-24 |  |  | Concrete Barrier [9160 m] |
| B35-TCSR-C004 |  | Installation of Light Fittings |  | 13.94d | 2018-01-18 A | 2018-02-20 A | Con000, RM-SA-021, B35-TCSR-3rdP003 | 100% | 2018-01-18 | 2018-02-03 |  |  | Concrete Barrier [14160 m] |
| B35-TCSR-S007 |  | Snagging and De-Snagging |  | 7d | 2018-04-26 | 2018-05-03 | B35-TCSR-C004, RM-SA-021, B35-TCSR-C006, Con000, B35-TCSR-C005, B35-TCSR-C003 FS-1d |  |  |  | -379d | 0d | Concrete Barrier |
|  | 21 | **Bill 39-LG- LIFT LOBBY** |  |  | 2017-06-13 | 2018-05-03 |  |  |  |  |  |  |  |
| B39-LGLL-C001 |  | Installation of Celling System |  | 20.94d | 2017-06-13 A | 2017-06-25 A | RM-SA-022, B5-UPSD-C351, B39-LGLL-1stP001, Con000 | 100% | 2017-07-15 | 2017-08-08 |  |  | Concrete Barrier [2198 m] |
| B39-LGLL-C002 |  | Ceiling Closure |  | 14.06d | 2017-06-20 A | 2017-06-28 A | Con000, B39-LGLL-2ndP002, B39-LGLL-PR180, RM-SA-022 | 100% | 2017-08-16 | 2017-09-02 |  |  | Concrete Barrier [2198 m] |
| B5-UPSD-C351 |  | Measurements , Framing & Enabling Works |  | 14.06d | 2017-06-21 A | 2017-06-28 A | B5-UPSD-C341 | 100% | 2017-06-28 | 2017-07-15 |  |  | Concrete Barrier [2000 m] |
| B39-LGLL-1stP001 |  | MEP 1st , 2nd Fix and Wall System | milestone | 0d | 2017-06-22 A | 2017-06-22 A | RM-SA-022 | 100% |  |  |  |  |  |
| B5-UPSD-C341 |  | Clearance process for Measurements , Framing&Enabling Works |  | 5d | 2017-06-22 A | 2017-06-28 A | B39-LGLL-1stP001 | 100% |  |  |  |  | Concrete Barrier |
| B39-LGLL-2ndP002 |  | MEP Ceiling Closure Clearance |  | 7.06d | 2017-07-13 A | 2017-07-15 A | B39-LGLL-C001, RM-SA-022 | 100% | 2017-07-13 | 2017-07-22 |  |  | Concrete Barrier |
| B39-LGLL-3rdP003 |  | Floor Tiling |  | 13.94d | 2017-09-02 A | 2017-09-18 A | B39-LGLL-C002, RM-SA-022 | 100% | 2017-09-21 | 2017-10-07 |  |  | Concrete Barrier [930 m] |
| B39-LGLL-C008 |  | Installation of Steel wall panelling |  | 27.89d | 2017-09-06 A | 2017-09-24 A | B39-LGLL-C003 SS+3d, RM-SA-022, B39-LGLL-PR140, Con000 | 100% | 2017-11-05 | 2017-12-06 |  |  | Concrete Barrier [39670 m] |
| B39-LGLL-C007 |  | Installation of Wooden wall panelling |  | 14d | 2017-09-13 A | 2017-10-07 A | Con000, B39-LGLL-PR100, B39-LGLL-C003, RM-SA-022, RM-AC-022, B39-LGLL-C005 | 100% | 2017-11-15 | 2017-11-30 |  |  | Concrete Barrier [5000 m] |
| B39-LGLL-C003 |  | Paint Works |  | 21.11d | 2017-10-18 A | 2018-01-28 A | RM-SA-022, Con000, B39-LGLL-3rdP003 | 100% | 2017-11-02 | 2017-11-27 |  |  | Concrete Barrier [831 m] |
| B39-LGLL-C006 |  | Installation of Glazing Works |  | 10d | 2017-11-02 A | 2017-11-20 A | RM-SA-022, RM-AC-022, B39-LGLL-C004, B39-LGLL-PR130, Con000 | 100% | 2017-12-13 | 2017-12-25 |  |  | Concrete Barrier [2000 m] |
| B39-LGLL-C004 |  | Installation of Metal Skirting |  | 3.11d | 2017-12-13 A | 2018-02-01 A | RM-SA-022, B39-LGLL-C008, B39-LGLL-C007, Con000, B39-LGLL-PR140 | 100% | 2017-12-27 | 2017-12-31 |  |  | Concrete Barrier [131 m] |
| B39-LGLL-C005 |  | Installation of Light Fittings |  | 13.94d | 2018-03-01 A | 2018-03-07 A | RM-SA-022, Con000, B39-LGLL-C003 | 100% | 2018-03-01 | 2018-03-17 |  |  | Concrete Barrier [3573 m] |
| B39-LGLL-S009 |  | Snagging and De-Snagging |  | 7d | 2018-04-26 | 2018-05-03 | B39-LGLL-C003, B39-LGLL-C005, B39-LGLL-C006, RM-SA-022, Con000 |  |  |  | -379d | 0d | Concrete Barrier |

| ID | WBS | Activity | Duration | Start | Finish | Predecessors | Complete | Planned start | Planned finish | Calendar |
| --- | --- | --- | --- | --- | --- | --- | --- | --- | --- | --- |
|  | 13 | **Variation No: 009** |  | 2016-07-03 | 2018-06-25 |  |  |  |  |  |
|  | 2 | **Engineering Phase** |  | 2016-08-14 | 2018-02-28 |  |  |  |  |  |
|  | 1 | **Shop Drawing Process** |  | 2016-08-14 | 2017-11-02 |  |  |  |  |  |
|  | 11 | **Bill 14-P1-PRE-FUNCTION** |  | 2016-08-14 | 2017-08-31 |  |  |  |  |  |
| A5190 |  | Preparation and Submission of Shop Drawing | 28d | 2016-08-14 A | 2016-10-05 A | A1000, A1880, RM-DF-013 | 100% | 2016-07-05 | 2016-08-16 | ATL522 - Engineering Submission (5x9) |
| A5200 |  | Review and Approval of Shop Drawing | 21d | 2016-08-15 A | 2017-08-31 A | A5190 | 100% | 2016-08-16 | 2016-09-05 | ATL522 - Engineering Approval (7x9) |
|  | 12 | **Bill 15-P1-REST ROOMS (PRE-FUNTION)** |  | 2016-08-14 | 2017-02-08 |  |  |  |  |  |
| A5210 |  | Preparation and Submission of Shop Drawing | 28d | 2016-08-14 A | 2016-10-05 A | A2260, RM-DF-014, A1000 | 100% | 2016-07-05 | 2016-08-16 | ATL522 - Engineering Submission (5x9) |
| A5220 |  | Review and Approval of Shop Drawing | 21d | 2016-08-15 A | 2017-02-08 A | A5210 | 100% | 2016-08-16 | 2016-09-05 | ATL522 - Engineering Approval (7x9) |
|  | 16 | **Bill 32 Work Play Suite** |  | 2016-08-28 | 2017-05-07 |  |  |  |  |  |
| A5830 |  | Preparation and Submission of Shop Drawing | 28d | 2016-08-28 A | 2016-10-11 A | A5800 | 100% | 2016-07-05 | 2016-08-16 | ATL522 - Engineering Submission (5x9) |
| A5840 |  | Review and Approval of Shop Drawing | 21d | 2016-09-29 A | 2017-05-07 A | A5830 | 100% | 2016-10-23 | 2016-11-13 | ATL522 - Engineering Approval (7x9) |
|  | 13 | **Bill 33-P1-SCREENING ROOM** |  | 2016-08-14 | 2017-08-25 |  |  |  |  |  |
| A5230 |  | Preparation and Submission of Shop Drawing | 35d | 2016-08-14 A | 2016-10-06 A | A1000, RM-DF-019, A2270 | 100% | 2016-07-05 | 2016-08-25 | ATL522 - Engineering Submission (5x9) |
| A5240 |  | Review and Approval of Shop Drawing | 21d | 2016-08-15 A | 2017-08-25 A | A5230 | 100% | 2016-08-25 | 2016-09-17 | ATL522 - Engineering Approval (7x9) |
|  | 14 | **BILL 37 - 7F - PUBLIC TOILETS** |  | 2016-08-28 | 2017-08-22 |  |  |  |  |  |
| A5340 |  | Preparation and Submission of Shop Drawing | 35d | 2016-08-28 A | 2017-08-16 A | A1000, A5540, A5310 | 100% | 2016-07-05 | 2016-08-25 | ATL522 - Engineering Submission (5x9) |
| A5350 |  | Review and Approval of Shop Drawing | 21d | 2016-09-11 A | 2017-08-22 A | A5340 | 100% | 2016-10-23 | 2016-11-13 | ATL522 - Engineering Approval (7x9) |
|  | 2 | **BILL 17.2 - P1 - PUBLIC TOILETS** |  | 2016-08-28 | 2017-08-26 |  |  |  |  |  |
| A1350 |  | Preparation and Submission of Shop Drawing | 35d | 2016-08-28 A | 2016-10-06 A | A1000, A1020 | 100% | 2016-07-05 | 2016-08-25 | ATL522 - Engineering Submission (5x9) |
| A1360 |  | Review and Approval of Shop Drawing | 21d | 2016-08-31 A | 2017-08-26 A | A1350 | 100% | 2016-08-25 | 2016-09-17 | ATL522 - Engineering Approval (7x9) |
|  | 3 | **BILL 21 - P1 - KID'S CLUB** |  | 2016-08-28 | 2017-08-30 |  |  |  |  |  |
| A1370 |  | Preparation and Submission of Shop Drawing | 35d | 2016-08-28 A | 2016-10-12 A | A1000, A1030 | 100% | 2016-07-05 | 2016-08-25 | ATL522 - Engineering Submission (5x9) |
| A1380 |  | Review and Approval of Shop Drawing | 21d | 2016-09-11 A | 2017-08-30 A | A1370 | 100% | 2016-10-23 | 2016-11-13 | ATL522 - Engineering Approval (7x9) |

| ID | WBS | Activity | Duration | Start | Finish | Predecessors | Complete | Planned start | Planned finish | Calendar |
| --- | --- | --- | --- | --- | --- | --- | --- | --- | --- | --- |
|  | 4 | **BILL 24 - 8F - GYM - TOWER C** |  | 2016-08-28 | 2017-11-02 |  |  |  |  |  |
| A1390 |  | Preparation and Submission of Shop Drawing | 42d | 2016-08-28 A | 2016-10-09 A | A1040, A1000 | 100% | 2016-07-05 | 2016-09-05 | ATL522 - Engineering Submission (5x9) |
| A1400 |  | Review and Approval of Shop Drawing | 21d | 2016-09-11 A | 2017-11-02 A | A1390 | 100% | 2016-10-31 | 2016-11-21 | ATL522 - Engineering Approval (7x9) |
|  | 5 | **BILL 25 - 8F - MALE AND FEMALE TOILETS FOR GYM - TOWER C** |  | 2016-08-28 | 2017-09-01 |  |  |  |  |  |
| A1410 |  | Preparation and Submission of Shop Drawing | 42d | 2016-08-28 A | 2016-10-09 A | A1000, A1050 | 100% | 2016-07-05 | 2016-09-05 | ATL522 - Engineering Submission (5x9) |
| A1420 |  | Review and Approval of Shop Drawing | 21d | 2016-08-31 A | 2017-09-01 A | A1410 | 100% | 2016-09-05 | 2016-09-28 | ATL522 - Engineering Approval (7x9) |
|  | 7 | **BILL 27.1 - 8F - GYM - TOWER A** |  | 2016-08-28 | 2017-10-31 |  |  |  |  |  |
| A1450 |  | Preparation and Submission of Shop Drawing | 42d | 2016-08-28 A | 2016-10-09 A | A1000, A1070 | 100% | 2016-07-05 | 2016-09-05 | ATL522 - Engineering Submission (5x9) |
| A1460 |  | Review and Approval of Shop Drawing | 21d | 2016-09-11 A | 2017-10-31 A | A1450 | 100% | 2016-10-31 | 2016-11-21 | ATL522 - Engineering Approval (7x9) |
|  | 8 | **BILL 27.2 - 8F - GYM - TOWER B** |  | 2016-08-28 | 2017-10-30 |  |  |  |  |  |
| A1470 |  | Preparation and Submission of Shop Drawing | 42d | 2016-08-28 A | 2016-10-09 A | A1000, A1080 | 100% | 2016-07-05 | 2016-09-05 | ATL522 - Engineering Submission (5x9) |
| A1480 |  | Review and Approval of Shop Drawing | 21d | 2016-09-11 A | 2017-10-30 A | A1470 | 100% | 2016-10-31 | 2016-11-21 | ATL522 - Engineering Approval (7x9) |
|  | 9 | **BILL 27.3 - 8F - GYM - TOWER D** |  | 2016-08-28 | 2017-08-30 |  |  |  |  |  |
| A1490 |  | Preparation and Submission of Shop Drawing | 42d | 2016-08-28 A | 2016-10-09 A | A1000, A1090 | 100% | 2016-07-05 | 2016-09-05 | ATL522 - Engineering Submission (5x9) |
| A1500 |  | Review and Approval of Shop Drawing | 21d | 2016-09-11 A | 2017-08-30 A | A1490 | 100% | 2016-10-31 | 2016-11-21 | ATL522 - Engineering Approval (7x9) |
|  | 15 | **BILL 38 - UG - GROCERY - TOWER A** |  | 2016-08-28 | 2017-08-30 |  |  |  |  |  |
| A5580 |  | Preparation and Submission of Shop Drawing | 42d | 2016-08-28 A | 2016-10-16 A | A5540, A1000 | 100% | 2016-07-05 | 2016-09-05 | ATL522 - Engineering Submission (5x9) |
| A5590 |  | Review and Approval of Shop Drawing | 21d | 2016-09-29 A | 2017-08-30 A | A5580 | 100% | 2016-11-06 | 2016-11-27 | ATL522 - Engineering Approval (7x9) |
|  | 2 | **Material Process** |  | 2016-08-14 | 2018-02-28 |  |  |  |  |  |
|  | 1 | **Wall Material** |  | 2016-08-14 | 2017-11-08 |  |  |  |  |  |
|  | 1 | **Preparation and Submission** |  | 2016-08-14 | 2017-10-24 |  |  |  |  |  |
| A1690 |  | Preparation and Submission of Paint Finish to Walls | 7d | 2016-08-14 A | 2017-10-18 A | A1000 | 100% | 2016-07-05 | 2016-07-18 | ATL522 - Engineering Submission (5x9) |
| A1720 |  | Preparation and Submission of Metal Finish to Wall | 7d | 2016-08-14 A | 2017-10-19 A | A1000, A1710 | 100% | 2016-07-27 | 2016-08-07 | ATL522 - Engineering Submission (5x9) |
| A1760 |  | Preparation and Submission of Glass/Mirrors | 7d | 2016-08-14 A | 2017-10-19 A | A1000, A1750 | 100% | 2016-09-05 | 2016-09-19 | ATL522 - Engineering Submission (5x9) |
| A1700 |  | Preparation and Submission of Stone Finish to Wall | 7d | 2016-08-28 A | 2017-04-27 A | A1690 SS, A1000 | 100% | 2016-07-05 | 2016-07-18 | ATL522 - Engineering Submission (5x9) |
| A1710 |  | Preparation and Submission of Wall Tiling | 7d | 2016-09-04 A | 2017-09-21 A | A1700, A1000 | 100% | 2016-07-18 | 2016-07-27 | ATL522 - Engineering Submission (5x9) |
| A1730 |  | Preparation and Submission of Wall Paper | 7d | 2016-09-04 A | 2017-10-24 A | A1000, A1720 | 100% | 2016-08-07 | 2016-08-16 | ATL522 - Engineering Submission (5x9) |
| A1740 |  | Preparation and Submission of Clear Acrylic Panel | 7d | 2016-09-04 A | 2017-03-09 A | A1730, A1000 | 100% | 2016-08-16 | 2016-08-25 | ATL522 - Engineering Submission (5x9) |
| A1750 |  | Preparation and Submission of Wood Wall Panels | 7d | 2016-09-04 A | 2017-10-05 A | A1000, A1740 | 100% | 2016-08-25 | 2016-09-05 | ATL522 - Engineering Submission (5x9) |
| A1770 |  | Preparation and Submission of Brick Panel | 7d | 2016-09-18 A | 2017-10-11 A | A1000, A1760 | 100% | 2016-11-01 | 2016-11-10 | ATL522 - Engineering Submission (5x9) |

| ID | WBS | Activity | Duration | Start | Finish | Predecessors | Complete | Planned start | Planned finish | Calendar |
| --- | --- | --- | --- | --- | --- | --- | --- | --- | --- | --- |
|  | 2 | **Review and Approval** |  | 2016-08-15 | 2017-11-08 |  |  |  |  |  |
| A1810 |  | Review and Approval of Metal Finish to Wall | 21d | 2016-08-15 A | 2017-10-26 A | A1720 | 100% | 2016-08-05 | 2016-08-25 | ATL522 - Engineering Approval (7x9) |
| A1780 |  | Review and Approval of Paint Finish to Walls | 21d | 2016-08-19 A | 2017-10-25 A | A1690 | 100% | 2016-07-18 | 2016-08-07 | ATL522 - Engineering Approval (7x9) |
| A1850 |  | Review and Approval of Glass/Mirrors | 21d | 2016-08-21 A | 2017-10-24 A | A1760 | 100% | 2016-09-19 | 2016-10-10 | ATL522 - Engineering Approval (7x9) |
| A1820 |  | Review and Approval of Wall Paper | 21d | 2016-09-04 A | 2017-10-30 A | A1730 | 100% | 2016-08-16 | 2016-09-05 | ATL522 - Engineering Approval (7x9) |
| A1840 |  | Review and Approval of Wood Wall Panels | 21d | 2016-09-04 A | 2017-10-18 A | A1750 | 100% | 2016-09-05 | 2016-09-28 | ATL522 - Engineering Approval (7x9) |
| A1830 |  | Review and Approval of Clear Acrylic Panel | 21d | 2016-09-12 A | 2017-03-26 A | A1740 | 100% | 2017-01-12 | 2017-02-02 | ATL522 - Engineering Approval (7x9) |
| A1860 |  | Review and Approval of Brick Panel | 21d | 2016-09-26 A | 2017-10-25 A | A1770 | 100% | 2017-01-30 | 2017-02-20 | ATL522 - Engineering Approval (7x9) |
| A1790 |  | Review and Approval of Stone Finish to Wall | 21d | 2016-10-20 A | 2017-04-05 A | A1700 | 100% | 2016-10-20 | 2016-11-10 | ATL522 - Engineering Approval (7x9) |
| A1800 |  | Review and Approval of Wall Tiling | 21d | 2016-10-23 A | 2017-11-08 A | A1710 | 100% | 2016-10-27 | 2016-11-17 | ATL522 - Engineering Approval (7x9) |
|  | 2 | **Floor Material** |  | 2016-08-14 | 2017-09-14 |  |  |  |  |  |
|  | 1 | **Preparation and Submission** |  | 2016-08-14 | 2017-09-12 |  |  |  |  |  |
| A1530 |  | Preparation and Submission Metal Flooring | 7d | 2016-08-14 A | 2017-08-31 A | A1000 | 100% | 2016-07-05 | 2016-07-18 | ATL522 - Engineering Submission (5x9) |
| A1570 |  | Preparation and Submission Carpet Flooring | 7d | 2016-08-14 A | 2017-04-03 A | A1560, A1000 | 100% | 2016-08-16 | 2016-08-25 | ATL522 - Engineering Submission (5x9) |
| A1540 |  | Preparation and Submission Wooden Flooring | 7d | 2016-08-28 A | 2017-09-07 A | A1530 SS, A1530, A1000 | 100% | 2016-07-18 | 2016-07-27 | ATL522 - Engineering Submission (5x9) |
| A1590 |  | Preparation and Submission Floor Painting | 7d | 2016-08-28 A | 2017-09-12 A | A1580, A1000 | 100% | 2016-09-05 | 2016-09-19 | ATL522 - Engineering Submission (5x9) |
| A1550 |  | Preparation and Submission Floor Tiling | 7d | 2016-09-04 A | 2017-09-07 A | A1000, A1540 | 100% | 2016-07-27 | 2016-08-07 | ATL522 - Engineering Submission (5x9) |
| A1560 |  | Preparation and Submission Stone Flooring | 7d | 2016-09-04 A | 2017-08-31 A | A1550, A1000 | 100% | 2016-08-07 | 2016-08-16 | ATL522 - Engineering Submission (5x9) |
| A1580 |  | Preparation and Submission Vinyl Flooring | 7d | 2016-09-18 A | 2017-03-28 A | A1000, A1570 | 100% | 2016-10-13 | 2016-10-24 | ATL522 - Engineering Submission (5x9) |
| A1600 |  | Preparation and Submission Rubber Flooring | 7d | 2016-09-18 A | 2017-09-12 A | A1590, A1000 | 100% | 2016-11-02 | 2016-11-13 | ATL522 - Engineering Submission (5x9) |
|  | 2 | **Review and Approval** |  | 2016-08-15 | 2017-09-14 |  |  |  |  |  |
| A1650 |  | Review and Approval Carpet Flooring | 21d | 2016-08-15 A | 2017-04-13 A | A1570, A1000 | 100% | 2016-08-25 | 2016-09-17 | ATL522 - Engineering Approval (7x9) |
| A1610 |  | Review and Approval Metal Flooring | 21d | 2016-08-19 A | 2017-09-08 A | A1000, A1530 | 100% | 2016-07-18 | 2016-08-07 | ATL522 - Engineering Approval (7x9) |
| A1670 |  | Review and Approval Floor Painting | 21d | 2016-09-14 A | 2017-09-14 A | A1590, A1000 | 100% | 2017-01-25 | 2017-02-15 | ATL522 - Engineering Approval (7x9) |
| A1660 |  | Review and Approval Vinyl Flooring | 21d | 2016-09-26 A | 2017-04-13 A | A1580, A1000 | 100% | 2017-01-19 | 2017-02-09 | ATL522 - Engineering Approval (7x9) |
| A1680 |  | Review and Approval Rubber Flooring | 21d | 2016-09-27 A | 2017-09-14 A | A1600, A1000 | 100% | 2017-02-01 | 2017-02-22 | ATL522 - Engineering Approval (7x9) |
| A1620 |  | Review and Approval Wooden Flooring | 21d | 2016-10-23 A | 2017-09-09 A | A1000, A1540 | 100% | 2016-10-26 | 2016-11-16 | ATL522 - Engineering Approval (7x9) |
| A1630 |  | Review and Approval Floor Tiling | 21d | 2016-10-23 A | 2017-09-11 A | A1550, A1000 | 100% | 2016-11-02 | 2016-11-23 | ATL522 - Engineering Approval (7x9) |
| A1640 |  | Review and Approval Stone Flooring | 21d | 2016-10-23 A | 2017-09-12 A | A1000, A1560 | 100% | 2016-11-09 | 2016-12-01 | ATL522 - Engineering Approval (7x9) |

| ID | WBS | Activity | Duration | Start | Finish | Predecessors | Complete | Planned start | Planned finish | Calendar |
| --- | --- | --- | --- | --- | --- | --- | --- | --- | --- | --- |
|  | 3 | **Celing Material** |  | 2016-08-14 | 2016-09-16 |  |  |  |  |  |
|  | 1 | **Preparation and Submission** |  | 2016-08-14 | 2016-09-07 |  |  |  |  |  |
| A1870 |  | Preparation and Submission of Suspended Ceiling | 10d | 2016-08-14 A | 2016-09-05 A | A1000 | 100% | 2016-07-05 | 2016-07-21 | ATL522 - Engineering Submission (5x9) |
| A1900 |  | Preparation and Submission of Painting to Ceiling | 7d | 2016-08-14 A | 2016-09-07 A | A1000, A1890 | 100% | 2016-08-01 | 2016-08-10 | ATL522 - Engineering Submission (5x9) |
| A1890 |  | Preparation and Submission of Gypsum Ceiling | 7d | 2016-08-21 A | 2016-09-06 A | A1000, A1870 | 100% | 2016-07-21 | 2016-08-01 | ATL522 - Engineering Submission (5x9) |
|  | 2 | **Review and Approval** |  | 2016-08-19 | 2016-09-16 |  |  |  |  |  |
| A1910 |  | Review and Approval of Suspended Ceiling | 21d | 2016-08-19 A | 2016-09-15 A | A1870 | 100% | 2016-07-21 | 2016-08-10 | ATL522 - Engineering Approval (7x9) |
| A1920 |  | Review and Approval of Gypsum Ceiling | 21d | 2016-08-21 A | 2016-09-16 A | A1890 | 100% | 2016-08-01 | 2016-08-21 | ATL522 - Engineering Approval (7x9) |
| A1930 |  | Review and Approval of Painting to Ceiling | 21d | 2016-08-21 A | 2016-09-16 A | A1900 | 100% | 2016-08-10 | 2016-08-30 | ATL522 - Engineering Approval (7x9) |
|  | 4 | **Carpentry and Joinery Material** |  | 2016-09-04 | 2017-10-10 |  |  |  |  |  |
|  | 1 | **Preparation and Submission** |  | 2016-09-04 | 2017-09-21 |  |  |  |  |  |
| A1940 |  | Preparation and Submission Internal Doors , Frames , Ironmongery and Hardware | 7d | 2016-09-04 A | 2017-09-21 A | A1000 | 100% | 2016-07-05 | 2016-07-18 | ATL522 - Engineering Submission (5x9) |
| A1950 |  | Preparation and Submission Vanities & Counters | 7d | 2016-09-04 A | 2017-08-08 A | A1000, A1940 | 100% | 2016-07-18 | 2016-07-27 | ATL522 - Engineering Submission (5x9) |
| A1960 |  | Preparation and Submission Shelves | 7d | 2016-09-04 A | 2017-08-15 A | A1950, A1000 | 100% | 2016-07-27 | 2016-08-07 | ATL522 - Engineering Submission (5x9) |
| A1970 |  | Preparation and Submission Seatings | 7d | 2016-09-04 A | 2017-08-15 A | A1960, A1000 | 100% | 2016-08-07 | 2016-08-16 | ATL522 - Engineering Submission (5x9) |
| A1980 |  | Preparation and Submission Wardrobes & Cabinets | 7d | 2016-09-04 A | 2017-08-14 A | A1000, A1970 | 100% | 2016-08-16 | 2016-08-25 | ATL522 - Engineering Submission (5x9) |
| A1990 |  | Preparation and Submission Tables | 7d | 2016-09-04 A | 2017-08-02 A | A1980, A1000 | 100% | 2016-08-25 | 2016-09-05 | ATL522 - Engineering Submission (5x9) |
|  | 2 | **Review and Approval** |  | 2016-10-23 | 2017-10-10 |  |  |  |  |  |
| A2010 |  | Review and Approval Vanities & Counters | 21d | 2016-10-23 A | 2017-09-05 A | A1950 | 100% | 2016-10-31 | 2016-11-21 | ATL522 - Engineering Approval (7x9) |
| A2020 |  | Review and Approval Shelves | 21d | 2016-10-23 A | 2017-09-03 A | A1960 | 100% | 2016-11-07 | 2016-11-28 | ATL522 - Engineering Approval (7x9) |
| A2030 |  | Review and Approval Seatings | 21d | 2016-10-23 A | 2017-09-06 A | A1970 | 100% | 2016-11-15 | 2016-12-07 | ATL522 - Engineering Approval (7x9) |
| A2040 |  | Review and Approval Wardrobes & Cabinets | 21d | 2016-10-23 A | 2017-08-30 A | A1980 | 100% | 2016-11-23 | 2016-12-15 | ATL522 - Engineering Approval (7x9) |
| A2050 |  | Review and Approval Tables | 21d | 2016-10-23 A | 2017-09-23 A | A1990 | 100% | 2016-12-01 | 2016-12-23 | ATL522 - Engineering Approval (7x9) |
| A2000 |  | Review and Approval Internal Doors , Frames , Ironmongery and Hardware | 21d | 2016-10-23 A | 2017-10-10 A | A1940 | 100% | 2016-10-23 | 2016-11-13 | ATL522 - Engineering Approval (7x9) |

| ID | WBS | Activity | Duration | Start | Finish | Predecessors | Complete | Planned start | Planned finish | Calendar |
| --- | --- | --- | --- | --- | --- | --- | --- | --- | --- | --- |
|  | 5 | **Lighting Points and Fittings** |  | 2016-09-18 | 2016-10-01 |  |  |  |  |  |
|  | 1 | **Preparation and Submission** |  | 2016-09-18 | 2016-10-01 |  |  |  |  |  |
| A2060 |  | Preparation and Submission Recessed spotlight | 10d | 2016-09-18 A | 2016-10-01 A | A1000 | 100% | 2016-09-18 | 2016-10-03 | ATL522 - Engineering Submission (5x9) |
| A2070 |  | Preparation and Submission Indirect LED Strip | 10d | 2016-09-18 A | 2016-10-01 A | A2060, A1000 | 100% | 2016-10-03 | 2016-10-17 | ATL522 - Engineering Submission (5x9) |
| A2080 |  | Preparation and Submission Cover Plates | 10d | 2016-09-18 A | 2016-10-01 A | A1000, A2070 | 100% | 2016-10-17 | 2016-10-31 | ATL522 - Engineering Submission (5x9) |
| A2090 |  | Preparation and Submission Recessed Down Light | 10d | 2016-09-18 A | 2016-10-01 A | A2080, A1000 | 100% | 2016-10-31 | 2016-11-14 | ATL522 - Engineering Submission (5x9) |
| A2100 |  | Preparation and Submission Track Light | 10d | 2016-09-18 A | 2016-10-01 A | A1000, A2090 | 100% | 2016-11-14 | 2016-11-28 | ATL522 - Engineering Submission (5x9) |
| A2110 |  | Preparation and Submission LED Pin Light | 10d | 2016-09-18 A | 2016-10-01 A | A2100, A1000 | 100% | 2016-11-28 | 2016-12-14 | ATL522 - Engineering Submission (5x9) |
|  | 2 | **Review and Approval** |  | 2016-09-18 | 2016-10-01 |  |  |  |  |  |
| A2120 |  | Review and Approval Recessed spotlight | 21d | 2016-09-18 A | 2016-10-01 A | A2060 | 100% | 2016-10-14 | 2016-11-03 | ATL522 - Engineering Approval (7x9) |
| A2130 |  | Review and Approval Indirect LED Strip | 21d | 2016-09-18 A | 2016-10-01 A | A2070 | 100% | 2016-10-27 | 2016-11-16 | ATL522 - Engineering Approval (7x9) |
| A2140 |  | Review and Approval Cover Plates | 21d | 2016-09-18 A | 2016-10-01 A | A2080 | 100% | 2016-11-09 | 2016-11-29 | ATL522 - Engineering Approval (7x9) |
| A2150 |  | Review and Approval Recessed Down Light | 21d | 2016-09-18 A | 2016-10-01 A | A2090 | 100% | 2016-11-22 | 2016-12-14 | ATL522 - Engineering Approval (7x9) |
| A2160 |  | Review and Approval Track Light | 21d | 2016-09-18 A | 2016-10-01 A | A2100 | 100% | 2016-12-06 | 2016-12-27 | ATL522 - Engineering Approval (7x9) |
| A2170 |  | Review and Approval LED Pin Light | 21d | 2016-09-18 A | 2016-10-01 A | A2110 | 100% | 2016-12-20 | 2017-01-09 | ATL522 - Engineering Approval (7x9) |
|  | 6 | **Aluminium and Glazing Works** |  | 2016-08-28 | 2017-11-23 |  |  |  |  |  |
|  | 1 | **Preparation and Submission** |  | 2016-08-28 | 2017-11-09 |  |  |  |  |  |
| A2180 |  | Preparation and Submission Internal Glazed Partitions/ Dividing Screens | 14d | 2016-08-28 A | 2017-08-16 A | A1000 | 100% | 2016-07-05 | 2016-07-27 | ATL522 - Engineering Submission (5x9) |
| A2190 |  | Preparation and Submission Internal Glazed Doors | 14d | 2016-09-04 A | 2017-05-09 A | A1000, A2180 | 100% | 2016-07-27 | 2016-08-16 | ATL522 - Engineering Submission (5x9) |
| A2200 |  | Preparation and Submission Windows | 14d | 2016-09-04 A | 2017-11-08 A | A2190, A1000 | 100% | 2016-08-16 | 2016-09-05 | ATL522 - Engineering Submission (5x9) |
| A2210 |  | Preparation and Submission Balustrades and Railing | 14d | 2016-09-04 A | 2017-11-09 A | A1000, A2200 | 100% | 2016-09-05 | 2016-09-28 | ATL522 - Engineering Submission (5x9) |
|  | 2 | **Review and Approval** |  | 2016-09-04 | 2017-11-23 |  |  |  |  |  |
| A2220 |  | Review and Approval Internal Glazed Partitions/ Dividing Screens | 21d | 2016-09-04 A | 2017-08-21 A | A2180 | 100% | 2016-07-27 | 2016-08-16 | ATL522 - Engineering Approval (7x9) |
| A2230 |  | Review and Approval Internal Glazed Doors | 21d | 2016-09-04 A | 2017-05-27 A | A2190 | 100% | 2016-08-16 | 2016-09-05 | ATL522 - Engineering Approval (7x9) |
| A2250 |  | Review and Approval Balustrades and Railing | 21d | 2016-09-04 A | 2017-11-15 A | A2210 | 100% | 2016-09-28 | 2016-10-19 | ATL522 - Engineering Approval (7x9) |
| A2240 |  | Review and Approval Windows | 21d | 2016-09-15 A | 2017-11-23 A | A2200 | 100% | 2016-09-05 | 2016-09-28 | ATL522 - Engineering Approval (7x9) |

| ID | WBS | Activity | Duration | Start | Finish | Predecessors | Complete | Planned start | Planned finish | Calendar |
| --- | --- | --- | --- | --- | --- | --- | --- | --- | --- | --- |
|  | 7 | **Sanitary Appliances and Accessories** |  | 2016-09-18 | 2018-02-28 |  |  |  |  |  |
|  | 1 | **Preparation and Submission** |  | 2016-09-18 | 2018-02-24 |  |  |  |  |  |
| A2980 |  | Preparation and Submission of Sanitary Equipment & Fixture | 35d | 2016-09-18 A | 2018-02-24 A | A1000 | 100% | 2016-09-18 | 2016-11-07 | ATL522 - Engineering Submission (5x9) |
|  | 2 | **Review and Approval** |  | 2016-11-06 | 2018-02-28 |  |  |  |  |  |
| A2990 |  | Review and Approval of Sanitary Equipment & Fixture | 21d | 2016-11-06 A | 2018-02-28 A | A2980 | 100% | 2016-12-21 | 2017-01-11 | ATL522 - Engineering Approval (7x9) |
|  | 3 | **Procurement Phase** |  | 2016-08-21 | 2018-05-03 |  |  |  |  |  |
|  | 2 | **Floor Material** |  | 2016-08-21 | 2018-02-06 |  |  |  |  |  |
| A2380 |  | Fabrication and Delivery Carpet Flooring | 84d | 2016-08-21 A | 2017-10-05 A | A1420 FF+21d, A1500 FF+21d, A1000, A1650, A1360 FF+21d, A1380 FF+21d, A5200 FF+21d, A5240 FF+21d, A1480 FF+21d, A1460 FF+21d, A5590 FF+21d, A5220 FF+21d, A5350 FF+21d, A1400 FF+21d | 100% | 2016-09-17 | 2016-12-13 | ATL522 - Local Procurment (7x24) |
| A2340 |  | Fabrication and Delivery Metal Flooring | 70d | 2016-09-29 A | 2018-02-02 A | A1360 FF+21d, A1380 FF+21d, A1480 FF+21d, A1610, A1000, A1420 FF+21d, A1460 FF+21d, A1500 FF+21d, A5350 FF+21d, A5220 FF+21d, A1400 FF+21d, A5590 FF+21d, A5200 FF+21d, A5240 FF+21d | 100% | 2016-10-09 | 2016-12-20 | ATL522 - Local Procurment (7x24) |
| A2360 |  | Fabrication and Delivery Floor Tiling | 70d | 2016-10-16 A | 2017-10-30 A | A5590 FF+21d, A5200 FF+21d, A5240 FF+21d, A1630, A5220 FF+21d, A1400 FF+21d, A1460 FF+21d, A1380 FF+21d, A1420 FF+21d, A1000, A1360 FF+21d, A1500 FF+21d, A5350 FF+21d, A1480 FF+21d | 100% | 2016-11-17 | 2017-01-28 | ATL522 - EU Procurment (7x24) |
| A2370 |  | Fabrication and Delivery Stone Flooring | 70d | 2016-12-05 A | 2017-12-06 A | A1420 FF+21d, A5220 FF+21d, A5350 FF+21d, A1640, A1500 FF+21d, A1460 FF+21d, A5590 FF+21d, A1480 FF+21d, A1360 FF+21d, A1400 FF+21d, A5200 FF+21d, A5240 FF+21d, A1380 FF+21d, A1000 | 100% | 2017-01-25 | 2017-04-05 | ATL522 - Local Procurment (7x24) |
| A2350 |  | Fabrication and Delivery Wooden Flooring | 70d | 2017-01-04 A | 2017-11-04 A | A5220 FF+21d, A5200 FF+21d, A1000, A1420 FF+21d, A1460 FF+21d, A1360 FF+21d, A1380 FF+21d, A1400 FF+21d, A1500 FF+21d, A5590 FF+21d, A1480 FF+21d, A1620, A5350 FF+21d, A5240 FF+21d | 100% | 2017-02-03 | 2017-04-14 | ATL522 - Local Procurment (7x24) |
| A2390 |  | Fabrication and Delivery Vinyl Flooring | 77d | 2018-01-11 A | 2018-02-04 A | A1420 FF+21d, A5350 FF+21d, A1000, A1380 FF+21d, A1360 FF+21d, A1500 FF+21d, A5200 FF+21d, A1480 FF+21d, A1660, A1400 FF+21d, A1460 FF+21d, A5240 FF+21d, A5590 FF+21d, A5220 FF+21d | 100% | 2018-01-11 | 2018-03-29 | ATL522 - Local Procurment (7x24) |
| A2400 |  | Fabrication and Delivery Floor Painting | 42d | 2018-01-11 A | 2018-02-06 A | A5350 FF+21d, A5240 FF+21d, A1380 FF+21d, A5590 FF+21d, A1670, A1420 FF+21d, A1460 FF+21d, A1000, A5200 FF+21d, A1480 FF+21d, A1360 FF+21d, A1500 FF+21d, A5220 FF+21d, A1400 FF+21d | 100% | 2018-01-11 | 2018-02-22 | ATL522 - Local Procurment (7x24) |
| A2410 |  | Fabrication and Delivery Rubber Flooring | 70d | 2018-01-13 A | 2018-02-04 A | A1000, A1380 FF+21d, A5200 FF+21d, A1480 FF+21d, A1360 FF+21d, A1460 FF+21d, A5350 FF+21d, A5220 FF+21d, A1400 FF+21d, A1680, A1420 FF+21d, A5590 FF+21d, A5240 FF+21d, A1500 FF+21d | 100% | 2018-01-11 | 2018-03-22 | ATL522 - Local Procurment (7x24) |
|  | 1 | **Wall Material** |  | 2016-09-04 | 2018-02-07 |  |  |  |  |  |
| A2510 |  | Fabrication and Delivery of Paint Finish to Walls | 14d | 2016-09-04 A | 2017-12-10 A | A1380 FF+21d, A1420 FF+21d, A5200 FF+21d, A5240 FF+21d, A5590 FF+21d, A5220 FF+21d, A1400 FF+21d, A1360 FF+21d, A1500 FF+21d, A5350 FF+21d, A1460 FF+21d, A1480 FF+21d, A1780 | 100% | 2016-10-06 | 2016-10-20 | ATL522 - Local Procurment (7x24) |
| A2540 |  | Fabrication and Delivery of Metal Finish to Wall | 63d | 2016-09-29 A | 2018-02-07 A | A1460 FF+21d, A1480 FF+21d, A1420 FF+21d, A1500 FF+21d, A5240 FF+21d, A5350 FF+21d, A1810, A5590 FF+21d, A5200 FF+21d, A1360 FF+21d, A1380 FF+21d, A5220 FF+21d, A1400 FF+21d | 100% | 2016-10-27 | 2016-12-31 | ATL522 - Local Procurment (7x24) |
| A2570 |  | Fabrication and Delivery of Wood Wall Panels | 63d | 2016-09-29 A | 2017-12-02 A | A1380 FF+21d, A5240 FF+21d, A5590 FF+21d, A1500 FF+21d, A1420 FF+21d, A5220 FF+21d, A5200 FF+21d, A1480 FF+21d, A5350 FF+21d, A1360 FF+21d, A1460 FF+21d, A1840, A1400 FF+21d | 100% | 2016-11-27 | 2017-01-31 | ATL522 - Local Procurment (7x24) |
| A2530 |  | Fabrication and Delivery of Wall Tiling | 63d | 2016-10-16 A | 2017-11-26 A | A5350 FF+21d, A1480 FF+21d, A5240 FF+21d, A1800, A1360 FF+21d, A1500 FF+21d, A5200 FF+21d, A5590 FF+21d, A5220 FF+21d, A1420 FF+21d, A1400 FF+21d, A1380 FF+21d, A1460 FF+21d | 100% | 2016-11-14 | 2017-01-18 | ATL522 - EU Procurment (7x24) |
| A2550 |  | Fabrication and Delivery of Wall Paper | 49d | 2016-10-16 A | 2017-11-14 A | A1480 FF+21d, A1820, A1460 FF+21d, A1360 FF+21d, A5200 FF+21d, A1400 FF+21d, A5590 FF+21d, A5240 FF+21d, A1420 FF+21d, A1500 FF+21d, A5350 FF+21d, A1380 FF+21d, A5220 FF+21d | 100% | 2016-11-25 | 2017-01-15 | ATL522 - Local Procurment (7x24) |
| A2580 |  | Fabrication and Delivery of Glass/Mirrors | 35d | 2016-11-06 A | 2017-12-05 A | A1850, A1360 FF+21d, A5200 FF+21d, A1400 FF+21d, A5350 FF+21d, A1420 FF+21d, A5220 FF+21d, A1380 FF+21d, A1500 FF+21d, A5240 FF+21d, A1460 FF+21d, A1480 FF+21d, A5590 FF+21d | 100% | 2016-12-30 | 2017-02-03 | ATL522 - Local Procurment (7x24) |
| A2590 |  | Fabrication and Delivery of Brick Panel | 35d | 2016-12-10 A | 2017-12-14 A | A1500 FF+21d, A5240 FF+21d, A1380 FF+21d, A5350 FF+21d, A1400 FF+21d, A1420 FF+21d, A1460 FF+21d, A1480 FF+21d, A1360 FF+21d, A5590 FF+21d, A5200 FF+21d, A5220 FF+21d, A1860 | 100% | 2017-02-20 | 2017-03-27 | ATL522 - Local Procurment (7x24) |
| A2560 |  | Fabrication and Delivery of Clear Acrylic Panel | 49d | 2017-05-15 A | 2018-02-05 A | A5240 FF+21d, A5350 FF+21d, A1480 FF+21d, A5590 FF+21d, A5220 FF+21d, A1420 FF+21d, A1460 FF+21d, A1360 FF+21d, A1380 FF+21d, A1500 FF+21d, A1830, A5200 FF+21d, A1400 FF+21d | 100% | 2017-06-25 | 2017-08-13 | ATL522 - Local Procurment (7x24) |
| A2520 |  | Fabrication and Delivery of Stone Finish to Wall | 63d | 2017-07-02 A | 2017-12-20 A | A1500 FF+21d, A5590 FF+21d, A1790, A1480 FF+21d, A1420 FF+21d, A5200 FF+21d, A5240 FF+21d, A5350 FF+21d, A1400 FF+21d, A1360 FF+21d, A5220 FF+21d, A1380 FF+21d, A1460 FF+21d | 100% | 2017-07-22 | 2017-09-23 | ATL522 - Local Procurment (7x24) |

| ID | WBS | Activity | Type | Duration | Start | Finish | Predecessors | Complete | Remaining | Planned start | Planned finish | Total float | Free float | Calendar |
| --- | --- | --- | --- | --- | --- | --- | --- | --- | --- | --- | --- | --- | --- | --- |
|  | 3 | **Celing Material** |  |  | 2016-09-11 | 2017-08-27 |  |  |  |  |  |  |  |  |
| A2650 |  | Fabrication and Delivery of Painting to Ceiling |  | 42d | 2016-09-11 A | 2017-08-23 A | A1500 FF+21d, A5590 FF+21d, A1400 FF+21d, A1930, A1460 FF+21d, A1380 FF+21d, A1420 FF+21d, A1360 FF+21d, A5220 FF+21d, A5200 FF+21d, A5350 FF+21d, A5240 FF+21d, A1480 FF+21d | 100% |  | 2016-10-31 | 2016-12-14 |  |  | ATL522 - Local Procurment (7x24) |
| A2630 |  | Fabrication and Delivery of Suspended Ceiling |  | 70d | 2016-09-18 A | 2017-06-10 A | A5220 FF+21d, A1360 FF+21d, A1910, A1380 FF+21d, A1420 FF+21d, A1500 FF+21d, A5590 FF+21d, A1400 FF+21d, A5200 FF+21d, A1460 FF+21d, A5240 FF+21d, A5350 FF+21d, A1480 FF+21d | 100% |  | 2016-10-03 | 2016-12-14 |  |  | ATL522 - Local Procurment (7x24) |
| A2640 |  | Fabrication and Delivery of Gypsum Ceiling |  | 49d | 2016-09-18 A | 2017-08-27 A | A1920, A5240 FF+21d, A1500 FF+21d, A1380 FF+21d, A1460 FF+21d, A5350 FF+21d, A5590 FF+21d, A5220 FF+21d, A1480 FF+21d, A5200 FF+21d, A1360 FF+21d, A1420 FF+21d, A1400 FF+21d | 100% |  | 2016-10-24 | 2016-12-14 |  |  | ATL522 - Local Procurment (7x24) |
|  | 4 | **Carpentry and Joinery Material** |  |  | 2016-09-29 | 2018-05-03 |  |  |  |  |  |  |  |  |
| A2730 |  | Fabrication and Delivery Vanities & Counters |  | 91d | 2016-09-29 A | 2017-12-28 A | A5590 FF+21d, A5350 FF+21d, A1400 FF+21d, A5240 FF+21d, A1460 FF+21d, A5200 FF+21d, A1480 FF+21d, A2010, A1500 FF+21d, A1360 FF+21d, A1380 FF+21d, A1420 FF+21d, A5220 FF+21d | 100% |  | 2016-11-01 | 2017-02-02 |  |  | ATL522 - Local Procurment (7x24) |
| A2720 |  | Fabrication and Delivery Internal Doors , Frames , Ironmongery and Hardware |  | 84d | 2017-07-16 A | 2017-12-28 A | A1360 FF+21d, A1420 FF+21d, A1500 FF+21d, A5220 FF+21d, A5590 FF+21d, A1400 FF+21d, A1460 FF+21d, A5200 FF+21d, A5240 FF+21d, A5350 FF+21d, A2000, A1380 FF+21d, A1480 FF+21d | 100% |  | 2017-08-23 | 2017-11-15 |  |  | ATL522 - Local Procurment (7x24) |
| A2740 |  | Fabrication and Delivery Shelves |  | 77d | 2017-08-08 A | 2017-12-28 A | A5590 FF+21d, A1360 FF+21d, A5220 FF+21d, A1380 FF+21d, A1460 FF+21d, A1400 FF+21d, A2020, A5200 FF+21d, A5350 FF+21d, A5240 FF+21d, A1420 FF+21d, A1500 FF+21d, A1480 FF+21d | 100% |  | 2017-09-05 | 2017-11-21 |  |  | ATL522 - Local Procurment (7x24) |
| A2760 |  | Fabrication and Delivery Wardrobes & Cabinets |  | 84d | 2017-08-26 A | 2018-02-12 A | A2040, A5590 FF+21d, A5240 FF+21d, A1360 FF+21d, A1380 FF+21d, A1420 FF+21d, A1460 FF+21d, A1500 FF+21d, A5200 FF+21d, A5350 FF+21d, A1480 FF+21d, A5220 FF+21d, A1400 FF+21d | 100% |  | 2017-08-30 | 2017-11-22 |  |  | ATL522 - Local Procurment (7x24) |
| A2750 |  | Fabrication and Delivery Seatings |  | 77d | 2018-03-22 A | 2018-05-03 | A5200 FF+21d, A5220 FF+21d, A1380 FF+21d, A1460 FF+21d, A5350 FF+21d, A1360 FF+21d, A1500 FF+21d, A1420 FF+21d, A5590 FF+21d, A1480 FF+21d, A2030, A5240 FF+21d, A1400 FF+21d | 90% | 7.7d | 2018-03-22 | 2018-06-07 | -441.7d | 89.75d | ATL522 - Local Procurment (7x24) |
| A2770 |  | Fabrication and Delivery Tables |  | 77d | 2018-03-22 A | 2018-05-03 | A1460 FF+21d, A1480 FF+21d, A5240 FF+21d, A5590 FF+21d, A1420 FF+21d, A1500 FF+21d, A2050, A5220 FF+21d, A5200 FF+21d, A5350 FF+21d, A1400 FF+21d, A1380 FF+21d, A1360 FF+21d | 90% | 7.7d | 2018-03-22 | 2018-06-07 | -441.7d | 89.75d | ATL522 - Local Procurment (7x24) |
|  | 5 | **Lighting Points and Fittings** |  |  | 2017-12-18 | 2018-03-01 |  |  |  |  |  |  |  |  |
| A2840 |  | Fabrication and Delivery Recessed spotlight | milestone | 0d | 2017-12-18 A | 2017-12-18 A | A1460 FF+21d, A5240 FF+21d, A1400 FF+21d, A2120, A5200 FF+21d, A5350 FF+21d, A1360 FF+21d, A1480 FF+21d, A1500 FF+21d, A1380 FF+21d, A5590 FF+21d, A1420 FF+21d, A5220 FF+21d | 100% |  | 2017-12-14 | 2017-12-14 |  |  | ATL522 - Local Procurment (7x24) |
| A2870 |  | Fabrication and Delivery Recessed Down Light | milestone | 0d | 2017-12-21 A | 2017-12-21 A | A1420 FF+21d, A1460 FF+21d, A5200 FF+21d, A1400 FF+21d, A1500 FF+21d, A5240 FF+21d, A2150, A1480 FF+21d, A1360 FF+21d, A1380 FF+21d, A5220 FF+21d, A5590 FF+21d, A5350 FF+21d | 100% |  |  |  |  |  | ATL522 - Local Procurment (7x24) |
| A2880 |  | Fabrication and Delivery Track Light | milestone | 0d | 2018-01-11 A | 2018-01-11 A | A1500 FF+21d, A1480 FF+21d, A5240 FF+21d, A1420 FF+21d, A5350 FF+21d, A2160, A1380 FF+21d, A5590 FF+21d, A1360 FF+21d, A1460 FF+21d, A5200 FF+21d, A1400 FF+21d, A5220 FF+21d | 100% |  |  |  |  |  | ATL522 - Local Procurment (7x24) |
| A2850 |  | Fabrication and Delivery Indirect LED Strip | milestone | 0d | 2018-02-01 A | 2018-02-01 A | A5220 FF+21d, A5200 FF+21d, A5590 FF+21d, A1360 FF+21d, A2130, A1500 FF+21d, A1480 FF+21d, A1380 FF+21d, A1420 FF+21d, A1460 FF+21d, A5240 FF+21d, A5350 FF+21d, A1400 FF+21d | 100% |  |  |  |  |  | ATL522 - Local Procurment (7x24) |
| A2890 |  | Fabrication and Delivery LED Pin Light | milestone | 0d | 2018-02-01 A | 2018-02-01 A | A1500 FF+21d, A1380 FF+21d, A1420 FF+21d, A5240 FF+21d, A5220 FF+21d, A5590 FF+21d, A5200 FF+21d, A1400 FF+21d, A2170, A1360 FF+21d, A5350 FF+21d, A1480 FF+21d, A1460 FF+21d | 100% |  |  |  |  |  | ATL522 - Local Procurment (7x24) |
| A2860 |  | Fabrication and Delivery Cover Plates | milestone | 0d | 2018-03-01 A | 2018-03-01 A | A5220 FF+21d, A1420 FF+21d, A1400 FF+21d, A5350 FF+21d, A1480 FF+21d, A1380 FF+21d, A1460 FF+21d, A1500 FF+21d, A5200 FF+21d, A2140, A1360 FF+21d, A5590 FF+21d, A5240 FF+21d | 100% |  |  |  |  |  | ATL522 - Local Procurment (7x24) |
|  | 6 | **Aluminium and Glazing Works** |  |  | 2017-09-27 | 2018-04-29 |  |  |  |  |  |  |  |  |
| A2940 |  | Fabrication and Delivery Internal Glazed Partitions/ Dividing Screens |  | 63d | 2017-09-27 A | 2018-04-29 | A5350 FF+21d, A1360 FF+21d, A1400 FF+21d, A1460 FF+21d, A1380 FF+21d, A5590 FF+21d, A2220, A5200 FF+21d, A5220 FF+21d, A5240 FF+21d, A1480 FF+21d, A1500 FF+21d, A1420 FF+21d | 95% | 3.15d | 2017-09-29 | 2017-12-01 | -437.15d | 0d | ATL522 - Local Procurment (7x24) |
| A2950 |  | Fabrication and Delivery Internal Glazed Doors |  | 63d | 2017-09-27 A | 2018-02-07 A | A1380 FF+21d, A5590 FF+21d, A1400 FF+21d, A2230, A1500 FF+21d, A1480 FF+21d, A1420 FF+21d, A1360 FF+21d, A1460 FF+21d, A5200 FF+21d, A5350 FF+21d, A5220 FF+21d, A5240 FF+21d | 100% |  | 2017-09-29 | 2017-12-01 |  |  | ATL522 - Local Procurment (7x24) |
| A2960 |  | Fabrication and Delivery Windows |  | 70d | 2017-09-27 A | 2018-04-29 | A1460 FF+21d, A5240 FF+21d, A1360 FF+21d, A1420 FF+21d, A1500 FF+21d, A1480 FF+21d, A5350 FF+21d, A5590 FF+21d, A2240, A1380 FF+21d, A5200 FF+21d, A1400 FF+21d, A5220 FF+21d | 95% | 3.5d | 2017-09-29 | 2017-12-08 | -437.5d | 0d | ATL522 - Local Procurment (7x24) |
| A2970 |  | Fabrication and Delivery Balustrades and Railing |  | 77d | 2017-09-28 A | 2018-03-10 A | A5220 FF+21d, A1500 FF+21d, A5590 FF+21d, A5200 FF+21d, A1480 FF+21d, A1400 FF+21d, A1380 FF+21d, A1460 FF+21d, A2250, A5350 FF+21d, A1360 FF+21d, A1420 FF+21d, A5240 FF+21d | 100% |  | 2017-10-02 | 2017-12-18 |  |  | ATL522 - Local Procurment (7x24) |
|  | 7 | **Sanitary Appliances and Accessories** |  |  | 2018-01-21 | 2018-02-06 |  |  |  |  |  |  |  |  |
| A3000 |  | Fabrication and Delivery of Sanitary Equipment & Fixture |  | 77d | 2018-01-21 A | 2018-02-06 A | A1380 FF+21d, A1500 FF+21d, A5350 FF+21d, A2990, A1420 FF+21d, A5220 FF+21d, A5590 FF+21d, A5200 FF+21d, A1480 FF+21d, A1460 FF+21d, A1400 FF+21d, A1360 FF+21d, A5240 FF+21d | 100% |  | 2018-02-20 | 2018-05-08 |  |  | ATL522 - EU Procurment (7x24) |

| ID | WBS | Activity | Type | Duration | Start | Finish | Predecessors | Complete | Remaining | Planned start | Planned finish | Total float | Free float | Calendar | Resources |
| --- | --- | --- | --- | --- | --- | --- | --- | --- | --- | --- | --- | --- | --- | --- | --- |
|  | 4 | **Construction** |  |  | 2017-01-26 | 2018-06-25 |  |  |  |  |  |  |  |  |  |
|  | 2 | **BILL 17.2 - P1 - PUBLIC TOILETS** |  |  | 2017-06-01 | 2018-05-07 |  |  |  |  |  |  |  |  |  |
| A3240 |  | Measurement , Framing and Enabling Works |  | 14.22d | 2017-06-01 A | 2017-06-12 A | A3230, A1120 | 100% |  | 2017-07-30 | 2017-08-15 |  |  |  | Bitumin Paint [2000 M2] |
| A3280 |  | Screed |  | 5.11d | 2017-06-03 A | 2017-06-05 A | A1120, A3270 | 100% |  | 2017-09-20 | 2017-09-26 |  |  |  | Bitumin Paint [7000 M2] |
| A3220 |  | Prerequisite for Civil Works (MEP 1st , 2nd Fix and Block Works) | milestone | 0d | 2017-06-08 A | 2017-06-08 A | A1120 | 100% |  | 2017-07-27 | 2017-07-27 |  |  |  |  |
| A3230 |  | Area Clearance Process |  | 2.11d | 2017-06-10 A | 2017-07-15 A | A1120, A3220 | 100% |  | 2017-07-27 | 2017-07-30 |  |  |  | Bitumin Paint |
| A3310 |  | Floor Tiling |  | 14.22d | 2017-06-10 A | 2017-08-08 A | A1120, A3290, A2360, A2370 | 100% |  | 2017-09-18 | 2017-10-04 |  |  |  | Bitumin Paint [1944 M2] |
| A3290 |  | Wall Cladding |  | 14.28d | 2017-06-12 A | 2018-01-04 A | A1120, A2530, A3280, A2520 | 100% |  | 2017-09-02 | 2017-09-18 |  |  |  | Bitumin Paint [8880 M2] |
| A3340 |  | Joinery and Carpentry Works |  | 14.22d | 2017-06-28 A | 2018-02-01 A | A1220, A1120, A2730, A3310 | 100% |  | 2017-10-10 | 2017-10-26 |  |  |  | Bitumin Paint [100171 M2] |
| A3260 |  | MEP Celing Closure Clearance |  | 3.06d | 2017-07-22 A | 2017-07-24 A | A3250, A1120 | 100% |  | 2017-09-05 | 2017-09-09 |  |  |  | Bitumin Paint |
| A3250 |  | Installation of Ceiling System |  | 10.22d | 2017-07-24 A | 2017-08-22 A | A3240, A2630, A1120 | 100% |  | 2017-08-23 | 2017-09-05 |  |  |  | Bitumin Paint [15313 M2] |
| A3270 |  | Ceiling Closure |  | 10.17d | 2017-09-05 A | 2017-10-05 A | A1120, A3260, A2640 | 100% |  | 2017-10-14 | 2017-10-25 |  |  |  | Bitumin Paint [15313 M2] |
| A3300 |  | Paint Works |  | 61.17d | 2017-11-14 A | 2018-04-29 | A3270, A2650, A2510, A1120 | 95% | 3d | 2017-11-23 | 2018-02-03 | -382d | 0d |  | Bitumin Paint [783 M2] |
| A3360 |  | Doors , Frames , Ironmongery and Hardware |  | 3.06d | 2017-11-14 A | 2018-02-07 A | A1220, A3370, A1120, A2720 | 100% |  | 2017-12-23 | 2017-12-26 |  |  |  | Bitumin Paint [55285 M2] |
| A3350 |  | Aluminium and Glazing Works |  | 7.11d | 2018-01-17 A | 2018-03-01 A | A2950, A3340, A2940, A1120 | 100% |  | 2018-01-23 | 2018-01-31 |  |  |  | Bitumin Paint [8550 M2] |
| A3380 |  | Lighting Points and Fittings |  | 7.11d | 2018-03-01 A | 2018-04-26 | A3360, A2860, A1120 | 95% | 0.35d | 2018-03-12 | 2018-03-20 | -379.35d | 2.65d |  | Bitumin Paint [11532 M2] |
| A3390 |  | Sanitary Equipment & Fixture |  | 7d | 2018-03-06 A | 2018-03-14 A | A3370, A3000 | 100% |  | 2018-03-17 | 2018-03-24 |  |  | 7x24 | Bitumin Paint [44055 M2] |
| A3370 |  | Wall Covering |  | 3.06d | 2018-03-15 A | 2018-04-26 | A1220, A1120, A3350, A2550 | 90% | 0.3d | 2018-03-20 | 2018-03-24 | -372.3d | 83.06d |  | Bitumin Paint [27761 M2] |
| A3400 |  | Snagging and De-Snagging |  | 7d | 2018-04-30 | 2018-05-07 | A3380, A2340, A2380, A3390, A1120, A3300 |  |  |  |  | -382d | 73.36d |  |  |
|  | 3 | **BILL 21 - P1 - KID'S CLUB** |  |  | 2017-12-06 | 2017-12-07 |  |  |  |  |  |  |  |  |  |
| A3420 |  | Area Clearance Process |  | 2.11d | 2017-12-06 A | 2017-12-07 A | A3410, A1130 | 100% |  | 2017-08-17 | 2017-08-20 |  |  |  | Bitumin Paint |
| A3430 |  | Measurement , Framing and Enabling Works |  | 14.22d | 2017-12-06 A | 2017-12-07 A | A3420, A1130 | 100% |  | 2017-02-07 | 2017-02-23 |  |  |  | Bitumin Paint |
| A3440 |  | Installation of Ceiling System |  | 10.22d | 2017-12-06 A | 2017-12-07 A | A1130, A3430, A2630 | 100% |  | 2017-11-29 | 2017-12-11 |  |  |  | Bitumin Paint |
| A3450 |  | MEP Celing Closure Clearance |  | 3d | 2017-12-06 A | 2017-12-07 A | A3440, A1130 | 100% |  | 2017-12-11 | 2017-12-14 |  |  |  | Bitumin Paint |
| A3460 |  | Ceiling Closure |  | 10.22d | 2017-12-06 A | 2017-12-07 A | A2640, A1130, A3450 | 100% |  | 2017-12-14 | 2017-12-26 |  |  |  | Bitumin Paint |
| A3470 |  | Screed |  | 3.06d | 2017-12-06 A | 2017-12-07 A | A1130, A3460 | 100% |  | 2017-12-26 | 2017-12-30 |  |  |  | Bitumin Paint |
| A3480 |  | Wall Cladding |  | 10.11d | 2017-12-06 A | 2017-12-07 A | A3470, A2580, A2560, A2520, A2530, A1130 | 100% |  | 2017-09-24 | 2017-10-05 |  |  |  | Bitumin Paint |
| A3490 |  | Paint Works |  | 61.11d | 2017-12-06 A | 2017-12-07 A | A1130, A2650, A3460, A2510 | 100% |  | 2017-12-26 | 2018-03-07 |  |  |  | Bitumin Paint |
| A3500 |  | Floor Tiling |  | 7.11d | 2017-12-06 A | 2017-12-07 A | A3480, A1130, A2370, A2360 | 100% |  | 2017-10-04 | 2017-10-12 |  |  |  | Bitumin Paint |
| A3510 |  | Wooden Wall Panelling |  | 10.22d | 2017-12-06 A | 2017-12-07 A | A2570, A1130, A3500, A1230 | 100% |  | 2017-09-14 | 2017-09-26 |  |  |  | Bitumin Paint |
| A3520 |  | Wooden Flooring |  | 7.11d | 2017-12-06 A | 2017-12-07 A | A2350, A1230, A3510, A1130 | 100% |  | 2018-01-09 | 2018-01-17 |  |  |  | Bitumin Paint |
| A3530 |  | Joinery and Carpentry Works |  | 14.28d | 2017-12-06 A | 2017-12-07 A | A2760, A1230, A3520, A2730, A1130, A2740 | 100% |  | 2017-10-28 | 2017-11-13 |  |  |  | Bitumin Paint |
| A3540 |  | Aluminium and Glazing Works |  | 7.11d | 2017-12-06 A | 2017-12-07 A | A2950, A2940, A1130, A3530 | 100% |  | 2018-01-24 | 2018-02-01 |  |  |  | Bitumin Paint |
| A3550 |  | Doors , Frames , Ironmongery and Hardware |  | 3.11d | 2017-12-06 A | 2017-12-07 A | A2720, A3560 SS, A1230, A1130 | 100% |  | 2018-02-01 | 2018-02-05 |  |  |  | Bitumin Paint |
| A3560 |  | Wall Covering |  | 4.06d | 2017-12-06 A | 2017-12-07 A | A2550, A1130, A3540 | 100% |  | 2018-01-27 | 2018-01-31 |  |  |  | Bitumin Paint |
| A3570 |  | Lighting Points and Fittings |  | 5.11d | 2017-12-06 A | 2017-12-07 A | A2850, A2860, A3550 SS, A2840, A2880, A2870, A2890, A1130 | 100% |  | 2018-02-01 | 2018-02-07 |  |  |  | Bitumin Paint |
| A3580 |  | Carpet / Vinyle / Rubber |  | 3.11d | 2017-12-06 A | 2017-12-07 A | A3490, A2390, A2410, A1130, A2380, A3570, A2340 | 100% |  | 2018-03-07 | 2018-03-11 |  |  |  | Bitumin Paint |
| A3590 |  | Snagging and De-Snagging |  | 7.17d | 2017-12-06 A | 2017-12-07 A | A5120, A1130, A3490, A3580 | 100% |  | 2018-03-15 | 2018-03-24 |  |  |  | Bitumin Paint |
| A5120 |  | Sanitary Equipment & Fixture |  | 5d | 2017-12-06 A | 2017-12-07 A | A3000, A3560 | 100% |  | 2018-03-10 | 2018-03-15 |  |  | 7x24 | Bitumin Paint |
| A3410 |  | Prerequisite for Civil Works (MEP 1st , 2nd Fix and Block Works) | milestone | 0d | 2017-12-07 A | 2017-12-07 A | A1130 | 100% |  | 2017-02-05 | 2017-02-05 |  |  |  |  |

| ID | WBS | Activity | Type | Duration | Start | Finish | Predecessors | Complete | Remaining | Planned start | Planned finish | Total float | Free float | Resources |
| --- | --- | --- | --- | --- | --- | --- | --- | --- | --- | --- | --- | --- | --- | --- |
|  | 4 | **BILL 24 - 8F - GYM - TOWER C** |  |  | 2017-12-06 | 2017-12-07 |  |  |  |  |  |  |  |  |
| A3610 |  | Area Clearance Process |  | 2.11d | 2017-12-06 A | 2017-12-07 A | A3600, A1140 | 100% |  | 2017-08-24 | 2017-08-27 |  |  | Bitumin Paint |
| A3620 |  | Measurement , Framing and Enabling Works |  | 14.22d | 2017-12-06 A | 2017-12-07 A | A1140, A3610 | 100% |  | 2017-08-27 | 2017-09-12 |  |  | Bitumin Paint |
| A3630 |  | Installation of Ceiling System |  | 10.22d | 2017-12-06 A | 2017-12-07 A | A1140, A3620, A2630 | 100% |  | 2017-09-19 | 2017-10-01 |  |  | Bitumin Paint |
| A3640 |  | MEP Celing Closure Clearance |  | 3d | 2017-12-06 A | 2017-12-07 A | A1140, A3630 | 100% |  | 2017-10-01 | 2017-10-04 |  |  | Bitumin Paint |
| A3650 |  | Ceiling Closure |  | 10.11d | 2017-12-06 A | 2017-12-07 A | A3640, A1140, A2640 | 100% |  | 2017-12-10 | 2017-12-21 |  |  | Bitumin Paint |
| A3660 |  | Screed |  | 3.06d | 2017-12-06 A | 2017-12-07 A | A3650, A1140 | 100% |  | 2017-10-17 | 2017-10-21 |  |  | Bitumin Paint |
| A3670 |  | Wall Cladding |  | 10.17d | 2017-12-06 A | 2017-12-07 A | A3660, A2540, A1140, A2520, A2580 | 100% |  | 2018-01-13 | 2018-01-24 |  |  | Bitumin Paint |
| A3680 |  | Paint Works and Floor Painting |  | 61.17d | 2017-12-06 A | 2017-12-07 A | A2510, A1140, A3650, A2400 FF+14d, A2650 | 100% |  | 2017-12-21 | 2018-03-03 |  |  | Bitumin Paint |
| A3690 |  | Floor Tiling |  | 7.11d | 2017-12-06 A | 2017-12-07 A | A1140, A2370, A3670, A2360 | 100% |  | 2018-01-24 | 2018-02-01 |  |  | Bitumin Paint |
| A3700 |  | Wooden Wall Panelling |  | 10.22d | 2017-12-06 A | 2017-12-07 A | A1240, A3690, A1140, A2570 | 100% |  | 2018-02-01 | 2018-02-13 |  |  | Bitumin Paint |
| A3710 |  | Wooden Flooring |  | 7.11d | 2017-12-06 A | 2017-12-07 A | A2350, A1140, A3700, A1240 | 100% |  | 2018-02-13 | 2018-02-21 |  |  | Bitumin Paint |
| A3720 |  | Joinery and Carpentry Works |  | 14.28d | 2017-12-06 A | 2017-12-07 A | A2730, A3710, A1240, A1140, A2740, A2760 | 100% |  | 2018-02-21 | 2018-03-10 |  |  | Bitumin Paint |
| A3730 |  | Aluminium and Glazing Works |  | 10.11d | 2017-12-06 A | 2017-12-07 A | A1140, A2940, A2950, A3720 | 100% |  | 2018-03-11 | 2018-03-22 |  |  | Bitumin Paint |
| A3740 |  | Doors , Frames , Ironmongery and Hardware |  | 3.11d | 2017-12-06 A | 2017-12-07 A | A3750 SS, A1140, A1240, A2720 | 100% |  | 2018-03-22 | 2018-03-26 |  |  | Bitumin Paint |
| A3750 |  | Wall Covering |  | 3.11d | 2017-12-06 A | 2017-12-07 A | A3730, A2550, A1140, A1240 | 100% |  | 2018-03-22 | 2018-03-26 |  |  | Bitumin Paint |
| A3760 |  | Lighting Points and Fittings |  | 3.11d | 2017-12-06 A | 2017-12-07 A | A1140, A2840, A2870, A2850, A2880, A2890, A3740 SS, A2860 | 100% |  | 2018-03-22 | 2018-03-26 |  |  | Bitumin Paint |
| A3770 |  | Carpet / Vinyle / Rubber |  | 3d | 2017-12-06 A | 2017-12-07 A | A2410, A2380, A2390, A3760, A3680, A1140, A2340 | 100% |  | 2018-03-26 | 2018-03-29 |  |  | Bitumin Paint |
| A3780 |  | Snagging and De-Snagging |  | 7.17d | 2017-12-06 A | 2017-12-07 A | A1140, A3680, A3770 | 100% |  | 2018-03-29 | 2018-04-07 |  |  | Bitumin Paint |
| A3600 |  | Prerequisite for Civil Works (MEP 1st , 2nd Fix and Block Works) | milestone | 0d | 2017-12-07 A | 2017-12-07 A | A1140 | 100% |  | 2017-08-24 | 2017-08-24 |  |  |  |
|  | 5 | **BILL 25 - 8F - MALE AND FEMALE TOILETS FOR GYM - TOWER C** |  |  | 2017-07-12 | 2018-05-09 |  |  |  |  |  |  |  |  |
| A3800 |  | Area Clearance Process |  | 2.11d | 2017-07-12 A | 2017-07-12 A | A1150, A3790 | 100% |  | 2017-07-20 | 2017-07-23 |  |  | Bitumin Paint |
| A3790 |  | Prerequisite for Civil Works (MEP 1st , 2nd Fix and Block Works) | milestone | 0d | 2017-07-13 A | 2017-07-13 A | A1150 | 100% |  | 2017-07-20 | 2017-07-20 |  |  |  |
| A3810 |  | Measurement , Framing and Enabling Works |  | 14.22d | 2017-07-23 A | 2017-08-02 A | A1150, A3800 | 100% |  | 2017-07-23 | 2017-08-08 |  |  | Bitumin Paint [2000 M2] |
| A3830 |  | MEP Celing Closure Clearance |  | 3.06d | 2017-07-31 A | 2017-08-01 A | A3820, A1150 | 100% |  | 2017-09-05 | 2017-09-09 |  |  | Bitumin Paint |
| A3820 |  | Installation of Ceiling System |  | 10.22d | 2017-08-02 A | 2017-10-01 A | A2630, A3810, A1150 | 100% |  | 2017-08-23 | 2017-09-05 |  |  | Bitumin Paint [3059 M2] |
| A3850 |  | Screed |  | 3.11d | 2017-08-27 A | 2017-08-28 A | A3840, A1150 | 100% |  | 2017-10-05 | 2017-10-09 |  |  | Bitumin Paint [6919 M2] |
| A3840 |  | Ceiling Closure |  | 10.11d | 2017-08-29 A | 2017-10-12 A | A3830, A1150, A2640 | 100% |  | 2017-09-24 | 2017-10-05 |  |  | Bitumin Paint [3059 M2] |
| A3860 |  | Wall Cladding |  | 10.11d | 2017-10-16 A | 2018-03-15 A | A3850, A2540, A2530, A1150 | 100% |  | 2017-12-10 | 2017-12-21 |  |  | Bitumin Paint [32213 M2] |
| A3880 |  | Floor Tiling |  | 7.17d | 2017-10-19 A | 2017-10-29 A | A2360, A1150, A3860, A2370 | 100% |  | 2017-12-21 | 2017-12-30 |  |  | Bitumin Paint [8508 M2] |
| A3930 |  | Doors , Frames , Ironmongery and Hardware |  | 5.06d | 2017-12-19 A | 2018-03-08 A | A2720, A5560, A1250, A1150, A3940 SS | 100% |  | 2018-03-17 | 2018-03-22 |  |  | Bitumin Paint [11388 M2] |
| A3870 |  | Paint Works |  | 61.17d | 2018-03-08 A | 2018-03-29 A | A3840, A2510, A2650, A1150 | 100% |  | 2018-03-08 | 2018-05-19 |  |  | Bitumin Paint [270 M2] |
| A3890 |  | Wooden Wall Panelling |  | 10.22d | 2018-03-08 A | 2018-03-26 A | A1250, A1150, A3880, A2570, A5560 | 100% |  | 2018-03-08 | 2018-03-20 |  |  | Bitumin Paint [9390 M2] |
| A3920 |  | Aluminium and Glazing Works |  | 10.17d | 2018-03-13 A | 2018-05-01 | A2940, A1150, A2950, A3910 | 90% | 1d | 2018-04-16 | 2018-04-28 | -376.15d | 0d | Bitumin Paint [5666 M2] |
| A3910 |  | Joinery and Carpentry Works |  | 14.22d | 2018-03-22 A | 2018-04-30 | A3900, A2760, A2730, A1150, A1250, A2740 | 90% | 1.4d | 2018-04-03 | 2018-04-19 | -375.15d | 0d | Bitumin Paint [35008 M2] |
| A3900 |  | Wooden Flooring |  | 7.17d | 2018-03-29 A | 2018-04-28 | A3890, A5560, A1250, A1150 | 76% | 1.75d | 2018-03-29 | 2018-04-07 | -373.75d | 0d | Bitumin Paint [15600 M2] |
| A3940 |  | Wall Covering |  | 5.06d | 2018-04-02 A | 2018-05-05 | A3920, A2550, A1150, A1250, A5560 | 36% | 3.25d | 2018-04-14 | 2018-04-19 | -379.4d | 75.96d | Bitumin Paint [2000 M2] |
| A3950 |  | Lighting Points and Fittings |  | 4d | 2018-04-26 | 2018-04-30 | A2860, A3930 SS, A2840, A1150 |  |  |  |  | -383.11d | 0d | Bitumin Paint [2418 M2] |
| A3970 |  | Snagging and De-Snagging |  | 7.11d | 2018-05-01 | 2018-05-09 | A3870, A3950, A2340, A2380, A1150 |  |  |  |  | -383.11d | 72.25d | Bitumin Paint |

| ID | WBS | Activity | Type | Duration | Start | Finish | Predecessors | Complete | Remaining | Planned start | Planned finish | Total float | Free float | Resources |
| --- | --- | --- | --- | --- | --- | --- | --- | --- | --- | --- | --- | --- | --- | --- |
|  | 7 | **BILL 27.1 - 8F - GYM - TOWER A** |  |  | 2017-07-26 | 2018-05-06 |  |  |  |  |  |  |  |  |
| A4170 |  | Prerequisite for Civil Works (MEP 1st , 2nd Fix and Block Works) | milestone | 0d | 2017-07-26 A | 2017-07-26 A | A1170 | 100% |  | 2017-08-10 | 2017-08-10 |  |  |  |
| A4180 |  | Area Clearance Process |  | 2.11d | 2017-07-29 A | 2017-09-19 A | A4170, A1170 | 100% |  | 2017-08-10 | 2017-08-13 |  |  | Bitumin Paint |
| A4190 |  | Measurement , Framing and Enabling Works |  | 14.22d | 2017-07-31 A | 2017-09-16 A | A4180, A1170 | 100% |  | 2017-08-13 | 2017-08-29 |  |  | Bitumin Paint [2000 M2] |
| A4230 |  | Screed |  | 3.06d | 2017-08-01 A | 2017-08-02 A | A1170, A4220 | 100% |  | 2017-10-03 | 2017-10-07 |  |  | Bitumin Paint [7000 M2] |
| A4260 |  | Floor Tiling |  | 10.22d | 2017-08-03 A | 2017-12-20 A | A4240, A2370, A1170, A2360 | 100% |  | 2017-10-25 | 2017-11-06 |  |  | Bitumin Paint [35174 M2] |
| A4200 |  | Installation of Ceiling System |  | 10.22d | 2017-08-14 A | 2017-11-09 A | A1170, A4190, A2630 | 100% |  | 2017-09-05 | 2017-09-17 |  |  | Bitumin Paint [24871 M2] |
| A4210 |  | MEP Celing Closure Clearance |  | 3.06d | 2017-09-02 A | 2017-09-03 A | A1170, A4200 | 100% |  | 2017-10-31 | 2017-11-04 |  |  | Bitumin Paint |
| A4220 |  | Ceiling Closure |  | 10.17d | 2017-09-27 A | 2017-12-28 A | A4210, A2640, A1170 | 100% |  | 2017-11-04 | 2017-11-15 |  |  | Bitumin Paint [24873 M2] |
| A4270 |  | Wooden Wall Panelling |  | 10.17d | 2017-11-14 A | 2018-02-12 A | A2570, A1270, A1170, A4260 | 100% |  | 2018-01-13 | 2018-01-24 |  |  | Bitumin Paint [9000 M2] |
| A4340 |  | Carpet / Vinyle / Rubber |  | 3.11d | 2017-11-18 A | 2018-04-28 | A2410, A4250, A4330, A2390, A1170, A2340, A2380 | 71% | 0.9d | 2018-03-01 | 2018-03-06 | -380.46d | 0d | Bitumin Paint [5000 M2] |
| A4290 |  | Joinery and Carpentry Works |  | 14.33d | 2017-11-21 A | 2018-02-15 A | A4280, A2740, A2760, A1270, A1170, A2730 | 100% |  | 2018-02-01 | 2018-02-18 |  |  | Bitumin Paint [66133 M2] |
| A4310 |  | Doors , Frames , Ironmongery and Hardware |  | 3d | 2017-11-22 A | 2018-03-13 A | A1170, A4320 SS, A1270, A2720 | 100% |  | 2018-02-26 | 2018-03-01 |  |  | Bitumin Paint [44629 M2] |
| A4250 |  | Paint Works |  | 61.11d | 2017-11-26 A | 2018-03-15 A | A1170, A2650, A2510, A4220 | 100% |  | 2017-11-26 | 2018-02-05 |  |  | Bitumin Paint [4000 M2] |
| A4240 |  | Wall Cladding |  | 10.17d | 2017-12-19 A | 2018-01-11 A | A4230, A2520, A2530, A2540, A2580, A1170 | 100% |  | 2018-02-10 | 2018-02-21 |  |  | Bitumin Paint [4000 M2] |
| A4300 |  | Aluminium and Glazing Works |  | 7.11d | 2018-01-15 A | 2018-03-14 A | A4290, A2940, A1170, A2960 | 100% |  | 2018-03-11 | 2018-03-19 |  |  | Bitumin Paint [6657 M2] |
| A5140 |  | Sanitary Equipment & Fixture |  | 3.11d | 2018-03-05 A | 2018-03-29 A | A3000, A4320 | 100% |  | 2018-03-21 | 2018-03-25 |  |  | Bitumin Paint [8960 M2] |
| A4330 |  | Lighting Points and Fittings |  | 3.06d | 2018-04-03 A | 2018-04-26 | A2890, A4310 SS, A2840, A2850, A2870, A2860, A1170, A2880 | 85% | 0.45d | 2018-04-07 | 2018-04-10 | -372.45d | 0d | Bitumin Paint [3868 M2] |
| A4280 |  | Wooden Flooring |  | 7d | 2018-04-26 | 2018-05-03 | A4270, A2350, A1270, A1170 |  |  |  |  | -379d | 76.36d | Bitumin Paint [35174 M2] |
| A4320 |  | Wall Covering |  | 3d | 2018-04-26 | 2018-04-29 | A1170, A2550, A4300 |  |  |  |  | -375d | 80.36d | Bitumin Paint [7000 M2] |
| A4350 |  | Snagging and De-Snagging |  | 7.11d | 2018-04-28 | 2018-05-06 | A4250, A4340, A1170, A5140 |  |  |  |  | -380.46d | 74.9d | Bitumin Paint |
|  | 8 | **BILL 27.2 - 8F - GYM - TOWER B** |  |  | 2017-08-24 | 2018-05-08 |  |  |  |  |  |  |  |  |
| A4360 |  | Prerequisite for Civil Works (MEP 1st , 2nd Fix and Block Works) | milestone | 0d | 2017-08-24 A | 2017-08-24 A | A1180 | 100% |  |  |  |  |  |  |
| A4370 |  | Area Clearance Process |  | 2.11d | 2017-08-24 A | 2017-08-27 A | A1180, A4360 | 100% |  |  |  |  |  | Bitumin Paint |
| A4400 |  | MEP Celing Closure Clearance |  | 3d | 2017-08-27 A | 2017-08-27 A | A1180, A4390 | 100% |  | 2017-10-01 | 2017-10-04 |  |  | Bitumin Paint |
| A4380 |  | Measurement , Framing and Enabling Works |  | 14.22d | 2017-08-27 A | 2017-09-13 A | A1180, A4370 | 100% |  | 2017-08-27 | 2017-09-12 |  |  | Bitumin Paint [2000 M2] |
| A4390 |  | Installation of Ceiling System |  | 10.22d | 2017-08-28 A | 2017-11-09 A | A4380, A1180, A2630 | 100% |  | 2017-09-19 | 2017-10-01 |  |  | Bitumin Paint [35000 M2] |
| A4410 |  | Ceiling Closure |  | 10.22d | 2017-10-04 A | 2017-12-28 A | A1180, A4400, A2640 | 100% |  | 2017-10-31 | 2017-11-12 |  |  | Bitumin Paint [45001 M2] |
| A4420 |  | Screed |  | 3d | 2017-11-01 A | 2017-11-02 A | A4410, A1180 | 100% |  | 2017-11-20 | 2017-11-23 |  |  | Bitumin Paint [7000 M2] |
| A4500 |  | Doors , Frames , Ironmongery and Hardware |  | 3.11d | 2017-11-19 A | 2018-02-08 A | A4510 SS, A2720, A1280, A1180 | 100% |  | 2018-03-08 | 2018-03-12 |  |  | Bitumin Paint [12541 M2] |
| A4460 |  | Wooden Wall Panelling |  | 10.22d | 2017-11-20 A | 2018-02-12 A | A1280, A2570, A1180, A4450 | 100% |  | 2018-01-22 | 2018-02-04 |  |  | Bitumin Paint [84521 M2] |
| A4430 |  | Wall Cladding |  | 10.17d | 2017-11-21 A | 2018-01-04 A | A1180, A4420, A2520, A2580, A2530, A2540 | 100% |  | 2017-12-30 | 2018-01-10 |  |  | Bitumin Paint [78541 M2] |
| A4440 |  | Paint Works |  | 61.11d | 2017-12-10 A | 2018-03-15 A | A4410, A1180, A2510, A2650 | 100% |  | 2017-12-10 | 2018-02-19 |  |  | Bitumin Paint [2103 M2] |
| A4450 |  | Floor Tiling |  | 10.22d | 2017-12-19 A | 2017-12-27 A | A2360, A4430, A1180, A2370 | 100% |  | 2018-02-07 | 2018-02-19 |  |  | Bitumin Paint [8200 M2] |
| A4480 |  | Joinery and Carpentry Works |  | 14.22d | 2017-12-25 A | 2018-03-14 A | A4470, A1280, A2760, A1180, A2730, A2740 | 100% |  | 2018-03-06 | 2018-03-22 |  |  | Bitumin Paint [13000 M2] |
| A4470 |  | Wooden Flooring |  | 7.11d | 2017-12-26 A | 2018-04-30 | A1280, A4460, A2350, A1180 | 51% | 3.5d | 2018-02-25 | 2018-03-06 | -375.5d | 79.86d | Bitumin Paint [8300 M2] |
| A4490 |  | Aluminium and Glazing Works |  | 7.11d | 2018-01-16 A | 2018-03-29 A | A4480, A2960, A1180, A2940 | 100% |  | 2018-03-13 | 2018-03-21 |  |  | Bitumin Paint [15423 M2] |
| A5150 |  | Sanitary Equipment & Fixture |  | 3.11d | 2018-03-06 A | 2018-03-29 A | A3000, A4510 | 100% |  | 2018-03-21 | 2018-03-25 |  |  | Bitumin Paint [25120 M2] |
| A4520 |  | Lighting Points and Fittings |  | 3.11d | 2018-04-03 A | 2018-04-26 | A2850, A4500 SS, A2860, A2840, A2870, A1180, A2880, A2890 | 86% | 0.45d | 2018-04-05 | 2018-04-09 | -382.62d | 0d | Bitumin Paint [12541 M2] |
| A4510 |  | Wall Covering |  | 3.11d | 2018-04-18 A | 2018-04-29 | A1180, A4490, A2550 | 13% | 2.7d | 2018-04-18 | 2018-04-22 | -374.7d | 80.66d | Bitumin Paint [12541 M2] |
| A4530 |  | Carpet / Vinyle / Rubber |  | 3d | 2018-04-26 | 2018-04-30 | A4440, A2380, A2390, A2410, A1180, A4520 |  |  |  |  | -382.62d | 0d | Bitumin Paint [16659 M2] |
| A4540 |  | Snagging and De-Snagging |  | 7.17d | 2018-04-30 | 2018-05-08 | A4530, A1180, A5150, A4440 |  |  |  |  | -382.62d | 72.74d | Bitumin Paint |

| ID | WBS | Activity | Type | Duration | Start | Finish | Predecessors | Complete | Remaining | Planned start | Planned finish | Total float | Free float | Resources |
| --- | --- | --- | --- | --- | --- | --- | --- | --- | --- | --- | --- | --- | --- | --- |
|  | 9 | **BILL 27.3 - 8F - GYM - TOWER D** |  |  | 2017-08-24 | 2018-05-07 |  |  |  |  |  |  |  |  |
| A4550 |  | Prerequisite for Civil Works (MEP 1st , 2nd Fix and Block Works) | milestone | 0d | 2017-08-24 A | 2017-08-24 A | A1190 | 100% |  |  |  |  |  |  |
| A4560 |  | Area Clearance Process |  | 2.11d | 2017-08-24 A | 2017-08-27 A | A1190, A4550 | 100% |  |  |  |  |  | Bitumin Paint |
| A4590 |  | MEP Celing Closure Clearance |  | 3d | 2017-08-27 A | 2017-08-27 A | A4580, A1190 | 100% |  | 2017-10-01 | 2017-10-04 |  |  | Bitumin Paint |
| A4570 |  | Measurement , Framing and Enabling Works |  | 14.22d | 2017-08-27 A | 2017-09-13 A | A4560, A1190 | 100% |  | 2017-08-27 | 2017-09-12 |  |  | Bitumin Paint [2000 M2] |
| A4580 |  | Installation of Ceiling System |  | 10.22d | 2017-08-28 A | 2017-11-09 A | A1190, A2630, A4570 | 100% |  | 2017-09-19 | 2017-10-01 |  |  | Bitumin Paint [24870 M2] |
| A4600 |  | Ceiling Closure |  | 10.22d | 2017-10-04 A | 2017-12-28 A | A1190, A4590, A2640 | 100% |  | 2017-10-31 | 2017-11-12 |  |  | Bitumin Paint [24872 M2] |
| A4610 |  | Screed |  | 3d | 2017-11-01 A | 2017-11-01 A | A4600, A1190 | 100% |  | 2017-11-20 | 2017-11-23 |  |  | Bitumin Paint [7000 M2] |
| A5160 |  | Carpet / Vinyle / Rubber |  | 3d | 2017-11-02 A | 2018-04-28 | A2390, A4630, A2380, A4710, A2410 | 50% | 1.5d | 2018-03-12 | 2018-03-15 | -381.06d | 0d | Bitumin Paint [5000 M2] |
| A4620 |  | Wall Cladding |  | 10.17d | 2017-11-20 A | 2018-01-04 A | A2520, A2580, A1190, A2540, A2530, A4610 | 100% |  | 2017-12-30 | 2018-01-10 |  |  | Bitumin Paint [23040 M2] |
| A4650 |  | Wooden Wall Panelling |  | 10.22d | 2017-11-22 A | 2018-02-12 A | A4640, A1190, A1290, A2570 | 100% |  | 2018-01-22 | 2018-02-04 |  |  | Bitumin Paint [47307 M2] |
| A4690 |  | Doors , Frames , Ironmongery and Hardware |  | 3.11d | 2017-11-22 A | 2018-02-07 A | A4680, A1290, A1190, A2550, A2720 | 100% |  | 2018-03-08 | 2018-03-12 |  |  | Bitumin Paint [44629 M2] |
| A4630 |  | Paint Works |  | 61.11d | 2017-11-27 A | 2018-03-14 A | A1190, A2650, A4600, A2510 | 100% |  | 2017-11-27 | 2018-02-06 |  |  | Bitumin Paint [4000 M2] |
| A4640 |  | Floor Tiling |  | 10.22d | 2017-12-19 A | 2017-12-28 A | A4620, A2360, A2370, A1190 | 100% |  | 2018-02-07 | 2018-02-19 |  |  | Bitumin Paint [12901 M2] |
| A4670 |  | Joinery and Carpentry Works |  | 14.22d | 2017-12-24 A | 2018-03-15 A | A4660, A1290, A1190, A2730, A2760, A2740 | 100% |  | 2018-03-04 | 2018-03-20 |  |  | Bitumin Paint [86134 M2] |
| A4680 |  | Aluminium and Glazing Works |  | 7.17d | 2018-01-16 A | 2018-03-29 A | A2940, A2960, A1190, A4670 | 100% |  | 2018-03-17 | 2018-03-25 |  |  | Bitumin Paint [6657 M2] |
| A5170 |  | Sanitary Equipment & Fixture |  | 3.11d | 2018-03-06 A | 2018-04-05 A | A3000, A4710 | 100% |  | 2018-03-21 | 2018-03-26 |  |  | Bitumin Paint [8960 M2] |
| A4710 |  | Lighting Points and Fittings |  | 3.06d | 2018-04-03 A | 2018-04-26 | A2880, A2840, A1190, A2870, A2860, A2890, A4690 SS, A2850 | 85% | 0.45d | 2018-04-07 | 2018-04-10 | -379.56d | 0d | Bitumin Paint [8570 M2] |
| A4660 |  | Wooden Flooring |  | 7d | 2018-04-26 | 2018-05-03 | A1290, A1190, A4650, A2350 |  |  |  |  | -379d | 76.36d | Bitumin Paint [12901 M2] |
| A4730 |  | Snagging and De-Snagging |  | 7.11d | 2018-04-28 | 2018-05-07 | A1190, A5170, A2390, A4630, A5160, A2380, A4710, A2410 |  |  |  |  | -381.06d | 74.3d | Bitumin Paint |
|  | 13 | **Bill 14-P1-PRE-FUNCTION** |  |  | 2017-03-14 | 2018-05-16 |  |  |  |  |  |  |  |  |
| B14-P1PF-1stP001 |  | Prerequisite for Civil Works (MEP 1st , 2nd Fix and Block Works) | milestone | 0d | 2017-03-14 A | 2017-03-14 A | A5250 | 100% |  | 2017-06-15 | 2017-06-15 |  |  |  |
| B14-P1PF-C001 |  | Installation of Celling System |  | 14.22d | 2017-03-26 A | 2017-06-15 A | B14-P1PF-1stP001, B5-UPSD-C191, A5250 | 100% |  | 2017-05-07 | 2017-05-23 |  |  | Bitumin Paint [245798 M2] |
| B5-UPSD-C191 |  | Area Preparation and Enabling Works |  | 21.33d | 2017-04-11 A | 2017-04-23 A | B5-UPSD-C181, A5250 | 100% |  | 2017-06-19 | 2017-07-13 |  |  | Bitumin Paint |
| B14-P1PF-2ndP002 |  | MEP Ceiling Closure Clearance |  | 7.17d | 2017-05-01 A | 2017-05-01 A | B14-P1PF-C001, A5250 | 100% |  | 2017-07-13 | 2017-07-22 |  |  | Bitumin Paint |
| B14-P1PF-C003 |  | Paint Works |  | 30.56d | 2017-06-05 A | 2017-09-12 A | A5250, B14-P1PF-3rdP003 | 100% |  | 2017-08-16 | 2017-09-20 |  |  | Bitumin Paint [25759 M2] |
| B14-P1PF-C002 |  | Ceiling Closure |  | 14.28d | 2017-06-29 A | 2017-07-31 A | A5250, B14-P1PF-2ndP002 | 100% |  | 2017-07-22 | 2017-08-07 |  |  | Bitumin Paint [245798 M2] |
| B14-P1PF-C005 |  | Installation of Wooden wall panelling |  | 14.22d | 2017-07-03 A | 2018-01-24 A | A5250, B14-P1PF-C003 SS+3d, A5280 | 100% |  | 2017-07-17 | 2017-08-03 |  |  | Bitumin Paint [172310 M2] |
| B5-UPSD-C181 |  | Handing Over Process |  | 3.11d | 2017-08-09 A | 2017-08-10 A | B14-P1PF-1stP001, A5250 | 100% |  | 2017-10-26 | 2017-10-30 |  |  | Bitumin Paint |
| B14-P1PF-3rdP003 |  | Flooring |  | 7.17d | 2017-12-06 A | 2017-12-19 A | B14-P1PF-C002, A5250 | 100% |  | 2017-12-14 | 2017-12-23 |  |  | Bitumin Paint [10000 M2] |
| B14-P1PF-C006 |  | Installation of Light Fittings |  | 14.28d | 2018-02-19 A | 2018-03-06 A | A5250, B14-P1PF-C009 | 100% |  | 2018-03-28 | 2018-04-14 |  |  | Bitumin Paint [20636 M2] |
| B14-P1PF-C011 |  | Aluminium Works |  | 14.28d | 2018-03-01 A | 2018-03-14 A | B14-P1PF-C007, A5250 | 100% |  | 2018-03-17 | 2018-04-02 |  |  | Bitumin Paint [12000 M2] |
| B14-P1PF-C004 |  | Installation of Metal Skirting |  | 7.17d | 2018-03-14 A | 2018-04-12 A | A5250, B14-P1PF-C007 | 100% |  | 2018-03-24 | 2018-04-01 |  |  | Bitumin Paint [7095 M2] |
| B14-P1PF-C007 |  | Installation of Metal panelling |  | 7.17d | 2018-03-15 A | 2018-03-24 A | A5250, B14-P1PF-C003 SS | 100% |  |  |  |  |  | Bitumin Paint [43652 M2] |
| B14-P1PF-C008 |  | Installation of Wall Covering |  | 7.17d | 2018-03-29 A | 2018-04-26 | B14-P1PF-C004, B14-P1PF-C005, A5280, B14-P1PF-C011, B14-P1PF-C007, A5250 | 90% | 0.7d | 2018-03-29 | 2018-04-07 | -372.7d | 0d | Bitumin Paint [48276 M2] |
| B14-P1PF-C009 |  | Installation of Glazing Works |  | 7.17d | 2018-04-04 A | 2018-04-30 | B14-P1PF-C008, A5250, B14-P1PF-C003, A5290 | 61% | 2.8d | 2018-04-07 | 2018-04-15 | -389.61d | 0d | Bitumin Paint [105858 M2] |
| B14-P1PF-C010 |  | Installation of Carpet |  | 7d | 2018-04-30 | 2018-05-08 | B14-P1PF-C009, A5250 |  |  |  |  | -389.61d | 0d | Bitumin Paint [240198 M2] |
| B14-P1PF-S012 |  | Snagging and De-Snagging |  | 7.11d | 2018-05-08 | 2018-05-16 | B14-P1PF-C006, B14-P1PF-C010, B14-P1PF-C003, B14-P1PF-C009, A5250 |  |  |  |  | -389.61d | 65.75d | Bitumin Paint |

| ID | WBS | Activity | Type | Duration | Start | Finish | Predecessors | Complete | Remaining | Planned start | Planned finish | Total float | Free float | Resources |
| --- | --- | --- | --- | --- | --- | --- | --- | --- | --- | --- | --- | --- | --- | --- |
|  | 14 | **Bill 15-P1-REST ROOMS (PRE-FUNTION)** |  |  | 2017-04-10 | 2018-05-05 |  |  |  |  |  |  |  |  |
| B15-P1RPF-1stP001 |  | Prerequisite for Civil Works (MEP 1st , 2nd Fix and Block Works) | milestone | 0d | 2017-04-10 A | 2017-04-10 A | A5260 | 100% |  | 2017-06-15 | 2017-06-15 |  |  |  |
| B5-UPSD-C211 |  | Area Preparation and Enabling Works |  | 14.22d | 2017-04-18 A | 2017-04-30 A | A5260, B5-UPSD-C201 | 100% |  | 2017-06-19 | 2017-07-05 |  |  | Bitumin Paint |
| B5-UPSD-C201 |  | Handing Over Process |  | 3.11d | 2017-05-01 A | 2017-05-01 A | A5260, B15-P1RPF-1stP001 | 100% |  | 2017-06-15 | 2017-06-19 |  |  | Bitumin Paint |
| B15-P1RPF-2ndP002 |  | MEP Ceiling Closure Clearance |  | 7.11d | 2017-05-08 A | 2017-05-09 A | A5260, B15-P1RPF-C001 | 100% |  | 2017-07-30 | 2017-08-07 |  |  | Bitumin Paint |
| B15-P1RPF-C001 |  | Installation of Celling System |  | 21.44d | 2017-05-09 A | 2017-09-10 A | B15-P1RPF-1stP001, B5-UPSD-C211, A5260 | 100% |  | 2017-07-05 | 2017-07-30 |  |  | Bitumin Paint [3640 M2] |
| B15-P1RPF-C003 |  | Paint Works |  | 30.56d | 2017-06-03 A | 2018-02-12 A | B15-P1RPF-3rdP003, A5260 | 100% |  | 2017-09-10 | 2017-10-15 |  |  | Bitumin Paint [1512 M2] |
| B15-P1RPF-C002 |  | Ceiling Closure |  | 14.33d | 2017-09-19 A | 2017-10-01 A | A5260, B15-P1RPF-2ndP002 | 100% |  | 2017-09-28 | 2017-10-15 |  |  | Bitumin Paint [3640 M2] |
| B15-P1RPF-3rdP003 |  | Flooring |  | 14.33d | 2017-11-02 A | 2017-11-15 A | B15-P1RPF-C002, A5260 | 100% |  | 2017-11-09 | 2017-11-26 |  |  | Bitumin Paint [5000 M2] |
| B15-P1RPF-C005 |  | Installation of Doors & Ironmongery |  | 7.17d | 2017-11-23 A | 2018-01-11 A | B15-P1RPF-C003 FF, B15-P1RPF-C008, A5290, A5260 | 100% |  | 2017-11-25 | 2017-12-03 |  |  | Bitumin Paint [28251 M2] |
| B15-P1RPF-C007 |  | Installation of Wall Covering |  | 7.11d | 2017-12-18 A | 2018-04-02 A | B15-P1RPF-C005, A5290, B15-P1RPF-C009, A5300, A5260, B15-P1RPF-C006 | 100% |  | 2018-01-08 | 2018-01-16 |  |  | Bitumin Paint [14924 M2] |
| B15-P1RPF-C008 |  | Apply of Sibu Finish |  | 7.17d | 2017-12-21 A | 2018-04-16 A | B15-P1RPF-C002, A5290, A5260 | 100% |  | 2017-12-21 | 2017-12-30 |  |  | Bitumin Paint [34331 M2] |
| B15-P1RPF-C004 |  | Installation of Mirror |  | 7.11d | 2017-12-26 A | 2018-01-17 A | A5260, B15-P1RPF-C009 | 100% |  | 2018-01-03 | 2018-01-11 |  |  | Bitumin Paint [39331 M2] |
| B15-P1RPF-C009 |  | Installation of Sanitary Ware |  | 7.17d | 2018-02-15 A | 2018-03-12 A | B15-P1RPF-C003, A5260 | 100% |  | 2018-02-15 | 2018-02-24 |  |  | Bitumin Paint [16498 M2] |
| B15-P1RPF-C006 |  | Installation of Light Fittings |  | 14.22d | 2018-03-11 A | 2018-04-26 | A5260, B15-P1RPF-C008 | 95% | 0.7d | 2018-03-11 | 2018-03-28 | -372.7d | 82.66d | Bitumin Paint [2720 M2] |
| B15-P1RPF-C010 |  | Snagging and De-Snagging |  | 7.17d | 2018-04-26 | 2018-05-05 | B15-P1RPF-C007, B15-P1RPF-C003, B15-P1RPF-C004 FS-1d, A5260 |  |  |  |  | -379.17d | 76.19d | Bitumin Paint |
|  | 15 | **Bill 32 Work Play Suite** |  |  | 2017-12-06 | 2017-12-07 |  |  |  |  |  |  |  |  |
| A5860 |  | Area Clearance Process |  | 2.11d | 2017-12-06 A | 2017-12-07 A | A5850, A5810 | 100% |  | 2017-08-17 | 2017-08-20 |  |  | Bitumin Paint |
| A5870 |  | Measurement , Framing and Enabling Works |  | 14.28d | 2017-12-06 A | 2017-12-07 A | A5860, A5810 | 100% |  | 2017-11-29 | 2017-12-16 |  |  | Bitumin Paint |
| A5880 |  | Installation of Ceiling System |  | 7.17d | 2017-12-06 A | 2017-12-07 A | A5840, A5870, A5810 | 100% |  | 2017-12-16 | 2017-12-25 |  |  | Bitumin Paint |
| A5890 |  | MEP Celing Closure Clearance |  | 3d | 2017-12-06 A | 2017-12-07 A | A5810, A5880, A5840 | 100% |  | 2017-12-25 | 2017-12-28 |  |  | Bitumin Paint |
| A5900 |  | Ceiling Closure |  | 7.17d | 2017-12-06 A | 2017-12-07 A | A5840, A5890, A5810 | 100% |  | 2017-12-28 | 2018-01-06 |  |  | Bitumin Paint |
| A5910 |  | Screed |  | 3.06d | 2017-12-06 A | 2017-12-07 A | A5810, A5840, A5900 | 100% |  | 2018-01-06 | 2018-01-09 |  |  | Bitumin Paint |
| A5920 |  | Wall Cladding |  | 7.11d | 2017-12-06 A | 2017-12-07 A | A5840, A5910, A5810 | 100% |  | 2018-01-09 | 2018-01-17 |  |  | Bitumin Paint |
| A5930 |  | Floor Tiling |  | 7.11d | 2017-12-06 A | 2017-12-07 A | A5840, A5920, A5810 | 100% |  | 2018-01-17 | 2018-01-25 |  |  | Bitumin Paint |
| A5940 |  | Wooden Wall Panelling |  | 7.17d | 2017-12-06 A | 2017-12-07 A | A5930, A5810, A5820, A5840 | 100% |  | 2018-01-25 | 2018-02-03 |  |  | Bitumin Paint |
| A5950 |  | Wooden Flooring |  | 7.17d | 2017-12-06 A | 2017-12-07 A | A5810, A5940, A5840, A5820 | 100% |  | 2018-02-03 | 2018-02-11 |  |  | Bitumin Paint |
| A5960 |  | Joinery and Carpentry Works |  | 14.22d | 2017-12-06 A | 2017-12-07 A | A5840, A5820, A5810, A5950 | 100% |  | 2018-02-11 | 2018-02-28 |  |  | Bitumin Paint |
| A5970 |  | Aluminium and Glazing Works |  | 10.22d | 2017-12-06 A | 2017-12-07 A | A5840, A5960, A5810 | 100% |  | 2018-02-28 | 2018-03-12 |  |  | Bitumin Paint |
| A5980 |  | Doors , Frames , Ironmongery and Hardware |  | 3d | 2017-12-06 A | 2017-12-07 A | A5990 SS, A5820, A5840, A5810 | 100% |  | 2018-03-12 | 2018-03-15 |  |  | Bitumin Paint |
| A5990 |  | Wall Covering |  | 3d | 2017-12-06 A | 2017-12-07 A | A5820, A5970, A5840, A5810 | 100% |  | 2018-03-12 | 2018-03-15 |  |  | Bitumin Paint |
| A6000 |  | Lighting Points and Fittings |  | 5.11d | 2017-12-06 A | 2017-12-07 A | A5840, A5980 SS, A5810 | 100% |  | 2018-03-12 | 2018-03-18 |  |  | Bitumin Paint |
| A6010 |  | Paint Works |  | 61.17d | 2017-12-06 A | 2017-12-07 A | A5840, A5810, A5900 | 100% |  | 2018-01-06 | 2018-03-18 |  |  | Bitumin Paint |
| A6020 |  | Sanitary Equipment & Fixture |  | 5.11d | 2017-12-06 A | 2017-12-07 A | A5810, A5990, A5840 | 100% |  | 2018-03-15 | 2018-03-21 |  |  | Bitumin Paint |
| A6030 |  | Carpet / Vinyle / Rubber |  | 4d | 2017-12-06 A | 2017-12-07 A | A6010, A5840, A5810, A6000 | 100% |  | 2018-03-18 | 2018-03-22 |  |  | Bitumin Paint |
| A6040 |  | Snagging and De-Snagging |  | 7.17d | 2017-12-06 A | 2017-12-07 A | A5840, A6030, A6010, A5810, A6020 | 100% |  | 2018-03-22 | 2018-03-31 |  |  | Bitumin Paint |
| A5850 |  | Prerequisite for Civil Works (MEP 1st , 2nd Fix and Block Works) | milestone | 0d | 2017-12-07 A | 2017-12-07 A | A5810 | 100% |  | 2017-08-17 | 2017-08-17 |  |  |  |

| ID | WBS | Activity | Type | Duration | Start | Finish | Predecessors | Complete | Remaining | Planned start | Planned finish | Total float | Free float | Resources |
| --- | --- | --- | --- | --- | --- | --- | --- | --- | --- | --- | --- | --- | --- | --- |
|  | 19 | **Bill 33-P1-SCREENING ROOM** |  |  | 2017-01-26 | 2018-06-25 |  |  |  |  |  |  |  |  |
| B33-P1SR-1stP001 |  | Prerequisite for Civil Works (MEP 1st , 2nd Fix and Block Works) | milestone | 0d | 2017-01-26 A | 2017-01-26 A | A5270 | 100% |  | 2017-02-05 | 2017-02-05 |  |  |  |
| B33-P1SR-C001 |  | Installation of Celling System |  | 21.39d | 2017-01-31 A | 2017-12-18 A | B33-P1SR-1stP001, A5270, B5-UPSD-C291 | 100% |  | 2017-02-25 | 2017-03-21 |  |  | Bitumin Paint [117473 M2] |
| B5-UPSD-C291 |  | Area Preparation and Enabling Works |  | 14.28d | 2017-01-31 A | 2017-03-01 A | B5-UPSD-C281, A5270 | 100% |  | 2017-02-08 | 2017-02-25 |  |  | Bitumin Paint |
| B33-P1SR-2ndP002 |  | MEP Ceiling Closure Clearance |  | 3.06d | 2017-07-30 A | 2017-07-31 A | A5270, B33-P1SR-C001 | 100% |  | 2017-08-08 | 2017-08-12 |  |  | Bitumin Paint |
| B33-P1SR-C002 |  | Ceiling Closure |  | 14.28d | 2017-07-30 A | 2018-01-15 A | B33-P1SR-2ndP002, A5270 | 100% |  | 2017-08-12 | 2017-08-28 |  |  | Bitumin Paint [117473 M2] |
| B33-P1SR-C017 |  | Installation of Steel wall panelling |  | 14.22d | 2017-09-02 A | 2017-12-28 A | B33-P1SR-C003 SS+3d, A5270 | 100% |  | 2017-10-15 | 2017-11-01 |  |  | Bitumin Paint [6000 M2] |
| B33-P1SR-C007 |  | Installation of Doors & Ironmongery |  | 5.11d | 2017-11-21 A | 2018-02-08 A | A5270, B33-P1SR-C003, A5300 | 100% |  | 2018-01-03 | 2018-01-09 |  |  | Bitumin Paint [55414 M2] |
| B33-P1SR-C003 |  | Paint Works |  | 30.56d | 2017-12-26 A | 2018-05-05 | B33-P1SR-3rdP003, A5270 | 90% | 3d | 2018-01-02 | 2018-02-06 | -431.11d | 27d | Bitumin Paint [27500 M2] |
| B33-P1SR-3rdP003 |  | Flooring |  | 5d | 2018-04-26 | 2018-05-01 | A5270, B33-P1SR-C002 |  |  |  |  | -377d | 0d | Bitumin Paint [5000 M2] |
| B33-P1SR-C004 |  | Installation of Wall Tiling |  | 7d | 2018-04-26 | 2018-05-03 | A5270, B33-P1SR-C003 SS+3d |  |  |  |  | -423.11d | 0d | Bitumin Paint [7000 M2] |
| B33-P1SR-C011 |  | Installation of Wooden wall panelling |  | 14d | 2018-04-26 | 2018-05-12 | B33-P1SR-C003 SS+3d, A5270, A5300 |  |  |  |  | -416.11d | 7d | Bitumin Paint [6000 M2] |
| B5-UPSD-C281 |  | Handing Over Process |  | 3.11d | 2018-04-26 | 2018-04-30 | B33-P1SR-1stP001, A5270 |  |  |  |  | -389.11d | 80.25d | Bitumin Paint |
| B33-P1SR-C015 |  | Installation of Joinery Works |  | 14d | 2018-05-05 | 2018-05-20 | A5270, B33-P1SR-C003 SS+3d, B33-P1SR-C004, A5300 |  |  |  |  | -423.11d | 0d | Bitumin Paint [288781 M2] |
| B33-P1SR-C005 |  | Installation of Metal Skirting |  | 5d | 2018-05-21 | 2018-05-26 | B33-P1SR-C017, B33-P1SR-C004, B33-P1SR-C007, B33-P1SR-C015, A5270, B33-P1SR-C011 |  |  |  |  | -414.11d | 9d | Bitumin Paint [1397 M2] |
| B33-P1SR-C006 |  | Installation of Mirror |  | 5d | 2018-05-21 | 2018-05-26 | B33-P1SR-C004, B33-P1SR-C015, B33-P1SR-C017, B33-P1SR-C011, A5270, B33-P1SR-C007 |  |  |  |  | -414.11d | 9d | Bitumin Paint [4000 M2] |
| B33-P1SR-C008 |  | Installation of Light Fittings |  | 7d | 2018-05-21 | 2018-05-28 | B33-P1SR-C017, A5270, B33-P1SR-C007, B33-P1SR-C011, B33-P1SR-C004, B33-P1SR-C015 |  |  |  |  | -423.11d | 0d | Bitumin Paint [16224 M2] |
| B33-P1SR-C009 |  | Installation of Timber Flooring |  | 7d | 2018-05-29 | 2018-06-05 | B33-P1SR-C007, B33-P1SR-C011, A5300, B33-P1SR-C004, B33-P1SR-C008, B33-P1SR-C017, B33-P1SR-C015, A5270 |  |  |  |  | -423.11d | 0d | Bitumin Paint [2000 M2] |
| B33-P1SR-C012 |  | Installation of Floor Tiling |  | 7d | 2018-05-29 | 2018-06-05 | B33-P1SR-C011, B33-P1SR-C007, A5270, B33-P1SR-C004, B33-P1SR-C008, B33-P1SR-C017, B33-P1SR-C015 |  |  |  |  | -423.11d | 0d | Bitumin Paint [31299 M2] |
| B33-P1SR-C010 |  | Installation of Wall Covering |  | 5d | 2018-06-06 | 2018-06-11 | A5270, B33-P1SR-C003, B33-P1SR-C008, A5300, B33-P1SR-C009, B33-P1SR-C005, B33-P1SR-C006, B33-P1SR-C012 |  |  |  |  | -423.11d | 0d | Bitumin Paint [5000 M2] |
| B33-P1SR-C013 |  | Installation of Glazing Works |  | 5d | 2018-06-06 | 2018-06-11 | B33-P1SR-C005, B33-P1SR-C006, B33-P1SR-C012, B33-P1SR-C009, A5270, B33-P1SR-C008 |  |  |  |  | -423.11d | 0d | Bitumin Paint [15523 M2] |
| B33-P1SR-C014 |  | Installation of Sanitary Ware |  | 5d | 2018-06-06 | 2018-06-11 | B33-P1SR-C006, A5270, B33-P1SR-C008, B33-P1SR-C005, B33-P1SR-C009, B33-P1SR-C012 |  |  |  |  | -423.11d | 0d | Bitumin Paint [5000 M2] |
| B33-P1SR-C018 |  | Installation of Carpet |  | 4d | 2018-06-12 | 2018-06-16 | B33-P1SR-C012, B33-P1SR-C003, B33-P1SR-C008, B33-P1SR-C011, B33-P1SR-C014, A5270, B33-P1SR-C006, B33-P1SR-C009, B33-P1SR-C010, B33-P1SR-C004, B33-P1SR-C005, B33-P1SR-C007, B33-P1SR-C013, B33-P1SR-C015, B33-P1SR-C017 |  |  |  |  | -423.11d | 0d | Bitumin Paint [167858 M2] |
| B33-P1SR-C019 |  | Installation of Vinyl |  | 4d | 2018-06-12 | 2018-06-16 | B33-P1SR-C008, B33-P1SR-C005, B33-P1SR-C009, B33-P1SR-C013, B33-P1SR-C011, B33-P1SR-C010, B33-P1SR-C014, B33-P1SR-C004, B33-P1SR-C017, A5270, B33-P1SR-C003, B33-P1SR-C006, B33-P1SR-C007, B33-P1SR-C015, B33-P1SR-C012 |  |  |  |  | -423.11d | 0d | Bitumin Paint [2000 M2] |
| B33-P1SR-S020 |  | Snagging and De-Snagging |  | 7.11d | 2018-06-17 | 2018-06-25 | B33-P1SR-C010, B33-P1SR-C019, B33-P1SR-C003, A5270, B33-P1SR-C013, B33-P1SR-C014, B33-P1SR-C018 |  |  |  |  | -423.11d | 32.25d | Bitumin Paint |

| ID | WBS | Activity | Type | Duration | Start | Finish | Predecessors | Complete | Remaining | Planned start | Planned finish | Total float | Free float | Resources |
| --- | --- | --- | --- | --- | --- | --- | --- | --- | --- | --- | --- | --- | --- | --- |
|  | 11 | **BILL 37 - 7F - PUBLIC TOILETS** |  |  | 2017-06-22 | 2018-06-12 |  |  |  |  |  |  |  |  |
| A5360 |  | Prerequisite for Civil Works (MEP 1st , 2nd Fix and Block Works) | milestone | 0d | 2017-06-22 A | 2017-06-22 A | A5320 | 100% |  |  |  |  |  |  |
| A5380 |  | Measurement , Framing and Enabling Works |  | 14.22d | 2017-06-25 A | 2017-08-05 A | A5320, A5370 | 100% |  | 2017-06-25 | 2017-07-11 |  |  | Bitumin Paint [2000 M2] |
| A5420 |  | Screed |  | 5.11d | 2017-07-06 A | 2017-07-30 A | A5320, A5410 | 100% |  | 2017-09-14 | 2017-09-20 |  |  | Bitumin Paint [7000 M2] |
| A5440 |  | Floor Tiling |  | 10.17d | 2017-07-09 A | 2017-09-14 A | A2360, A2370, A5430, A5320 | 100% |  | 2017-10-07 | 2017-10-18 |  |  | Bitumin Paint [14507 M2] |
| A5430 |  | Wall Cladding |  | 10.17d | 2017-07-10 A | 2018-04-26 | A5420, A2530, A2540, A5320 | 95% | 0.5d | 2017-09-25 | 2017-10-07 | -372.5d | 82.86d | Bitumin Paint [34125 M2] |
| A5390 |  | Installation of Ceiling System |  | 10.17d | 2017-07-11 A | 2018-03-01 A | A5380, A2630, A5320 | 100% |  | 2017-08-19 | 2017-08-30 |  |  | Bitumin Paint [24075 M2] |
| A5370 |  | Area Clearance Process |  | 2.11d | 2017-07-12 A | 2017-07-24 A | A5320, A5360 | 100% |  | 2017-08-17 | 2017-08-20 |  |  | Bitumin Paint |
| A5400 |  | MEP Celing Closure Clearance |  | 3d | 2017-07-22 A | 2017-07-27 A | A5390, A5320 | 100% |  | 2017-09-17 | 2017-09-20 |  |  | Bitumin Paint |
| A5410 |  | Ceiling Closure |  | 10.22d | 2017-08-28 A | 2018-03-04 A | A5320, A5400, A2640 | 100% |  | 2017-09-21 | 2017-10-03 |  |  | Bitumin Paint [24075 M2] |
| A5490 |  | Aluminium and Glazing Works |  | 7.11d | 2017-11-06 A | 2018-05-14 | A2950, A2940, A2970, A5320, A5470 | 95% | 0.35d | 2018-01-24 | 2018-02-01 | -390.65d | 0d | Bitumin Paint [18036 M2] |
| A5500 |  | Doors , Frames , Ironmongery and Hardware |  | 3.11d | 2018-03-07 A | 2018-03-15 A | A5330, A2720, A5320, A5550, A5510 SS | 100% |  | 2018-04-18 | 2018-04-22 |  |  | Bitumin Paint [14172 M2] |
| A5470 |  | Joinery and Carpentry Works |  | 14.33d | 2018-03-26 A | 2018-05-14 | A2730, A5460, A5320, A2740, A5330, A2760 | 80% | 2.8d | 2018-04-11 | 2018-04-29 | -387.3d | 0d | Bitumin Paint [134302 M2] |
| A5450 |  | Wooden Wall Panelling |  | 10.22d | 2018-04-05 A | 2018-05-02 | A5320, A5440, A5330, A2570 | 46% | 5.5d | 2018-04-05 | 2018-04-17 | -384.5d | 0d | Bitumin Paint [20291 M2] |
| A5480 |  | Paint Works |  | 61.17d | 2018-04-08 A | 2018-06-03 | A5320, A5410, A2510, A2650 | 46% | 33d | 2018-04-05 | 2018-06-16 | -412.11d | 0d | Bitumin Paint [25000 M2] |
| A5520 |  | Lighting Points and Fittings |  | 4d | 2018-04-26 | 2018-04-30 | A2840, A2860, A5500 SS, A5320 |  |  |  |  | -383.11d | 29d | Bitumin Paint [14068 M2] |
| A5460 |  | Wooden Flooring |  | 7d | 2018-05-02 | 2018-05-10 | A5450, A5330, A5320 |  |  |  |  | -384.5d | 0d | Bitumin Paint [14507 M2] |
| A5510 |  | Wall Covering |  | 3d | 2018-05-14 | 2018-05-17 | A5330, A2550, A5320, A5490 |  |  |  |  | -390.65d | 64.71d | Bitumin Paint [20000 M2] |
| A5530 |  | Snagging and De-Snagging |  | 7.11d | 2018-06-04 | 2018-06-12 | A5320, A5480, A2380, A5520, A2340 |  |  |  |  | -412.11d | 43.25d | Bitumin Paint |
|  | 12 | **BILL 38 - UG - GROCERY - TOWER A** |  |  | 2017-07-01 | 2018-05-20 |  |  |  |  |  |  |  |  |
| A5600 |  | Prerequisite for Civil Works (MEP 1st , 2nd Fix and Block Works) | milestone | 0d | 2017-07-01 A | 2017-07-01 A | A5550 | 100% |  | 2017-09-28 | 2017-09-28 |  |  |  |
| A5610 |  | Area Clearance Process |  | 2.11d | 2017-07-29 A | 2017-11-02 A | A5600, A5550 | 100% |  | 2017-09-28 | 2017-10-01 |  |  | Bitumin Paint |
| A5620 |  | Measurement , Framing and Enabling Works |  | 14.22d | 2017-08-24 A | 2017-10-29 A | A5550, A5610 | 100% |  | 2017-10-01 | 2017-10-17 |  |  | Bitumin Paint [2000 M2] |
| A5660 |  | Screed |  | 3d | 2017-09-27 A | 2017-10-01 A | A5550, A5650 | 100% |  | 2017-11-26 | 2017-11-29 |  |  | Bitumin Paint [7000 M2] |
| A5670 |  | Wall Cladding |  | 7.11d | 2017-09-27 A | 2017-10-04 A | A5660, A2580, A2530, A5550, A2520, A2540 | 100% |  | 2017-11-13 | 2017-11-21 |  |  | Bitumin Paint [4000 M2] |
| A5640 |  | MEP Celing Closure Clearance |  | 3.06d | 2017-10-01 A | 2017-10-01 A | A5550, A5630 | 100% |  | 2017-11-14 | 2017-11-18 |  |  | Bitumin Paint |
| A5630 |  | Installation of Ceiling System |  | 7.11d | 2017-10-03 A | 2017-10-21 A | A2630, A5550, A5620 | 100% |  | 2017-11-06 | 2017-11-14 |  |  | Bitumin Paint [35001 M2] |
| A5650 |  | Ceiling Closure |  | 7.17d | 2017-10-24 A | 2017-11-19 A | A5550, A2640, A5640 | 100% |  | 2017-11-18 | 2017-11-26 |  |  | Bitumin Paint [35001 M2] |
| A5710 |  | Joinery and Carpentry Works |  | 14.28d | 2017-11-21 A | 2018-03-15 A | A5550, A2730, A2740, A5570, A5700, A2760 | 100% |  | 2018-01-23 | 2018-02-10 |  |  | Bitumin Paint [162754 M2] |
| A5730 |  | Doors , Frames , Ironmongery and Hardware |  | 3.11d | 2017-11-22 A | 2018-03-14 A | A2720, A5570, A5760 SS, A5550 | 100% |  | 2018-02-21 | 2018-02-25 |  |  | Bitumin Paint [73609 M2] |
| A5680 |  | Floor Tiling |  | 7.17d | 2017-12-07 A | 2017-12-21 A | A5550, A5670, A2370, A2360 | 100% |  | 2018-01-27 | 2018-02-04 |  |  | Bitumin Paint [12451 M2] |
| A5780 |  | Paint Works |  | 61.17d | 2018-02-15 A | 2018-04-29 | A5650, A2510, A5550, A2650 | 95% | 3d | 2018-02-15 | 2018-04-28 | -386.17d | 0d | Bitumin Paint [15241 M2] |
| A5740 |  | Lighting Points and Fittings |  | 5.11d | 2018-03-18 A | 2018-04-26 | A5730 SS, A2840, A2850, A5550, A2880, A2870, A2860, A2890 | 90% | 0.5d | 2018-04-12 | 2018-04-18 | -383.67d | 2.5d | Bitumin Paint [4272 M2] |
| A5690 |  | Wooden Wall Panelling |  | 7.17d | 2018-03-22 A | 2018-04-05 A | A2570, A5680, A5550, A5570 | 100% |  | 2018-03-22 | 2018-03-31 |  |  | Bitumin Paint [12451 M2] |
| A5700 |  | Wooden Flooring |  | 7.17d | 2018-03-22 A | 2018-03-29 A | A5570, A2350, A5550, A5690 | 100% |  | 2018-03-22 | 2018-03-31 |  |  | Bitumin Paint [12451 M2] |
| A5720 |  | Aluminium and Glazing Works |  | 10.11d | 2018-03-28 A | 2018-05-03 | A5710, A2940, A2960, A5550 | 60% | 4d | 2018-04-08 | 2018-04-19 | -378.5d | 0d | Bitumin Paint [35124 M2] |
| A5760 |  | Wall Covering |  | 3.11d | 2018-04-17 A | 2018-05-06 | A5720, A5570, A2550, A5550 | 37% | 1.95d | 2018-04-26 | 2018-04-30 | -392.62d | 0d | Bitumin Paint [25413 M2] |
| A5750 |  | Carpet / Vinyle / Rubber |  | 4d | 2018-04-30 | 2018-05-03 | A5740, A2340, A5550, A2390, A5780, A2380, A2410 |  |  |  |  | -386.17d | 6.45d | Bitumin Paint [21882 M2] |
| A5790 |  | Sanitary Equipment & Fixture |  | 5d | 2018-05-06 | 2018-05-12 | A3000, A5760, A5550 |  |  |  |  | -392.62d | 0d | Bitumin Paint [8719 M2] |
| A5770 |  | Snagging and De-Snagging |  | 7.17d | 2018-05-12 | 2018-05-20 | A5790, A5780, A5550, A5750 |  |  |  |  | -392.62d | 62.74d | Bitumin Paint |

| ID | WBS | Activity | Type | Duration | Start | Finish | Predecessors | Complete | Planned start | Planned finish | Constraint | Calendar |
| --- | --- | --- | --- | --- | --- | --- | --- | --- | --- | --- | --- | --- |
|  | 6 | **Variation No,009 Milestones** |  |  | 2016-07-03 | 2018-04-26 |  |  |  |  |  |  |
| A1000 |  | Reciept of Engineering Instruction | milestone | 0d | 2016-07-03 A | 2016-07-03 A | KD01 | 100% | 2016-07-05 | 2016-07-05 | start on or after 2016-07-05 | ATL522 - Engineering Submission (5x9) |
|  | 1 | **Design Freeze** |  |  | 2016-08-21 | 2016-08-28 |  |  |  |  |  |  |
| A2260 |  | Design Freeze & Receipt of IFC Drawing Bill 15-P1-REST ROOMS (PRE-FUNTION) | milestone | 0d | 2016-08-21 A | 2016-08-21 A | A1000 | 100% | 2016-07-05 | 2016-07-05 |  | 7x24 |
| A2270 |  | Design Freeze & Receipt of IFC DrawingBill 33-P1-SCREENING ROOM | milestone | 0d | 2016-08-21 A | 2016-08-21 A | A1000 | 100% | 2016-07-05 | 2016-07-05 |  | 7x24 |
| A1020 |  | Design Freeze & Receipt of IFC Drawing BILL 17.2 - P1 - PUBLIC TOILETS | milestone | 0d | 2016-08-28 A | 2016-08-28 A | A1000 | 100% | 2016-07-05 | 2016-07-05 |  | 7x24 |
| A1030 |  | Design Freeze & Receipt of IFC Drawing BILL 21 - P1 - KID'S CLUB | milestone | 0d | 2016-08-28 A | 2016-08-28 A | A1000 | 100% | 2016-07-05 | 2016-07-05 |  | 7x24 |
| A1040 |  | Design Freeze & Receipt of IFC Drawing BILL 24 - 8F - GYM - TOWER C | milestone | 0d | 2016-08-28 A | 2016-08-28 A | A1000 | 100% | 2016-07-05 | 2016-07-05 |  | 7x24 |
| A1050 |  | Design Freeze & Receipt of IFC Drawing BILL 25 - 8F - MALE AND FEMALE TOILETS FOR GYM - TOWER C | milestone | 0d | 2016-08-28 A | 2016-08-28 A | A1000 | 100% | 2016-07-05 | 2016-07-05 |  | 7x24 |
| A1070 |  | Design Freeze & Receipt of IFC Drawing BILL 27.1 - 8F - GYM - TOWER A | milestone | 0d | 2016-08-28 A | 2016-08-28 A | A1000 | 100% | 2016-07-05 | 2016-07-05 |  | 7x24 |
| A1080 |  | Design Freeze & Receipt of IFC Drawing BILL 27.2 - 8F - GYM - TOWER B | milestone | 0d | 2016-08-28 A | 2016-08-28 A | A1000 | 100% | 2016-07-05 | 2016-07-05 |  | 7x24 |
| A1090 |  | Design Freeze & Receipt of IFC Drawing BILL 27.3 - 8F - GYM - TOWER D | milestone | 0d | 2016-08-28 A | 2016-08-28 A | A1000 | 100% | 2016-07-05 | 2016-07-05 |  | 7x24 |
| A1880 |  | Design Freeze & Receipt of IFC Drawing Bill 14-P1-PRE-FUNCTION | milestone | 0d | 2016-08-28 A | 2016-08-28 A | A1000 | 100% | 2016-07-05 | 2016-07-05 |  | 7x24 |
| A5310 |  | Design Freeze & Receipt of IFC Drawing BILL 37 - 7F - PUBLIC TOILETS | milestone | 0d | 2016-08-28 A | 2016-08-28 A | A1000 | 100% | 2016-07-05 | 2016-07-05 |  | 7x24 |
| A5540 |  | Design Freeze & Receipt of IFC Drawing BILL 38 - UG - GROCERY - TOWER A | milestone | 0d | 2016-08-28 A | 2016-08-28 A | A1000 | 100% | 2016-07-05 | 2016-07-05 |  | 7x24 |
| A5800 |  | Design Freeze & Receipt of IFC Drawing BILL 32 - Work Play Suite | milestone | 0d | 2016-08-28 A | 2016-08-28 A | A1000 | 100% | 2016-07-05 | 2016-07-05 |  | 7x24 |
|  | 2 | **Site Access** |  |  | 2016-12-28 | 2017-12-07 |  |  |  |  |  |  |
| A1120 |  | Site Access BILL 17.2 - P1 - PUBLIC TOILETS | milestone | 0d | 2016-12-28 A | 2016-12-28 A | A1000 | 100% | 2017-01-01 | 2017-01-01 | start on or after 2016-11-13 | 7x24 |
| A1130 |  | Site Access BILL 21 - P1 - KID'S CLUB | milestone | 0d | 2016-12-28 A | 2016-12-28 A | A1000 | 100% | 2017-01-01 | 2017-01-01 | start on or after 2016-11-13 | 7x24 |
| A5250 |  | Site Access Bill 14-P1-PRE-FUNCTION | milestone | 0d | 2016-12-28 A | 2016-12-28 A | A1000 | 100% | 2017-01-01 | 2017-01-01 | start on or after 2016-11-13 | 7x24 |
| A5260 |  | Site Access Bill 15-P1-REST ROOMS (PRE-FUNTION) | milestone | 0d | 2016-12-28 A | 2016-12-28 A | A1000 | 100% | 2017-01-01 | 2017-01-01 | start on or after 2016-11-13 | 7x24 |
| A5270 |  | Site Access Bill 33-P1-SCREENING ROOM | milestone | 0d | 2016-12-28 A | 2016-12-28 A | A1000 | 100% | 2017-01-01 | 2017-01-01 | start on or after 2016-11-13 | 7x24 |
| A5550 |  | Site Access BILL 38 - UG - GROCERY - TOWER A | milestone | 0d | 2016-12-28 A | 2016-12-28 A | A1000 | 100% | 2017-01-01 | 2017-01-01 | start on or after 2016-11-13 | 7x24 |
| A1150 |  | Site Access BILL 25 - 8F - MALE AND FEMALE TOILETS FOR GYM - TOWER C | milestone | 0d | 2017-07-10 A | 2017-07-10 A | A1000 | 100% | 2017-08-03 | 2017-08-03 | start on or after 2016-11-13 | 7x24 |
| A5320 |  | Site Access BILL 37 - 7F - PUBLIC TOILETS | milestone | 0d | 2017-07-20 A | 2017-07-20 A | A1000 | 100% | 2017-09-28 | 2017-09-28 | start on or after 2016-11-13 | 7x24 |
| A1170 |  | Site Access BILL 27.1 - 8F - GYM - TOWER A | milestone | 0d | 2017-08-27 A | 2017-08-27 A | A1000 | 100% | 2017-08-24 | 2017-08-24 | start on or after 2016-11-13 | 7x24 |
| A1180 |  | Site Access BILL 27.2 - 8F - GYM - TOWER B | milestone | 0d | 2017-08-27 A | 2017-08-27 A | A1000 | 100% | 2017-08-24 | 2017-08-24 | start on or after 2016-11-13 | 7x24 |
| A1190 |  | Site Access BILL 27.3 - 8F - GYM - TOWER D | milestone | 0d | 2017-08-27 A | 2017-08-27 A | A1000 | 100% | 2017-08-24 | 2017-08-24 | start on or after 2016-11-13 | 7x24 |
| A1140 |  | Site Access BILL 24 - 8F - GYM - TOWER C | milestone | 0d | 2017-12-07 A | 2017-12-07 A | A1000 | 100% | 2017-11-29 | 2017-11-29 | start on or after 2016-11-13 | 7x24 |
| A5810 |  | Site Access BILL 32 - Work Play Suite | milestone | 0d | 2017-12-07 A | 2017-12-07 A | A1000 | 100% | 2017-11-29 | 2017-11-29 | start on or after 2016-11-13 | 7x24 |

| ID | WBS | Activity | Type | Duration | Start | Finish | Predecessors | Complete | Planned start | Planned finish | Total float | Free float | Constraint | Calendar |
| --- | --- | --- | --- | --- | --- | --- | --- | --- | --- | --- | --- | --- | --- | --- |
|  | 3 | **Wild Air Milestones** |  |  | 2018-04-26 | 2018-04-26 |  |  |  |  |  |  |  |  |
| A1220 |  | A/C BILL 17.2 - P1 - PUBLIC TOILETS | milestone | 0d | 2018-04-26 | 2018-04-26 | A1120 |  |  |  | -515d | 0d | start on 2016-11-27 | 7x24 |
| A1230 |  | A/C BILL 21 - P1 - KID'S CLUB | milestone | 0d | 2018-04-26 | 2018-04-26 | A1130 |  |  |  | -515d | 97.44d | start on 2016-11-27 | 7x24 |
| A1240 |  | A/C BILL 24 - 8F - GYM - TOWER C | milestone | 0d | 2018-04-26 | 2018-04-26 | A1140 |  |  |  | -515d | 97.44d | start on 2016-11-27 | 7x24 |
| A1250 |  | A/C BILL 25 - 8F - MALE AND FEMALE TOILETS FOR GYM - TOWER C | milestone | 0d | 2018-04-26 | 2018-04-26 | A1150 |  |  |  | -515d | 0d | start on 2016-11-27 | 7x24 |
| A1270 |  | A/C BILL 27.1 - 8F - GYM - TOWER A | milestone | 0d | 2018-04-26 | 2018-04-26 | A1170 |  |  |  | -515d | 0.3d | start on 2016-11-27 | 7x24 |
| A1280 |  | A/C BILL 27.2 - 8F - GYM - TOWER B | milestone | 0d | 2018-04-26 | 2018-04-26 | A1180 |  |  |  | -515d | 0d | start on 2016-11-27 | 7x24 |
| A1290 |  | A/C BILL 27.3 - 8F - GYM - TOWER D | milestone | 0d | 2018-04-26 | 2018-04-26 | A1190 |  |  |  | -515d | 0.3d | start on 2016-11-27 | 7x24 |
| A5280 |  | A/C Bill 14-P1-PRE-FUNCTION | milestone | 0d | 2018-04-26 | 2018-04-26 | A5250 |  |  |  | -515d | 0d | start on 2016-11-27 | 7x24 |
| A5290 |  | A/C Bill 15-P1-REST ROOMS (PRE-FUNTION) | milestone | 0d | 2018-04-26 | 2018-04-26 | A5260 |  |  |  | -522d | 0d | start on 2016-11-20 | 7x24 |
| A5300 |  | A/C Bill 33-P1-SCREENING ROOM | milestone | 0d | 2018-04-26 | 2018-04-26 | A5270 |  |  |  | -515d | 0.3d | start on 2016-11-27 | 7x24 |
| A5330 |  | A/C BILL 25 - BILL37 - 7F - PUBLIC TOILETS | milestone | 0d | 2018-04-26 | 2018-04-26 | A5320 |  |  |  | -515d | 0d | start on 2016-11-27 | 7x24 |
| A5560 |  | A/C BILL 25 - 8F - MALE AND FEMALE TOILETS FOR GYM - TOWER C | milestone | 0d | 2018-04-26 | 2018-04-26 | A5320, A5550 |  |  |  | -515d | 0d | start on 2016-11-27 | 7x24 |
| A5570 |  | A/C BILL 38 - UG - GROCERY - TOWER A | milestone | 0d | 2018-04-26 | 2018-04-26 | A5550 |  |  |  | -515d | 0d | start on 2016-11-27 | 7x24 |
| A5820 |  | A/C BILL 32 Work Play Suite | milestone | 0d | 2018-04-26 | 2018-04-26 | A5810 |  |  |  | -515d | 97.44d | start on 2016-11-27 | 7x24 |
|  | 7 | **Variation No: 0048-MALE & FEMALE PRAYER ROOMS (P-1)** |  |  | 2017-03-01 | 2018-05-10 |  |  |  |  |  |  |  |  |
|  | 1 | **Engineering** |  |  | 2017-03-01 | 2017-09-02 |  |  |  |  |  |  |  |  |
|  | 1 | **SD Preparation and Submission of MALE & FEMALE PRAYER ROOMS (P-1)** |  |  | 2017-03-01 | 2017-08-19 |  |  |  |  |  |  |  |  |
| B12-UPPR-SDS280 |  | Preparation and Submission of RCP Layout |  | 15d | 2017-03-01 A | 2017-03-09 A | A6060 FS+3d | 100% | 2017-03-26 | 2017-04-11 |  |  |  |  |
| B12-UPPR-SDS290 |  | Preparation and Submission of Floor Layout |  | 15d | 2017-03-01 A | 2017-03-09 A | B12-UPPR-SDS300 SS+7d | 100% | 2017-04-11 | 2017-04-27 |  |  |  |  |
| B12-UPPR-SDS300 |  | Preparation and Submission of Elevation Layout |  | 15d | 2017-03-01 A | 2017-03-09 A | B12-UPPR-SDS280 SS+7d | 100% | 2017-04-03 | 2017-04-19 |  |  |  |  |
| B12-UPPR-SDS320 |  | Preparation and Submission of Doors Shop Drawing |  | 15d | 2017-06-20 A | 2017-08-17 A | B12-UPPR-SDS330 SS+7d | 100% | 2017-08-12 | 2017-08-29 |  |  |  |  |
| B12-UPPR-SDS310 |  | Preparation and Submission of Joinery Layout |  | 15d | 2017-06-21 A | 2017-08-19 A | B12-UPPR-SDS320 SS+7d | 100% | 2017-08-20 | 2017-09-06 |  |  |  |  |
| B12-UPPR-SDS330 |  | Preparation and Submission of Details Layout |  | 15d | 2017-06-25 A | 2017-08-10 A | B12-UPPR-SDS290 SS+7d | 100% | 2017-08-03 | 2017-08-20 |  |  |  |  |

| ID | WBS | Activity | Type | Duration | Start | Finish | Predecessors | Complete | Remaining | Planned start | Planned finish | Total float | Free float | Calendar |
| --- | --- | --- | --- | --- | --- | --- | --- | --- | --- | --- | --- | --- | --- | --- |
|  | 2 | **SD Approval of MALE & FEMALE PRAYER ROOMS (P-1)** |  |  | 2017-03-11 | 2017-09-02 |  |  |  |  |  |  |  |  |
| B12-UPPR-SDA300 |  | Review & Approval of RCP Layout |  | 15d | 2017-03-11 A | 2017-04-27 A | B12-UPPR-SDS280 SS+7d | 100% |  | 2017-04-03 | 2017-04-19 |  |  |  |
| B12-UPPR-SDA310 |  | Review & Approval of Floor Layout |  | 15d | 2017-03-11 A | 2017-07-31 A | B12-UPPR-SDS290 SS+7d | 100% |  | 2017-04-19 | 2017-05-06 |  |  |  |
| B12-UPPR-SDA320 |  | Review & Approval of Elevation Layout |  | 15d | 2017-03-11 A | 2017-07-19 A | B12-UPPR-SDS300 SS+7d | 100% |  | 2017-04-11 | 2017-04-27 |  |  |  |
| B12-UPPR-SDA290 |  | Review & Approval of Details Layout |  | 15d | 2017-07-10 A | 2017-08-14 A | B12-UPPR-SDS330 SS+7d | 100% |  | 2017-08-12 | 2017-08-29 |  |  |  |
| B12-UPPR-SDA280 |  | Review & Approval of Doors Shop Drawing |  | 15d | 2017-07-11 A | 2017-09-02 A | B12-UPPR-SDS320 SS+7d | 100% |  | 2017-08-20 | 2017-09-06 |  |  |  |
| B12-UPPR-SDA330 |  | Review & Approval of Joinery Layout |  | 15d | 2017-07-17 A | 2017-09-02 A | B12-UPPR-SDS310 SS+7d | 100% |  | 2017-08-28 | 2017-09-14 |  |  |  |
|  | 2 | **Procurement Process for MALE & FEMALE PRAYER ROOMS (P-1)** |  |  | 2017-05-08 | 2017-11-17 |  |  |  |  |  |  |  |  |
| B12-UPPR-PR280 |  | Fabrication and Delivery of Ceiling System |  | 20d | 2017-05-08 A | 2017-10-09 A | B12-UPPR-SDA300 | 100% |  | 2017-08-03 | 2017-08-23 |  |  | ATL522 - Local Procurment (7x24) |
| B12-UPPR-PR310 |  | Fabrication and Delivery of Doors , Ironmongery and Hardware |  | 35d | 2017-06-12 A | 2017-11-05 A | B12-UPPR-SDA280 | 100% |  | 2017-09-06 | 2017-10-11 |  |  | ATL522 - Local Procurment (7x24) |
| B12-UPPR-PR270 |  | Fabrication and Delivery of Carpet |  | 35d | 2017-08-07 A | 2017-10-05 A | B12-UPPR-SDA310 | 100% |  | 2017-09-28 | 2017-11-02 |  |  | ATL522 - EU Procurment (7x24) |
| B12-UPPR-PR290 |  | Fabrication and Delivery of Veneer Works - Joinery |  | 35d | 2017-08-22 A | 2017-10-31 A | B12-UPPR-SDA290, B12-UPPR-SDA320, B12-UPPR-SDA330 | 100% |  | 2017-09-13 | 2017-10-18 |  |  | ATL522 - EU Procurment (7x24) |
| B12-UPPR-PR300 |  | Fabrication and Delivery of Wall Covering |  | 35d | 2017-10-05 A | 2017-11-17 A | B12-UPPR-SDA320 | 100% |  | 2017-10-05 | 2017-11-09 |  |  | ATL522 - Local Procurment (7x24) |
|  | 3 | **Construction** |  |  | 2017-03-14 | 2018-05-10 |  |  |  |  |  |  |  |  |
| B12-UPPR-1stP1 |  | Site Access | milestone | 0d | 2017-03-14 A | 2017-03-14 A | A6060 | 100% |  | 2017-03-26 | 2017-03-26 |  |  |  |
| B5-UPSD-C361 |  | Clearance process for Measurements, Framing & Enabling Works |  | 10d | 2017-03-15 A | 2017-10-04 A | B12-UPPR-1stP1 | 100% |  | 2017-03-26 | 2017-04-05 |  |  |  |
| B5-UPSD-C371 |  | Measurements , Framing & Enabling Works |  | 18d | 2017-05-15 A | 2017-09-20 A | B5-UPSD-C361 | 100% |  | 2017-06-01 | 2017-06-22 |  |  |  |
| B12-UPPR-C9 |  | Installation of Celling System |  | 22d | 2017-06-27 A | 2017-07-15 A | B12-UPPR-PR280, B5-UPSD-C371 | 100% |  | 2017-07-13 | 2017-08-08 |  |  |  |
| B12-UPPR-C49 |  | Ceiling Closure |  | 20d | 2017-07-04 A | 2017-07-22 A | B12-UPPR-2ndP2 | 100% |  | 2017-09-13 | 2017-10-07 |  |  |  |
| B12-UPPR-2ndP2 |  | MEP Ceiling Closure Clearance |  | 7d | 2017-07-25 A | 2017-07-25 A | B12-UPPR-C9 | 100% |  | 2017-09-05 | 2017-09-13 |  |  |  |
| B12-UPPR-3rdP3 |  | Flooring (by others) | milestone | 0d | 2017-10-17 A | 2017-10-17 A | B12-UPPR-C49 | 100% |  | 2017-11-05 | 2017-11-05 |  |  |  |
| B12-UPPR-C29 |  | Installation of Doors & Ironmongery |  | 7d | 2017-10-18 A | 2018-01-04 A | B12-UPPR-PR310, B12-UPPR-C19 | 100% |  | 2017-11-23 | 2017-12-02 |  |  |  |
| B12-UPPR-C39 |  | Installation of Wall Covering |  | 10d | 2017-11-22 A | 2018-03-18 A | B12-UPPR-C19, B12-UPPR-PR300, B12-UPPR-PR290 | 100% |  | 2017-12-11 | 2017-12-23 |  |  |  |
| B12-UPPR-C19 |  | Paint Works |  | 15d | 2017-11-23 A | 2018-02-06 A | B12-UPPR-3rdP3 | 100% |  | 2017-11-23 | 2017-12-10 |  |  |  |
| B12-UPPR-C79 |  | Installation of Joinery Works |  | 12d | 2017-12-12 A | 2018-02-08 A | B12-UPPR-C29, B12-UPPR-C19 SS, B12-UPPR-PR290, B12-UPPR-C69 | 100% |  | 2018-01-20 | 2018-02-03 |  |  |  |
| B12-UPPR-C59 |  | Installation of Light Fittings |  | 8d | 2018-02-15 A | 2018-03-20 A | B12-UPPR-C29, B12-UPPR-C19 | 100% |  | 2018-02-15 | 2018-02-24 |  |  |  |
| B12-UPPR-C69 |  | Installation of Timber Flooring |  | 14d | 2018-03-22 A | 2018-04-28 | B12-UPPR-PR290, B12-UPPR-C39, B12-UPPR-C19, B12-UPPR-C59 | 90% | 1.4d | 2018-03-22 | 2018-04-07 | -373.4d | 0d |  |
| B12-UPPR-C89 |  | Installation of Carpet |  | 7d | 2018-04-12 A | 2018-04-29 | B12-UPPR-C79, B12-UPPR-C59, B12-UPPR-C39, B12-UPPR-C69, B12-UPPR-PR270 | 90% | 0.7d | 2018-04-14 | 2018-04-22 | -384.1d | 0d |  |
| B12-UPPR-S10 |  | Snagging and De-Snagging |  | 10d | 2018-04-29 | 2018-05-10 | B12-UPPR-C89, B12-UPPR-C59, B12-UPPR-C29, B12-UPPR-C19 |  |  |  |  | -384.1d | 71.26d |  |
